Row ID,Task Name,Health,% Complete,Sub system,SF Role,Task type,Status,Lead / Support,Assigned To,Duration,Start,Finish,Days Till Finish,Budget Days,Optimistic Days,Budget Hours,ETC Hours,% Hours Billed,Billed Hours,WK/WK Change - Hours,Projected Ov/Un,% $ Budget Billed,CPI,Task Budget,Actual Fees,Remaining Budget,Budget $ Wk/Wk,Billed Hours - 1 wk,$ Budget - 1 wk,Kantata Code,Type,Baseline Start,Baseline Finish,Variance
1,Stroma Program,Green,66%,,,,,,,978d,08/30/21,06/09/25,202,6821.79125,,54574.33,22052.73,68%,37177.3116666666,#NO MATCH,-4655.7116666666,93%,0.97,"US$9,679,905.38","US$9,044,956.62","US$634,948.76",#NO MATCH,#NO MATCH,#NO MATCH
2,1103-1X,Blue,100%,,,,,,,90d,08/30/21,12/31/21,0,36.69,,293.52,0,101%,296.15,0,-2.63,105%,0.99,"US$60,700.00","US$63,664.12",US$0.00,US$0.00,296.15,"US$63,664.12"
3,1103-2X,Blue,100%,,,,,,,15d,04/25/22,05/13/22,0,2,,16,0,128%,20.5,0,-4.5,134%,0.78,"US$1,632.00","US$2,190.00",US$0.00,US$0.00,20.5,"US$2,190.00"
4,1103-2X1,Blue,100%,,,,,,,90d,04/25/22,08/26/22,0,54.68,,437.44,0,107%,468.83,0,-31.39,100%,0.93,"US$96,300.00","US$96,232.42",US$0.00,US$0.00,468.83,"US$96,232.42"
5,1103-1,Blue,100%,,,,,,,150d,07/01/22,01/26/23,0,209.02,,1672.16,0,121%,2031.11666666667,0,-358.95666666667,127%,0.82,"US$341,659.00","US$433,079.28",US$0.00,US$0.00,2031.11666666667,"US$433,079.28"
6,1103-2,Blue,100%,,,,,,,200d,07/14/22,04/19/23,0,426.88,,3415.04,0,111%,3796.51666666667,0,-381.47666666667,110%,0.90,"US$722,833.00","US$795,228.15",US$0.00,US$0.00,3796.51666666667,"US$795,228.15"
7,1103-3,Blue,100%,,,,,,,200d,09/05/22,06/09/23,0,326.37,,2610.96,0,117%,3059.4,0,-448.44,124%,0.85,"US$589,468.88","US$731,610.11",US$0.00,US$0.00,3059.4,"US$731,610.11"
8,1103-4X,Blue,100%,,,,,,,200d,06/30/23,04/04/24,0,369.03,,2952.24,0,51%,1505.3,0,1446.94,50%,1.96,"US$759,774.00","US$382,855.20",US$0.00,US$0.00,1505.3,"US$382,855.20"
9,1103-3X-7,Blue,100%,,,,,,,130d,11/06/23,05/03/24,0,327.52,,2620.16,0,41%,1078.25,0,1541.91,45%,2.43,"US$635,004.00","US$283,968.59",US$0.00,US$0.00,1078.25,"US$283,968.59"
10,1103-3X,Blue,100%,,,,,,,130d,11/28/23,05/27/24,0,1291.44,,10331.52,0,123%,12692.1833333333,0,-2360.6633333333,108%,0.81,"US$2,717,295.21","US$2,941,134.17",US$0.00,US$0.00,12692.1833333333,"US$2,941,134.17"
11,1103-5,Blue,100%,,,,,,,130d,11/27/23,05/24/24,0,424.06,,3392.48,0,100%,3398.2,0,-5.7199999999998,123%,1.00,"US$827,800.60","US$1,020,843.00",US$0.00,US$0.00,3398.2,"US$1,020,843.00"
12,1103-5-1,Blue,100%,,,,,,,130d,11/27/23,05/24/24,0,412.55,,3300.4,0,100%,3300.465,0,-0.0650000000000546,100%,1.00,"US$825,800.69","US$825,795.00",US$0.00,US$0.00,3300.465,"US$825,795.00"
13,PCR 5X-2,,76%,,,,,,,55d,07/29/24,10/15/24,-35,102.325,,818.6,160.75,147%,1201.67,#NO MATCH,-543.82,82%,0.52,"US$384,500.00","US$314,097.54","US$70,402.46",#NO MATCH,#NO MATCH,#NO MATCH
14,Task: 0 - Project Operations,Green,75%,,,,,,,25d,09/04/24,10/09/24,-41,15.625,,125,10,92%,114.83,0.5,0.170000000000002,48%,0.82,"US$63,438.00","US$30,274.83","US$33,163.17",US$110.50,114.33,"US$30,164.33",890200253,milestone,,,
15,PM Load,Green,75%,,,,,,,25d,09/04/24,10/09/24,-41,15.625,,125,10,92%,114.83,0.5,0.170000000000002,48%,0.82,"US$63,438.00","US$30,274.83","US$33,163.17",US$110.50,114.33,"US$30,164.33",890200680,deliverable,,,
16,Project Management activities,Green,75%,,,,In Progress,,,25d,09/04/24,10/09/24,-41,12.5,,100,0,105%,105,0,-5,0%,0.71,,"US$28,896.50","--US$28,896.50",US$0.00,105,"US$28,896.50",890200683,task,,,
17,PM Admin / Support activities,Green,75%,,,,In Progress,,,25d,09/04/24,10/09/24,-41,3.125,,25,10,39%,9.83,0.5,5.17,0%,1.91,,"US$1,378.33","--US$1,378.33",US$110.50,9.33,"US$1,267.83",890200685,task,,,
18,Task 1: Fine-grid simulation of beam delivery system,Blue,100%,,,,,,,25d,07/29/24,08/30/24,0,20.625,,165,0,130%,215.25,0,-50.25,121%,0.77,"US$49,960.00","US$60,600.00",US$0.00,US$0.00,215.25,"US$60,600.00",890189457,milestone,,,
19,Task 1: Fine-grid simulation of beam delivery system,Blue,100%,,,,,,,25d,07/29/24,08/30/24,0,20.625,,165,0,130%,215.25,0,-50.25,121%,0.77,"US$49,960.00","US$60,600.00",US$0.00,US$0.00,215.25,"US$60,600.00",890189466,deliverable,,,
20,Implement fine-grid simulation,Blue,100%,,,,Complete,,,25d,07/29/24,08/30/24,0,4.125,,33,0,124%,41,0,-8,0%,0.80,,"US$11,476.00",US$0.00,US$0.00,41,"US$11,476.00",890189535,task,,,
21,Run function,Blue,100%,,,,Complete,,,25d,07/29/24,08/30/24,0,1.625,,13,0,71%,9.25,0,3.75,0%,1.41,,"US$2,717.75",US$0.00,US$0.00,9.25,"US$2,717.75",890189547,task,,,
22,Beam aiming for position errors,Blue,100%,,,,Complete,,,25d,07/29/24,08/30/24,0,5,,40,0,164%,65.75,0,-25.75,0%,0.61,,"US$18,278.50",US$0.00,US$0.00,65.75,"US$18,278.50",890189548,task,,,
23,"Physiological eye variations (corneal curvature, anterior segment depth)",Blue,100%,,,,Complete,,,25d,07/29/24,08/30/24,0,9.875,,79,0,126%,99.25,0,-20.25,0%,0.80,,"US$28,127.75",US$0.00,US$0.00,99.25,"US$28,127.75",890189557,task,,,
24,Task 2: Laser and fiber performance testing,Green,80%,,,,,,,52d,07/29/24,10/09/24,-41,20,,160,105,108%,172.25,0,-117.25,103%,0.74,"US$48,240.00","US$49,571.51","--US$1,331.51",US$0.00,172.25,"US$49,571.51",890189801,milestone,,,
25,Task 2: Laser and fiber performance testing,Green,80%,,,,,,,52d,07/29/24,10/09/24,-41,20,,160,105,108%,172.25,0,-117.25,103%,0.74,"US$48,240.00","US$49,571.51","--US$1,331.51",US$0.00,172.25,"US$49,571.51",890199949,deliverable,,,
26,Laser and fiber commissioning,Blue,100%,,,,Complete,,,25d,07/29/24,08/30/24,0,2.5,,20,0,242%,48.5,0,-28.5,0%,0.41,,"US$15,279.25",US$0.00,US$0.00,48.5,"US$15,279.25",890199952,task,,,
27,Fiber performance assessment,Green,75%,,,,In Progress,,,25d,09/04/24,10/09/24,-41,1.25,,10,1,978%,97.75,0,-88.75,0%,0.08,,"US$28,508.50","--US$28,508.50",US$0.00,97.75,"US$28,508.50",890200004,task,,,
28,Pulse to pulse energy and post-trigger energy stability + Reporting,Green,75%,,,,In Progress,,,25d,09/04/24,10/09/24,-41,4.75,,38,36.5,4%,1.5,0,0,0%,19.00,,US$475.50,--US$475.50,US$0.00,1.5,US$475.50,890200074,task,,,
29,Laser fiber life testing - Optic + Reporting,Green,75%,,,,In Progress,,,25d,09/04/24,10/09/24,-41,4.625,,37,12.5,66%,24.5,0,0,0%,1.13,,"US$5,308.26","--US$5,308.26",US$0.00,24.5,"US$5,308.26",890200121,task,,,
30,Laser fiber life test - Mechanical + Reporting,Green,75%,,,,Not Started,,,25d,09/04/24,10/09/24,-41,6.875,,55,55,0%,0,0,0,0%,1.00,,US$0.00,US$0.00,US$0.00,0,US$0.00,890200123,task,,,
31,Task 3: Additional support tasks,Green,95%,,,,,,,55d,07/29/24,10/15/24,-35,46.075,,368.6,45.75,113%,416.42,0,-93.57,98%,0.84,"US$111,270.00","US$108,813.34","US$2,456.66",US$0.00,416.42,"US$108,813.34",890200191,milestone,,,
32,Task 3: Additional support tasks,Green,95%,,,,,,,55d,07/29/24,10/15/24,-35,46.075,,368.6,45.75,113%,416.42,0,-93.57,98%,0.84,"US$111,270.00","US$108,813.34","US$2,456.66",US$0.00,416.42,"US$108,813.34",890200201,deliverable,,,
33,OCT image review and analysis,Blue,100%,,,,Complete,,,25d,07/29/24,08/30/24,0,2.125,,17,0,234%,39.75,0,-22.75,0%,0.43,,"US$6,697.51",US$0.00,US$0.00,39.75,"US$6,697.51",890200236,task,,,
34,Fluence FDA question support,Blue,100%,,,,Complete,,,25d,07/29/24,08/30/24,0,1.25,,10,0,70%,7,0,3,0%,1.43,,"US$1,946.00",US$0.00,US$0.00,7,"US$1,946.00",890200240,task,,,
35,Additional Advanced Combined Breadboard evaluation,Blue,100%,,,,Complete,,,25d,07/29/24,08/30/24,0,6.75,,54,0,129%,69.5,0,-15.5,0%,0.78,,"US$20,201.75",US$0.00,US$0.00,69.5,"US$20,201.75",890200245,task,,,
36,Regulatory Support,Green,50%,,,,In Progress,,,25d,09/09/24,10/15/24,-35,12.9375,,103.5,45.75,56%,57.75,0,0,0%,0.90,,"US$15,202.25","--US$15,202.25",US$0.00,57.75,"US$15,202.25",890353488,task,,,
37,Review IP filing (OOS),Blue,100%,,,,Complete,,,25d,07/29/24,08/30/24,0,0,,0,0,0%,8.5,0,-8.5,0%,1.00,,"US$2,694.50",US$0.00,US$0.00,8.5,"US$2,694.50",892429881,task,,,
38,FPGA GPIO update (SOW6),Blue,100%,,,,Complete,,,25d,07/29/24,08/30/24,0,5.2875,,42.3,0,99%,42,0,0.299999999999997,0%,1.01,,"US$10,462.00",US$0.00,US$0.00,42,"US$10,462.00",894396983,task,,,
39,FPGA GPIO PCBA updates (do not invoice),Blue,100%,,,,Complete,,,25d,07/29/24,08/30/24,0,0,,0,0,0%,0,0,0,0%,1.00,,US$0.00,US$0.00,US$0.00,0,US$0.00,897545052,task,,,
40,MCB Design (SOW6),Blue,100%,,,,Complete,,,25d,07/29/24,08/30/24,0,12.5,,100,0,115%,114.5,0,-14.5,0%,0.87,,"US$29,164.75",US$0.00,US$0.00,114.5,"US$29,164.75",896340597,task,,,
41,Vibration Analysis (PRR 5x4),Blue,100%,,,,Complete,,,25d,07/29/24,08/30/24,0,5.225,,41.8,0,105%,43.92,0,-2.12,0%,0.95,,"US$13,902.08",US$0.00,US$0.00,43.92,"US$13,902.08",896788690,task,,,
42,Headrest creep test,Blue,100%,,,,Complete,,,25d,07/29/24,08/30/24,0,0,,0,0,0%,33.5,0,-33.5,0%,1.00,,"US$8,542.50",US$0.00,US$0.00,33.5,"US$8,542.50",903655625,task,,,
43,Task 3: Rev 2 additional support tasks,Green,0%,,,,,,,25d,09/09/24,10/15/24,-35,0,,0,0,0%,282.92,#NO MATCH,-282.92,58%,1.00,"US$111,592.00","US$64,837.86","US$46,754.14",#NO MATCH,#NO MATCH,#NO MATCH,905881762,deliverable,,,
44,T3.7: Additional laser engine evaluation,Green,0%,,,,,,,25d,09/09/24,10/15/24,-35,0,,0,0,0%,0,0,0,0%,1.00,"US$20,100.00",US$0.00,"US$20,100.00",US$0.00,0,US$0.00,905881797,task,,,
45,OPT - T3.7: Additional laser engine evaluation,Green,0%,,,,Not Started,,,25d,09/09/24,10/15/24,-35,0,,0,0,0%,0,#NO MATCH,0,0%,1.00,,,US$0.00,#NO MATCH,#NO MATCH,#NO MATCH,905972470
46,T3.8: Additional client driven tasks,Green,0%,,,,,,,25d,09/09/24,10/15/24,-35,0,,0,0,0%,232.92,#NO MATCH,-232.92,110%,1.00,"US$51,292.00","US$56,295.36","--US$5,003.36",#NO MATCH,#NO MATCH,#NO MATCH,905881979,task,,,
47,HF/ID tasks,Green,0%,,,,Not Started,,,25d,09/09/24,10/15/24,-35,0,,0,0,0%,190.67,190.67,-190.67,0%,1.00,,"US$44,442.61","--US$44,442.61","US$44,442.61",0,US$0.00,905882092,task,,,
48,Update SLS V4 rendering,Green,0%,,,,Not Started,,,25d,09/09/24,10/15/24,-35,0,,0,0,0%,18,#NO MATCH,-18,0%,1.00,,"US$5,004.00","--US$5,004.00",#NO MATCH,#NO MATCH,#NO MATCH,906092050
49,Galvo discussion,Green,0%,,,,Not Started,,,25d,09/09/24,10/15/24,-35,0,,0,0,0%,24.25,24.25,-24.25,0%,1.00,,"US$6,848.75","--US$6,848.75","US$6,848.75",0,US$0.00,905882478,task,,,
50,T3.9: Head rest evaluation,Green,0%,,,,,,,25d,09/09/24,10/15/24,-35,0,,0,0,0%,33.5,0,-33.5,57%,1.00,"US$15,075.00","US$8,542.50","US$6,532.50",US$0.00,33.5,"US$8,542.50",905882599,task,,,
51,Headrest creep test,Green,0%,,,,Not Started,,,25d,09/09/24,10/15/24,-35,0,,0,0,0%,33.5,0,-33.5,0%,1.00,,"US$8,542.50","--US$8,542.50",US$0.00,33.5,"US$8,542.50",903655625,task,,,
52,Headrest adjustability,Green,0%,,,,Not Started,,,25d,09/09/24,10/15/24,-35,0,,0,0,0%,0,0,0,0%,1.00,,US$0.00,US$0.00,US$0.00,0,US$0.00,905882674,task,,,
53,T3.10: Design evaluation FIP to Clinical,Green,0%,,,,Not Started,,,25d,09/09/24,10/15/24,-35,0,,0,0,0%,16.5,16.5,-16.5,0%,1.00,"US$25,125.00",US$0.00,"US$25,125.00",US$0.00,0,US$0.00,905972500
54,T3.10: Design evaluation FIP to Clinical,Green,0%,,,,Not Started,,,25d,09/09/24,10/15/24,-35,,,0,,0%,16.5,16.5,-16.5,0%,1.00,,,US$0.00,US$0.00,0,US$0.00,905883107,task,,,
55,SOW 6 - FIPA,,41%,,,,,,,142d,05/06/24,11/22/24,3,457.78125,,3662.25,1542.08,75%,2737.1,#NO MATCH,-616.93,79%,0.55,"US$916,984.00","US$722,717.35","US$194,266.65",#NO MATCH,#NO MATCH,#NO MATCH,,,05/06/24,01/02/25,27d
56,Kick Off - Schedule Line,,,,,,,,,0,05/06/24,05/06/24,-197,0,,0,0,0%,,0,0,0%,1.00,,,US$0.00,US$0.00,,,,,05/06/24,05/06/24,0
57,Task 0: Project Operations,,24%,,,,,,,120d,05/06/24,10/22/24,-28,150.28125,,1202.25,299.25,102%,1225.35,148.55,-322.35,132%,0.24,"US$252,856.00","US$333,899.99","--US$81,043.99","US$40,658.22",1076.8,"US$293,241.77",897934275,milestone,05/06/24,01/02/25,49d
58,Project Operations,Green,31%,,,,,,,120d,05/06/24,10/22/24,-28,127.875,,1023,134.25,76%,772.43,83.55,116.32,81%,0.41,"US$252,856.00","US$205,479.89","US$47,376.11","US$22,430.97",688.88,"US$183,048.92",897934276,milestone,05/06/24,01/02/25,49d
59,Management Reserve / Contingency,Green,0%,,,,,,,,,,,33.875,,271,0,0%,0,0,271,0%,1.00,"US$72,598.00",US$0.00,"US$72,598.00",US$0.00,0,US$0.00,897934277,deliverable,,,
60,Management Reserve / Contingency,,31%,,,,,,,0,,,,33.875,,271,0,0%,0,0,271,0%,1.00,US$0.00,US$0.00,US$0.00,US$0.00,0,US$0.00,897934278,task,,,
61,PM Load,Green,31%,,,,In Progress,,,120d,05/06/24,10/22/24,-28,94,,752,134.25,103%,772.43,83.55,-154.68,114%,0.30,"US$180,258.00","US$205,479.89","--US$25,221.89","US$22,430.97",688.88,"US$183,048.92",897934279,deliverable,05/06/24,01/02/25,49d
62,Project Management Activities,,31%,,,,,,,120d,05/06/24,10/22/24,-28,94,,752,134.25,103%,772.43,83.55,-154.68,0%,0.30,US$0.00,"US$205,479.89","--US$205,479.89","US$22,430.97",688.88,"US$183,048.92",897934280,deliverable,05/06/24,01/02/25,49d
64,SW PM - Task 0 - PM Loading - PM Admin & Support,,31%,,,,,Lead,Hema Dawonauth,120d,05/06/24,10/22/24,-28,7,,56,56,0%,0,0,0,0%,1.00,US$0.00,US$0.00,US$0.00,US$0.00,0,US$0.00,897934282,task,05/06/24,09/03/24,-33d
63,HW PM - Task 0 - PM Loading - Project Management Activities,,31%,,,,,Lead,"Ben Green, mrowley@starfishmedical.com",120d,05/06/24,10/22/24,-28,34,,272,18.25,117%,318.25,53.5,-64.5,0%,0.26,US$0.00,"US$88,155.25","--US$88,155.25","US$14,819.50",264.75,"US$73,335.75",897934281,task,09/04/24,01/02/25,49d
65,PgM - Task 0 - PM Loading - PM Admin & Support,,31%,,,,,Lead,mrowley@starfishmedical.com,120d,05/06/24,10/22/24,-28,27,,216,40,83%,179.5,7,-3.5,0%,0.37,US$0.00,"US$49,721.50","--US$49,721.50","US$1,939.00",172.5,"US$47,782.50",897934283,task,05/06/24,09/03/24,-33d
66,HLSD - Task 0 - PM Loading - Project Management Activities,,31%,,,,,Lead,Matt Lemay,120d,05/06/24,10/22/24,-28,18,,144,20,138%,199,17.75,-75,0%,0.22,,"US$55,322.00","--US$55,322.00","US$4,934.50",181.25,"US$50,387.50",897856369,task,05/06/24,09/03/24,-33d
67,PA - Task 0 - PM Loading - PM Admin & Support,,31%,,,,,Lead,Beatriz Staffen,120d,05/06/24,10/22/24,-28,8,,64,0,118%,75.68,5.30000000000001,-11.68,0%,0.26,US$0.00,"US$12,281.14","--US$12,281.14",US$737.97,70.38,"US$11,543.17",897934285,task,05/06/24,09/03/24,-33d
68,Project Overhead,Green,16%,,,,,,,120d,05/06/24,10/22/24,-28,22.40625,,179.25,165,253%,452.92,65,-438.67,0%,0.06,US$0.00,"US$128,420.10","--US$128,420.10","US$18,227.25",387.92,"US$110,192.85",897934286,milestone,05/06/24,01/02/25,49d
69,External Project Coordination Meetings - Weekly,Green,31%,,,,In Progress,,,87d,05/06/24,09/03/24,-77,14.1875,,113.5,120,380%,431.42,65,-437.92,0%,0.08,US$0.00,"US$122,812.60","--US$122,812.60","US$18,227.25",366.42,"US$104,585.35",897934287,deliverable,05/06/24,09/03/24,0
70,SE - Task 0 - Project Overhead - External Project Coordination Meetings - Weekly,,31%,,,,,Support,Matt Lemay,87d,05/06/24,09/03/24,-77,3.75,,30,20,337%,101.17,12.5,-91.17,0%,0.09,US$0.00,"US$27,174.35","--US$27,174.35","US$3,304.00",88.67,"US$23,870.35",897934288,task,05/06/24,09/03/24,0
71,OPT - Task 0 - Project Overhead - External Project Coordination Meetings - Weekly,,31%,,,,,Support,Brian King,87d,05/06/24,09/03/24,-77,3.75,,30,20,477%,143,12.75,-133,0%,0.07,US$0.00,"US$44,307.25","--US$44,307.25","US$4,022.25",130.25,"US$40,285.00",897934289,task,05/06/24,09/03/24,0
72,ME - Task 0 - Project Overhead - External Project Coordination Meetings - Weekly,,31%,,,,,Support,Gene Wey,87d,05/06/24,09/03/24,-77,2,,16,20,322%,51.5,5.5,-55.5,0%,0.10,US$0.00,"US$14,317.00","--US$14,317.00","US$1,529.00",46,"US$12,788.00",897934290,task,05/06/24,09/03/24,0
73,SW - Task 0 - Project Overhead - External Project Coordination Meetings - Weekly,,31%,,,,,Support,,87d,05/06/24,09/03/24,-77,2,,16,20,652%,104.25,27.75,-108.25,0%,0.05,US$0.00,"US$28,981.50","--US$28,981.50","US$7,714.50",76.5,"US$21,267.00",897934291,task,05/06/24,09/03/24,0
74,QAC - Task 0 - Project Overhead - External Project Coordination Meetings - Weekly,,31%,,,,,Support,,87d,05/06/24,09/03/24,-77,2,,16,20,197%,31.5,6.5,-35.5,0%,0.16,US$0.00,"US$8,032.50","--US$8,032.50","US$1,657.50",25,"US$6,375.00",897934292,task,05/06/24,09/03/24,0
75,EE - Task 0 - Project Overhead - External Project Coordination Meetings - Weekly,,31%,,,,,Support,,87d,05/06/24,09/03/24,-77,0.6875,,5.5,20,0%,0,0,-14.5,0%,1.00,US$0.00,US$0.00,US$0.00,US$0.00,0,US$0.00,,0,,,
76,Project Planning for next SOW,Green,0%,,,,Not Started,,,87d,05/06/24,09/03/24,-77,4,,32,32,0%,0,0,0,0%,1.00,US$0.00,US$0.00,US$0.00,US$0.00,0,US$0.00,897934293,deliverable,05/06/24,09/03/24,0
77,PM - Task 0 - Project Overhead - Project Planning for next SOW,,0%,,,,,Lead,"Ben Green, mrowley@starfishmedical.com",87d,05/06/24,09/03/24,-77,4,,32,32,0%,0,0,0,0%,1.00,US$0.00,US$0.00,US$0.00,US$0.00,0,US$0.00,897934294,task,05/06/24,09/03/24,0
78,Kickoff Meetings,Blue,100%,,,,Complete,,,2d,05/06/24,05/07/24,0,1.21875,,9.75,0,105%,10.25,0,-0.5,0%,0.95,US$0.00,"US$2,561.25",US$0.00,US$0.00,10.25,"US$2,561.25",897934295,deliverable,05/06/24,05/07/24,0
79,SE - Task 0 - Project Overhead - Kickoff Meetings,,100%,,,,,Support,Matt Lemay,2d,05/06/24,05/07/24,0,0.0625,,0.5,0,200%,1,0,-0.5,0%,0.50,US$0.00,US$249.50,US$0.00,US$0.00,1,US$249.50,897934296,task,05/06/24,05/07/24,0
80,HF - Task 0 - Project Overhead - Kickoff Meetings,,100%,,,,,Support,phulme@starfishmedical.com,2d,05/06/24,05/07/24,0,0.0625,,0.5,0,100%,0.5,0,0,0%,1.00,US$0.00,US$69.50,US$0.00,US$0.00,0.5,US$69.50,897934297,task,05/06/24,05/07/24,0
81,OPT - Task 0 - Project Overhead - Kickoff Meetings,,100%,,,,,Support,Brian King,2d,05/06/24,05/07/24,0,0.15625,,1.25,0,100%,1.25,0,0,0%,1.00,US$0.00,US$376.75,US$0.00,US$0.00,1.25,US$376.75,897934298,task,05/06/24,05/07/24,0
82,ME - Task 0 - Project Overhead - Kickoff Meetings,,100%,,,,,Support,Gene Wey,2d,05/06/24,05/07/24,0,0,,0,0,0%,0,0,0,0%,1.00,US$0.00,US$0.00,US$0.00,US$0.00,0,US$0.00,897934299,task,05/06/24,05/07/24,0
83,EE - Task 0 - Project Overhead - Kickoff Meetings,,100%,,,,,Support,dsorrentino@starfishmedical.com,2d,05/06/24,05/07/24,0,0.5,,4,0,100%,4,0,0,0%,1.00,US$0.00,"US$1,043.00",US$0.00,US$0.00,4,"US$1,043.00",897934300,task,05/06/24,05/07/24,0
84,SW - Task 0 - Project Overhead - Kickoff Meetings,,100%,,,,,Support,,2d,05/06/24,05/07/24,0,0.3125,,2.5,0,100%,2.5,0,0,0%,1.00,US$0.00,US$695.00,US$0.00,US$0.00,2.5,US$695.00,897934301,task,05/06/24,05/07/24,0
85,QAC - Task 0 - Project Overhead - Kickoff Meetings,,100%,,,,,Support,,2d,05/06/24,05/07/24,0,0.125,,1,0,100%,1,0,0,0%,1.00,US$0.00,US$127.50,US$0.00,US$0.00,1,US$127.50,897934302,task,05/06/24,05/07/24,0
86,End of SOW Meetings,Green,0%,,,,Not Started,,,2d,10/21/24,10/22/24,-28,1.75,,14,13,9%,1.25,0,-0.25,0%,0.00,US$0.00,US$276.25,--US$276.25,US$0.00,1.25,US$276.25,897934303,deliverable,01/01/25,01/02/25,49d
87,SE - Task 0 - Project Overhead - End of SOW Meetings,,0%,,,,,Support,Matt Lemay,2d,10/21/24,10/22/24,-28,0.25,,2,1,63%,1.25,0,-0.25,0%,0.00,US$0.00,US$276.25,--US$276.25,US$0.00,1.25,US$276.25,897934304,task,01/01/25,01/02/25,49d
88,HF - Task 0 - Project Overhead - End of SOW Meetings,,0%,,,,,Support,phulme@starfishmedical.com,2d,10/21/24,10/22/24,-28,0.25,,2,2,0%,0,0,0,0%,1.00,US$0.00,US$0.00,US$0.00,US$0.00,0,US$0.00,897934305,task,01/01/25,01/02/25,49d
89,OPT - Task 0 - Project Overhead - End of SOW Meetings,,0%,,,,,Support,Brian King,2d,10/21/24,10/22/24,-28,0.25,,2,2,0%,0,0,0,0%,1.00,US$0.00,US$0.00,US$0.00,US$0.00,0,US$0.00,897934306,task,01/01/25,01/02/25,49d
90,ME - Task 0 - Project Overhead - End of SOW Meetings,,0%,,,,,Support,Gene Wey,2d,10/21/24,10/22/24,-28,0.25,,2,2,0%,0,0,0,0%,1.00,US$0.00,US$0.00,US$0.00,US$0.00,0,US$0.00,897934307,task,01/01/25,01/02/25,49d
91,EE - Task 0 - Project Overhead - End of SOW Meetings,,0%,,,,,Support,dsorrentino@starfishmedical.com,2d,10/21/24,10/22/24,-28,0.25,,2,2,0%,0,0,0,0%,1.00,US$0.00,US$0.00,US$0.00,US$0.00,0,US$0.00,897934308,task,01/01/25,01/02/25,49d
92,SW - Task 0 - Project Overhead - End of SOW Meetings,,0%,,,,,Support,,2d,10/21/24,10/22/24,-28,0.25,,2,2,0%,0,0,0,0%,1.00,US$0.00,US$0.00,US$0.00,US$0.00,0,US$0.00,897934309,task,01/01/25,01/02/25,49d
93,QAC - Task 0 - Project Overhead - End of SOW Meetings,,0%,,,,,Support,,2d,10/21/24,10/22/24,-28,0.25,,2,2,0%,0,0,0,0%,1.00,US$0.00,US$0.00,US$0.00,US$0.00,0,US$0.00,897934310,task,01/01/25,01/02/25,49d
94,Closing Activities,Blue,0%,,,,Complete,,,5d,10/16/24,10/22/24,-28,1.25,,10,0,100%,10,0,0,0%,0.00,US$0.00,"US$2,770.00","--US$2,770.00",US$0.00,10,"US$2,770.00",897934311,deliverable,12/27/24,01/02/25,49d
95,PA - Task 0 - Project Overhead - Closing Activities,,0%,,,,,Lead,Beatriz Staffen,5d,10/16/24,10/22/24,-28,1.25,,10,0,100%,10,0,0,0%,0.00,US$0.00,"US$2,770.00","--US$2,770.00",US$0.00,10,"US$2,770.00",897934312,task,12/27/24,01/02/25,49d
96,Task I: FIP Design Definition,Blue,100%,,,,,,,49d,05/06/24,07/11/24,0,11.5625,,92.5,0,104%,95.75,0,-3.25,98%,0.97,"US$24,790.00","US$24,320.75",US$0.00,US$0.00,95.75,"US$24,320.75",897934315,milestone,05/06/24,06/12/24,-21d
97,Design Definition,Blue,100%,,,,,,,49d,05/06/24,07/11/24,0,11.5625,,92.5,0,104%,95.75,0,-3.25,98%,0.97,"US$24,790.00","US$24,320.75",US$0.00,US$0.00,95.75,"US$24,320.75",897934316,deliverable,05/06/24,06/12/24,-21d
98,FIP initial design definition,Blue,100%,,,,Complete,,,31d,05/06/24,06/17/24,0,6,,48,0,107%,51.25,0,-3.25,0%,0.94,US$0.00,"US$12,666.00",US$0.00,US$0.00,51.25,"US$12,666.00",897934317,deliverable,05/06/24,05/17/24,-21d
99,ME - Task 1 - Design Definition - FIP initial design definition,,100%,,,,,Support,Gene Wey,31d,05/06/24,06/17/24,0,1,,8,0,0%,0,0,8,0%,1.00,,US$0.00,US$0.00,US$0.00,0,US$0.00,897934318,task,05/06/24,05/17/24,-21d
100,HF - Task 1 - Design Definition - FIP initial design definition,,100%,,,,,Support,phulme@starfishmedical.com,31d,05/06/24,06/17/24,0,1,,8,0,191%,15.25,0,-7.25,0%,0.52,,"US$2,502.00",US$0.00,US$0.00,15.25,"US$2,502.00",897934319,task,05/06/24,05/17/24,-21d
101,OPT - Task 1 - Design Definition - FIP initial design definition,,100%,,,,,Support,Brian King,31d,05/06/24,06/17/24,0,1,,8,0,50%,4,0,4,0%,2.00,,"US$1,268.00",US$0.00,US$0.00,4,"US$1,268.00",897934320,task,05/06/24,05/17/24,-21d
102,SE - Task 1 - Design Definition - FIP initial design definition,,100%,,,,,Lead,Matt Lemay,31d,05/06/24,06/17/24,0,2,,16,0,181%,29,0,-13,0%,0.55,,"US$8,062.00",US$0.00,US$0.00,29,"US$8,062.00",897934321,task,05/06/24,05/17/24,-21d
103,EE - Task 1 - Design Definition - FIP initial design definition,,100%,,,,,Support,dsorrentino@starfishmedical.com,31d,05/06/24,06/17/24,0,1,,8,0,38%,3,0,5,0%,2.67,,US$834.00,US$0.00,US$0.00,3,US$834.00,897934322,task,05/06/24,05/17/24,-21d
104,FIPA Requirements,Blue,100%,,,,Complete,,,10d,06/18/24,07/01/24,0,5.5625,,44.5,0,100%,44.5,0,0,0%,1.00,,"US$11,654.75",US$0.00,US$0.00,44.5,"US$11,654.75",897934323,deliverable,05/20/24,05/31/24,-21d
105,SE - Task 1 - Design Definition - FIPA Requirements,,100%,,,,,Lead,Matt Lemay,10d,06/18/24,07/01/24,0,4.28125,,34.25,0,100%,34.25,0,0,0%,1.00,,"US$9,222.25",US$0.00,US$0.00,34.25,"US$9,222.25",897855920,task,05/20/24,05/31/24,-21d
106,HF - Task 1 - Design Definition - FIPA Requirements,,100%,,,,,Support,phulme@starfishmedical.com,10d,06/18/24,07/01/24,0,0.375,,3,0,100%,3,0,0,0%,1.00,,US$417.00,US$0.00,US$0.00,3,US$417.00,897934325,task,05/20/24,05/31/24,-21d
107,OPT - Task 1 - Design Definition - FIPA Requirements,,100%,,,,,Support,Brian King,10d,06/18/24,07/01/24,0,0.90625,,7.25,0,100%,7.25,0,0,0%,1.00,,"US$2,015.50",US$0.00,US$0.00,7.25,"US$2,015.50",897934326,task,05/20/24,05/31/24,-21d
108,ME - Task 1 - Design Definition - FIPA Requirements,,100%,,,,,Support,Gene Wey,10d,06/18/24,07/01/24,0,0,,0,0,0%,0,0,0,0%,1.00,,US$0.00,US$0.00,US$0.00,0,US$0.00,897934327,task,05/20/24,05/31/24,-21d
109,EE - Task 1 - Design Definition - FIPA Requirements,,100%,,,,,Support,dsorrentino@starfishmedical.com,10d,06/18/24,07/01/24,0,0,,0,0,0%,0,0,0,0%,1.00,,US$0.00,US$0.00,US$0.00,0,US$0.00,897934328,task,05/20/24,05/31/24,-21d
110,CAD/ Volumetrics,Blue,100%,,,,Complete,,,10d,06/28/24,07/11/24,0,0,,0,0,0%,0,0,0,0%,1.00,,US$0.00,US$0.00,US$0.00,0,US$0.00,897934329,deliverable,05/30/24,06/12/24,-21d
111,SE - Task 1 - Design Definition - CAD/ Volumetrics,,100%,,,,,Support,Matt Lemay,10d,06/28/24,07/11/24,0,0,,0,0,0%,0,0,0,0%,1.00,,US$0.00,US$0.00,US$0.00,0,US$0.00,897934330,task,05/30/24,06/12/24,-21d
112,ME - Task 1 - Design Definition - CAD/ Volumetrics,,100%,,,,,Lead,"Ammar Al-Dojaily, Gene Wey",10d,06/28/24,07/11/24,0,0,,0,0,0%,0,0,0,0%,1.00,,US$0.00,US$0.00,US$0.00,0,US$0.00,897934331,task,05/30/24,06/12/24,-21d
113,Task II: Electrical Engineering Design,Green,42%,,,,,,,132d,05/06/24,11/07/24,-12,99,,792,463.25,43%,339.75,36.25,-11,35%,0.98,"US$212,256.00","US$74,218.20","US$138,037.80","US$9,261.00",303.5,"US$64,957.20",897934332,milestone,05/06/24,09/03/24,-45d
114,Main Controller Board (MCB) - First Spin,Green,22%,,,,,,,112d,05/27/24,10/31/24,-19,47,,376,333.5,11%,42.5,0,0,11%,1.95,"US$100,768.00","US$10,686.50","US$90,081.50",US$0.00,42.5,"US$10,686.50",897934333,deliverable,05/13/24,08/20/24,-50d
115,MCB V1 Schematic development,Green,70%,,,,In Progress,,,80d,05/27/24,09/13/24,-67,10,,80,41.5,48%,38.5,0,0,0%,1.45,,"US$9,539.00","--US$9,539.00",US$0.00,38.5,"US$9,539.00",897934334,task,05/13/24,06/07/24,-70d
116,EE - Task II - (MCB) - First Spin - MCB V1 Schematic development,,70%,,,,,Lead,dsorrentino@starfishmedical.com,80d,05/27/24,09/13/24,-67,10,,80,41.5,48%,38.5,0,0,0%,1.45,,"US$9,539.00","--US$9,539.00",US$0.00,38.5,"US$9,539.00",897934335,task,05/13/24,06/07/24,-70d
117,MCB V1 Schematic Review + Updates,Green,0%,,,,Not Started,,,80d,05/27/24,09/13/24,-67,10,,80,77.5,3%,2.5,0,0,0%,0.00,,US$672.00,--US$672.00,US$0.00,2.5,US$672.00,897934336,deliverable,06/10/24,06/14/24,-65d
118,EE - Task II - (MCB) - First Spin - MCB V1 Schematic Review + Updates,,0%,,,,,Lead,dsorrentino@starfishmedical.com,80d,05/27/24,09/13/24,-67,10,,80,77.5,3%,2.5,0,0,0%,0.00,,US$672.00,--US$672.00,US$0.00,2.5,US$672.00,897934337,task,06/10/24,06/14/24,-65d
119,MCB V1 Layout development,Green,0%,,,,Not Started,,,10d,09/11/24,09/24/24,-56,6,,48,48,0%,0,0,0,0%,1.00,,US$0.00,US$0.00,US$0.00,0,US$0.00,897934338,task,06/12/24,06/25/24,-65d
120,EE - Task II - (MCB) - First Spin - MCB V1 Layout development,,0%,,,,,Lead,dsorrentino@starfishmedical.com,10d,09/11/24,09/24/24,-56,6,,48,48,0%,0,0,0,0%,1.00,,US$0.00,US$0.00,US$0.00,0,US$0.00,897934339,task,06/12/24,06/25/24,-65d
121,MCB V1 Layout Review + Updates,Green,0%,,,,Not Started,,,45d,07/10/24,09/10/24,-70,4,,32,30.5,5%,1.5,0,0,0%,0.00,,US$475.50,--US$475.50,US$0.00,1.5,US$475.50,897934340,deliverable,06/26/24,07/02/24,-50d
122,EE - Task II - (MCB) - First Spin - MCB V1 Layout Review + Updates,,0%,,,,,Lead,dsorrentino@starfishmedical.com,45d,07/10/24,09/10/24,-70,4,,32,30.5,5%,1.5,0,0,0%,0.00,,US$475.50,--US$475.50,US$0.00,1.5,US$475.50,897934341,task,06/26/24,07/02/24,-50d
123,MCB V1 BOM procurement,Green,0%,,,,Not Started,,,10d,09/11/24,09/24/24,-56,1,,8,8,0%,0,0,0,0%,1.00,,US$0.00,US$0.00,US$0.00,0,US$0.00,897934342,deliverable,07/03/24,07/16/24,-50d
124,EE - Task II - (MCB) - First Spin - MCB V1 BOM procurement,,0%,,,,,Lead,dsorrentino@starfishmedical.com,10d,09/11/24,09/24/24,-56,1,,8,8,0%,0,0,0,0%,1.00,,US$0.00,US$0.00,US$0.00,0,US$0.00,897934343,task,07/03/24,07/16/24,-50d
125,MCB V1 PCB procurement,Green,0%,,,,Not Started,,,10d,09/11/24,09/24/24,-56,1,,8,8,0%,0,0,0,0%,1.00,,US$0.00,US$0.00,US$0.00,0,US$0.00,897934344,deliverable,07/03/24,07/16/24,-50d
126,EE - Task II - (MCB) - First Spin - MCB V1 PCB procurement,,0%,,,,,Lead,dsorrentino@starfishmedical.com,10d,09/11/24,09/24/24,-56,1,,8,8,0%,0,0,0,0%,1.00,,US$0.00,US$0.00,US$0.00,0,US$0.00,897934345,task,07/03/24,07/16/24,-50d
127,MCB V1 PCBA assembly,Green,0%,,,,Not Started,,,15d,09/25/24,10/17/24,-33,0,,0,0,0%,0,0,0,0%,1.00,,US$0.00,US$0.00,US$0.00,0,US$0.00,0,0,07/17/24,08/06/24,-50d
128,Vendor - Task II - (MCB) - First Spin - MCB V1 PCBA assembly,,0%,,,,,Lead,,15d,09/25/24,10/17/24,-33,0,,0,0,0%,0,0,0,0%,1.00,,US$0.00,US$0.00,US$0.00,0,US$0.00,0,0,07/17/24,08/06/24,-50d
129,MCB V1 Bringup / smoke testing,Green,0%,,,,Not Started,,,10d,10/18/24,10/31/24,-19,15,,120,120,0%,0,0,0,0%,1.00,,US$0.00,US$0.00,US$0.00,0,US$0.00,897934348,deliverable,08/07/24,08/20/24,-50d
130,EE - Task II - (MCB) - First Spin - MCB V1 Bringup / smoke testing,,0%,,,,,Lead,dsorrentino@starfishmedical.com,10d,10/18/24,10/31/24,-19,15,,120,120,0%,0,0,0,0%,1.00,,US$0.00,US$0.00,US$0.00,0,US$0.00,897934349,task,08/07/24,08/20/24,-50d
131,TCB V2,Green,39%,,,,,,,112d,06/03/24,11/07/24,-12,40.5,,324,129.75,77%,251,36.25,-56.75,87%,0.50,"US$60,032.00","US$51,990.69","US$8,041.31","US$9,261.00",214.75,"US$42,729.69",897934350,deliverable,05/06/24,09/03/24,-45d
132,TCB V2  Schematics,Green,50%,,,,In Progress,,,75d,06/03/24,09/13/24,-67,12,,96,0,155%,148.5,35.5,-52.5,0%,0.32,,"US$36,495.13","--US$36,495.13","US$9,052.50",113,"US$27,442.63",897934351,task,05/06/24,06/14/24,-65d
133,EE - Task II - TCB V2 - TCB V2  Schematics,,50%,,,,,Lead,dsorrentino@starfishmedical.com,75d,06/03/24,09/13/24,-67,12,,96,0,155%,148.5,35.5,-52.5,0%,0.32,,"US$36,495.13","--US$36,495.13","US$9,052.50",113,"US$27,442.63",897934352,task,05/06/24,06/14/24,-65d
134,TCB V2 Schematic Review + Updates,Green,50%,,,,In Progress,,,75d,06/03/24,09/13/24,-67,5,,40,0,140%,56,0.75,-16,0%,0.36,,"US$9,566.80","--US$9,566.80",US$208.50,55.25,"US$9,358.30",897934353,deliverable,06/17/24,06/21/24,-60d
135,EE - Task II - TCB V2 - TCB V2 Schematic Review + Updates,,50%,,,,,Lead,dsorrentino@starfishmedical.com,75d,06/03/24,09/13/24,-67,5,,40,0,140%,56,0.75,-16,0%,0.36,,"US$9,566.80","--US$9,566.80",US$208.50,55.25,"US$9,358.30",897934354,task,06/17/24,06/21/24,-60d
136,TCB V2 Layout development,Green,0%,,,,Not Started,,,10d,09/11/24,09/24/24,-56,12,,96,37.75,48%,46.5,0,11.75,0%,0.00,,"US$5,928.76","--US$5,928.76",US$0.00,46.5,"US$5,928.76",897934355,deliverable,06/19/24,07/09/24,-55d
137,EE - Task II - TCB V2 - TCB V2 Layout development,,0%,,,,,Lead,dsorrentino@starfishmedical.com,10d,09/11/24,09/24/24,-56,12,,96,37.75,48%,46.5,0,11.75,0%,0.00,,"US$5,928.76","--US$5,928.76",US$0.00,46.5,"US$5,928.76",897934356,task,06/19/24,07/09/24,-55d
138,TCB V2 Layout Review + Updates,Green,0%,,,,Not Started,,,5d,09/25/24,10/02/24,-48,3,,24,24,0%,0,0,0,0%,1.00,,US$0.00,US$0.00,US$0.00,0,US$0.00,897934357,deliverable,07/10/24,07/16/24,-55d
139,EE - Task II - TCB V2 - TCB V2 Layout Review + Updates,,0%,,,,,Lead,dsorrentino@starfishmedical.com,5d,09/25/24,10/02/24,-48,3,,24,24,0%,0,0,0,0%,1.00,,US$0.00,US$0.00,US$0.00,0,US$0.00,897934358,task,07/10/24,07/16/24,-55d
140,TCB V2 BOM procurement,Green,0%,,,,Not Started,,,5d,10/03/24,10/09/24,-41,1.5,,12,12,0%,0,0,0,0%,1.00,,US$0.00,US$0.00,US$0.00,0,US$0.00,897934359,deliverable,07/17/24,07/30/24,-50d
141,EE - Task II - TCB V2 - TCB V2 BOM procurement,,0%,,,,,Lead,dsorrentino@starfishmedical.com,5d,10/03/24,10/09/24,-41,1.5,,12,12,0%,0,0,0,0%,1.00,,US$0.00,US$0.00,US$0.00,0,US$0.00,897934360,task,07/17/24,07/30/24,-50d
142,TCB V2 PCB procurement,Green,0%,,,,Not Started,,,2d,10/03/24,10/04/24,-46,2,,16,16,0%,0,0,0,0%,1.00,,US$0.00,US$0.00,US$0.00,0,US$0.00,897934361,deliverable,07/17/24,07/30/24,-47d
143,EE - Task II - TCB V2 - TCB V2 PCB procurement,,0%,,,,,Lead,dsorrentino@starfishmedical.com,2d,10/03/24,10/04/24,-46,2,,16,16,0%,0,0,0,0%,1.00,,US$0.00,US$0.00,US$0.00,0,US$0.00,897934362,task,07/17/24,07/30/24,-47d
144,TCB V2 PCBA Assembly,Green,0%,,,,Not Started,,,10d,10/10/24,10/24/24,-26,0,,0,0,0%,0,0,0,0%,1.00,,US$0.00,US$0.00,US$0.00,0,US$0.00,0,0,07/31/24,08/20/24,-45d
145,Vendor - Task II - TCB V2 - TCB V2 PCBA Assembly,,0%,,,,,Lead,,10d,10/10/24,10/24/24,-26,0,,0,0,0%,0,0,0,0%,1.00,,US$0.00,US$0.00,US$0.00,0,US$0.00,0,0,07/31/24,08/20/24,-45d
146,TCB V2 Bring Up / Smoke Test,Green,0%,,,,Not Started,,,10d,10/25/24,11/07/24,-12,5,,40,40,0%,0,0,0,0%,1.00,,US$0.00,US$0.00,US$0.00,0,US$0.00,897934365,deliverable,08/21/24,09/03/24,-45d
147,EE - Task II - TCB V2 - TCB V2 Bring Up / Smoke Test,,0%,,,,,Lead,dsorrentino@starfishmedical.com,10d,10/25/24,11/07/24,-12,5,,40,40,0%,0,0,0,0%,1.00,,US$0.00,US$0.00,US$0.00,0,US$0.00,897934366,task,08/21/24,09/03/24,-45d
148,Port expander PCBA,Blue,100%,,,,,,,45d,05/06/24,07/05/24,0,11.5,,92,0,50%,46.25,0,45.75,22%,1.99,"US$51,456.00","US$11,541.01",US$0.00,US$0.00,46.25,"US$11,541.01",897934367,deliverable,05/06/24,06/17/24,-14d
149,PEB Schematic + Review,Blue,100%,,,,Complete,,,21d,05/06/24,06/03/24,0,0,,0,0,0%,0,0,0,0%,1.00,,US$0.00,US$0.00,US$0.00,0,US$0.00,897934368,deliverable,05/06/24,05/06/24,-20d
150,SE- Task II - Port expander PCBA - PEB Schematic + Review,,100%,,,,,Support,Matt Lemay,21d,05/06/24,06/03/24,0,0,,0,0,0%,0,0,0,0%,1.00,,US$0.00,US$0.00,US$0.00,0,US$0.00,897934369,task,05/06/24,05/06/24,-20d
151,OPT- Task II - Port expander PCBA - PEB Schematic + Review,,100%,,,,,Support,Brian King,21d,05/06/24,06/03/24,0,0,,0,0,0%,0,0,0,0%,1.00,,US$0.00,US$0.00,US$0.00,0,US$0.00,897934370,task,05/06/24,05/06/24,-20d
152,EE- Task II - Port expander PCBA - PEB Schematic + Review,,100%,,,,,Lead,dsorrentino@starfishmedical.com,21d,05/06/24,06/03/24,0,0,,0,0,0%,0,0,0,0%,1.00,,US$0.00,US$0.00,US$0.00,0,US$0.00,897934371,task,05/06/24,05/06/24,-20d
153,PEB bring up / Smoke test,Blue,100%,,,,Complete,,,10d,06/24/24,07/05/24,0,3,,24,0,0%,0,0,24,0%,1.00,US$0.00,US$0.00,US$0.00,US$0.00,0,US$0.00,897934372,deliverable,06/04/24,06/17/24,-14d
154,EE- Task II - Port expander PCBA - PEB brink up / Smoke test,,100%,,,,,Lead,dsorrentino@starfishmedical.com,10d,06/24/24,07/05/24,0,3,,24,0,0%,0,0,24,0%,1.00,,US$0.00,US$0.00,US$0.00,0,US$0.00,897934373,task,06/04/24,06/17/24,-14d
155,Beam Metrology PCBA V2,Blue,100%,,,,Complete,,,22d,06/03/24,07/02/24,0,8.5,,68,0,68%,46.25,0,21.75,0%,1.47,,"US$11,541.01",US$0.00,US$0.00,46.25,"US$11,541.01",898375666,deliverable,,,
156,Design & De-Risking,,100%,,,,Complete,,,14d,06/03/24,06/20/24,0,4.75,,38,0,122%,46.25,0,-8.25,0%,0.82,,"US$11,541.01",US$0.00,US$0.00,46.25,"US$11,541.01",,0,,,
157,EE -  Task II - Port expander PCBA - Beam Metrology PCBA V2 - Design & De-Risking,,100%,,,,,Lead,,14d,06/03/24,06/20/24,0,4.75,,38,0,122%,46.25,0,-8.25,0%,0.82,,"US$11,541.01",US$0.00,US$0.00,46.25,"US$11,541.01",898375710,task,,,
158,Vendor Coms,,100%,,,,Complete,,,14d,06/03/24,06/20/24,0,1.25,,10,0,0%,0,0,10,0%,1.00,,US$0.00,US$0.00,US$0.00,0,US$0.00,,0,,,
159,EE -   Task II - Port expander PCBA - Beam Metrology PCBA V2 - Vendor Coms,,100%,,,,,Lead,,14d,06/03/24,06/20/24,0,1.25,,10,0,0%,0,0,10,0%,1.00,,US$0.00,US$0.00,US$0.00,0,US$0.00,898375883,task,,,
160,Bring Up,,100%,,,,Complete,,,22d,06/03/24,07/02/24,0,2.5,,20,0,0%,0,0,20,0%,1.00,,US$0.00,US$0.00,US$0.00,0,US$0.00,,0,,,
161,EE - Task II - Port expander PCBA - Beam Metrology PCBA V2 -  Bring Up,,100%,,,,,Lead,,22d,06/03/24,07/02/24,0,2.5,,20,0,0%,0,0,20,0%,1.00,,US$0.00,US$0.00,US$0.00,0,US$0.00,898375725,task,,,
162,Task III: ME Gantry Design,Green,49%,,,,,,,102d,05/20/24,10/09/24,-41,60.5,,484,207,71%,344.33,57,-67.33,71%,0.69,"US$135,072.00","US$95,724.67","US$39,347.33","US$15,846.00",287.33,"US$79,878.67",897934378,milestone,06/13/24,07/31/24,-49d
163,Identify LLT items - Schedule Line,,100%,,,,,,,5d,05/27/24,05/31/24,0,0,,0,,0%,,0,0,0%,1.00,,,US$0.00,US$0.00,,,0,0,06/13/24,06/19/24,13d
164,Gantry Frame Design and Parts,Green,29%,,,,,,,80d,06/19/24,10/09/24,-41,27.5,,220,83.5,140%,307.83,51,-171.33,133%,0.21,"US$64,320.00","US$85,577.67","--US$21,257.67","US$14,178.00",256.83,"US$71,399.67",897934380,deliverable,06/13/24,07/31/24,-49d
165,Design of system - Schedule Line,Green,0%,,,,Not Started,,,46d,07/12/24,09/13/24,-67,0,,0,0,0%,,0,0,0%,1.00,,,US$0.00,US$0.00,,,0,0,06/13/24,06/19/24,-62d
166,OTS parts selection - Schedule Line,Green,0%,,,,Not Started,,,46d,07/12/24,09/13/24,-67,0,,0,0,0%,,0,0,0%,1.00,,,US$0.00,US$0.00,,,0,0,06/13/24,06/26/24,-57d
167,CAD 3D/2D,Green,75%,,,,In Progress,,,70d,06/19/24,09/24/24,-56,17,,136,12,217%,295.33,51,-171.33,0%,0.35,,"US$82,102.67","--US$82,102.67","US$14,178.00",244.33,"US$67,924.67",897934385,deliverable,06/13/24,07/24/24,-44d
168,SE - Task III - Gantry Frame Design and Parts - CAD 3D/2D,,75%,,,,,Support,Matt Lemay,70d,06/19/24,09/24/24,-56,1,,8,4,0%,0,0,4,0%,1.00,,US$0.00,US$0.00,US$0.00,0,US$0.00,897934386,task,06/13/24,07/24/24,-44d
169,HF - Task III - Gantry Frame Design and Parts - CAD 3D/2D,,75%,,,,,Support,Mark Ware,70d,06/19/24,09/24/24,-56,1,,8,4,0%,0,0,4,0%,1.00,,US$0.00,US$0.00,US$0.00,0,US$0.00,897934387,task,06/13/24,07/24/24,-44d
170,ME - Task III - Gantry Frame Design and Parts - CAD 3D/2D,,75%,,,,,Lead,"Ammar Al-Dojaily, Gene Wey",70d,06/19/24,09/24/24,-56,14,,112,0,259%,290.58,51,-178.58,0%,0.29,,"US$80,782.17","--US$80,782.17","US$14,178.00",239.58,"US$66,604.17",897934388,task,06/13/24,07/24/24,-44d
171,EE - Task III - Gantry Frame Design and Parts - CAD 3D/2D,,75%,,,,,Support,dsorrentino@starfishmedical.com,70d,06/19/24,09/24/24,-56,1,,8,4,59%,4.75,0,-0.75,0%,1.26,,"US$1,320.50","--US$1,320.50",US$0.00,4.75,"US$1,320.50",897934389,task,06/13/24,07/24/24,-44d
172,METR - Milestone - Schedule Line,Green,0%,,,,Not Started,,,5d,09/25/24,10/02/24,-48,0,,0,0,0%,0,0,0,0%,1.00,,,US$0.00,US$0.00,,,0,0,07/25/24,07/31/24,-44d
173,Stiffness/vibration anaysis,Green,23%,,,,In Progress,,,15d,09/18/24,10/09/24,-41,4,,32,19.5,39%,12.5,0,0,0%,0.59,,"US$3,475.00","--US$3,475.00",US$0.00,12.5,"US$3,475.00",897934392,deliverable,06/13/24,07/10/24,-64d
174,SE - Task III - Gantry Frame Design and Parts - Stiffness/vibration anaysis,,0%,,,,,Lead,Brian King,15d,09/18/24,10/09/24,-41,0.5,,4,4,0%,0,0,0,0%,1.00,,US$0.00,US$0.00,US$0.00,0,US$0.00,897934393,task,06/13/24,07/10/24,-64d
175,ME - Task III - Gantry Frame Design and Parts - Stiffness/vibration anaysis,,45%,,,,,Support,Nathan Muller,15d,09/18/24,10/09/24,-41,3.5,,28,15.5,45%,12.5,0,0,0%,1.01,,"US$3,475.00","--US$3,475.00",US$0.00,12.5,"US$3,475.00",897934394,task,06/13/24,07/10/24,-64d
176,Cable serviceability strategy,Green,0%,,,,Not Started,,,8d,09/27/24,10/09/24,-41,6.5,,52,52,0%,0,0,0,0%,1.00,,US$0.00,US$0.00,US$0.00,0,US$0.00,897934395,deliverable,,,
177,SE - Task III - Gantry Frame Design and Parts - Cable serviceability strategy,,0%,,,,,Support,Matt Lemay,8d,09/27/24,10/09/24,-41,0.5,,4,4,0%,0,0,0,0%,1.00,,US$0.00,US$0.00,US$0.00,0,US$0.00,897934396,task,,,
178,OPT - Task III - Gantry Frame Design and Parts - Cable serviceability strategy,,0%,,,,,Support,Brian King,8d,09/27/24,10/09/24,-41,3,,24,24,0%,0,0,0,0%,1.00,,US$0.00,US$0.00,US$0.00,0,US$0.00,897934397,task,,,
179,ME - Task III - Gantry Frame Design and Parts - Cable serviceability strategy,,0%,,,,,Lead,"Ammar Al-Dojaily, Gene Wey",8d,09/27/24,10/09/24,-41,3,,24,24,0%,0,0,0,0%,1.00,,US$0.00,US$0.00,US$0.00,0,US$0.00,897934398,task,,,
180,OSA on X-Y stages,Green,58%,,,,,,,50d,07/08/24,09/13/24,-67,13,,104,89,22%,23,2,-8,23%,2.62,"US$27,872.00","US$6,394.00","US$21,478.00",US$556.00,21,"US$5,838.00",897934399,deliverable,06/13/24,07/31/24,-32d
181,Design of system,Green,90%,,,,In Progress,,,45d,07/08/24,09/06/24,-74,13,,104,89,22%,23,2,-8,0%,4.07,,"US$6,394.00","--US$6,394.00",US$556.00,21,"US$5,838.00",897934400,deliverable,06/13/24,07/10/24,-42d
182,SE - Task III - OSA on X-Y stages - Design of system,,90%,,,,,Support,Matt Lemay,45d,07/08/24,09/06/24,-74,1,,8,8,0%,0,0,0,0%,1.00,,US$0.00,US$0.00,US$0.00,0,US$0.00,897934401,task,06/13/24,07/10/24,-42d
183,HF - Task III - OSA on X-Y stages - Design of system,,90%,,,,,Support,Mark Ware,45d,07/08/24,09/06/24,-74,0.5,,4,4,0%,0,0,0,0%,1.00,,US$0.00,US$0.00,US$0.00,0,US$0.00,897934402,task,06/13/24,07/10/24,-42d
184,OPT - Task III - OSA on X-Y stages - Design of system,,90%,,,,,Support,Brian King,45d,07/08/24,09/06/24,-74,0.5,,4,4,0%,0,0,0,0%,1.00,,US$0.00,US$0.00,US$0.00,0,US$0.00,897934403,task,06/13/24,07/10/24,-42d
185,ME - Task III - OSA on X-Y stages - Design of system,,90%,,,,,Lead,"Ammar Al-Dojaily, Gene Wey",45d,07/08/24,09/06/24,-74,10,,80,65,29%,23,2,-8,0%,3.13,,"US$6,394.00","--US$6,394.00",US$556.00,21,"US$5,838.00",897934404,task,06/13/24,07/10/24,-42d
186,EE - Task III - OSA on X-Y stages - Design of system,,90%,,,,,Support,dsorrentino@starfishmedical.com,45d,07/08/24,09/06/24,-74,1,,8,8,0%,0,0,0,0%,1.00,,US$0.00,US$0.00,US$0.00,0,US$0.00,897934405,task,06/13/24,07/10/24,-42d
187,OTS Actuator/part selection - Schedule Line,Green,0%,,,,Not Started,,,10d,08/26/24,09/06/24,-74,0,,0,0,0%,,0,0,0%,1.00,,,US$0.00,US$0.00,,,0,0,06/27/24,07/10/24,-42d
188,CAD 3D/2D - Schedule Line,Green,0%,,,,Not Started,,,10d,08/26/24,09/06/24,-74,0,,0,0,0%,,0,0,0%,1.00,,,US$0.00,US$0.00,,,0,0,06/27/24,07/24/24,-32d
189,METR - Schedule Line,Green,0%,,,,Not Started,,,5d,09/09/24,09/13/24,-67,0,,0,0,0%,,0,0,0%,1.00,,,US$0.00,US$0.00,,,0,0,07/25/24,07/31/24,-32d
190,Z' Drive train,Blue,100%,,,,,,,70d,05/20/24,08/23/24,0,15,,120,0,0%,0,0,120,0%,1.00,"US$32,160.00",US$0.00,US$0.00,US$0.00,0,US$0.00,898190154,deliverable,06/13/24,07/31/24,-17d
191,Design of system - Schedule Line,Blue,100%,,,,Not Started,,,55d,05/20/24,08/02/24,0,0,,0,0,0%,,0,0,0%,1.00,,,US$0.00,US$0.00,,,0,0,06/13/24,07/10/24,-17d
192,OTS Drive components - Schedule Line,Blue,100%,,,,Not Started,,,15d,07/15/24,08/02/24,0,0,,0,0,0%,,0,0,0%,1.00,,,US$0.00,US$0.00,,,0,0,06/20/24,07/10/24,-17d
193,Drive Components,Blue,100%,,,,Not Started,,,15d,07/15/24,08/02/24,0,2,,16,0,0%,0,0,16,0%,1.00,,US$0.00,US$0.00,US$0.00,0,US$0.00,898190178,deliverable,06/20/24,07/10/24,-17d
194,ME - Task III - Z' Drive train - Drive Components,,100%,,,,,Lead,"Ammar Al-Dojaily, Gene Wey",15d,07/15/24,08/02/24,0,2,,16,0,0%,0,0,16,0%,1.00,,US$0.00,US$0.00,US$0.00,0,US$0.00,898190380,task,06/20/24,07/10/24,-17d
195,Structure CAD 3D/2D,Blue,100%,,,,Complete,,,20d,07/22/24,08/16/24,0,13,,104,0,0%,0,0,104,0%,1.00,,US$0.00,US$0.00,US$0.00,,US$0.00,898190347,deliverable,06/27/24,07/24/24,-17d
196,SE - Task III - Z' Drive train - Structure CAD 3D/2D,,100%,,,,,Support,Matt Lemay,20d,07/22/24,08/16/24,0,1,,8,0,0%,0,0,8,0%,1.00,,US$0.00,US$0.00,US$0.00,0,US$0.00,898190422,task,06/27/24,07/24/24,-17d
197,HF - Task III - Z' Drive train - Structure CAD 3D/2D,,100%,,,,,Support,Mark Ware,20d,07/22/24,08/16/24,0,0.5,,4,0,0%,0,0,4,0%,1.00,,US$0.00,US$0.00,US$0.00,0,US$0.00,898190431,task,06/27/24,07/24/24,-17d
198,OPT - Task III - Z' Drive train - Structure CAD 3D/2D,,100%,,,,,Support,Brian King,20d,07/22/24,08/16/24,0,0.5,,4,0,0%,0,0,4,0%,1.00,,US$0.00,US$0.00,US$0.00,0,US$0.00,898190430,task,06/27/24,07/24/24,-17d
199,ME - Task III - Z' Drive train - Structure CAD 3D/2D,,100%,,,,,Lead,"Ammar Al-Dojaily, Gene Wey",20d,07/22/24,08/16/24,0,10,,80,0,0%,0,0,80,0%,1.00,,US$0.00,US$0.00,US$0.00,0,US$0.00,898190429,task,06/27/24,07/24/24,-17d
200,EE - Task III - Z' Drive train - Structure CAD 3D/2D,,100%,,,,,Support,dsorrentino@starfishmedical.com,20d,07/22/24,08/16/24,0,1,,8,0,0%,0,0,8,0%,1.00,,US$0.00,US$0.00,US$0.00,0,US$0.00,898190425,task,06/27/24,07/24/24,-17d
201,METR - Schedule Line,Green,100%,,,,Not Started,,,5d,08/19/24,08/23/24,0,0,,0,0,0%,,0,0,0%,1.00,,,US$0.00,US$0.00,,,0,0,07/25/24,07/31/24,-17d
202,OSA Spin (learnings from OSA),Green,9%,,,,,,,65d,06/17/24,09/13/24,-67,5,,40,34.5,34%,13.5,4,-8,35%,0.27,"US$10,720.00","US$3,753.00","US$6,967.00","US$1,112.00",9.5,"US$2,641.00",897934428,deliverable,06/17/24,07/12/24,-45d
203,Update design,Green,9%,,,,In Progress,,,65d,06/17/24,09/13/24,-67,5,,40,34.5,34%,13.5,4,-8,0%,0.27,,"US$3,753.00","--US$3,753.00","US$1,112.00",9.5,"US$2,641.00",897934429,task,06/17/24,07/12/24,-45d
204,SE - Task III - OSA Spin (learnings from OSA) - Update design,,0%,,,,,Support,Matt Lemay,65d,06/17/24,09/13/24,-67,1,,8,8,0%,0,0,0,0%,1.00,,US$0.00,US$0.00,US$0.00,0,US$0.00,897934430,task,06/17/24,07/12/24,-45d
205,OPT - Task III - OSA Spin (learnings from OSA) - Update design,,0%,,,,,Support,Brian King,65d,06/17/24,09/13/24,-67,1,,8,8,0%,0,0,0,0%,1.00,,US$0.00,US$0.00,US$0.00,0,US$0.00,897934431,task,06/17/24,07/12/24,-45d
206,ME - Task III - OSA Spin (learnings from OSA) - Update design,,34%,,,,,Lead,"Ammar Al-Dojaily, Gene Wey",65d,06/17/24,09/13/24,-67,2,,16,10.5,84%,13.5,4,-8,0%,0.40,,"US$3,753.00","--US$3,753.00","US$1,112.00",9.5,"US$2,641.00",897934432,task,06/17/24,07/12/24,-45d
207,EE - Task III - OSA Spin (learnings from OSA) - Update design,,0%,,,,,Support,dsorrentino@starfishmedical.com,65d,06/17/24,09/13/24,-67,1,,8,8,0%,0,0,0,0%,1.00,,US$0.00,US$0.00,US$0.00,0,US$0.00,897934433,task,06/17/24,07/12/24,-45d
208,Task IV: FIPA assembly / test planning,Green,1%,,,,,,,122d,06/03/24,11/22/24,3,27,,216,215.5,1%,1.25,0,-0.75,1%,1.73,"US$57,888.00",US$376.75,"US$57,511.25",US$0.00,1.25,US$376.75,897934434,milestone,06/20/24,10/02/24,-35d
209,LLT Component order - Schedule Line,,,,,,,,,30d,06/03/24,07/12/24,-130,0,,0,,0%,,0,0,0%,1.00,,,US$0.00,US$0.00,,,0,0,06/20/24,07/31/24,13d
210,STD Component procurement - Schedule Line,,,,,,,,,20d,10/03/24,10/31/24,-19,0,,0,,0%,,0,0,0%,1.00,,,US$0.00,US$0.00,,,0,0,08/01/24,08/28/24,-44d
211,OSA V2 assembly,,,,,,,,,5d,10/25/24,10/31/24,-19,,,0,,0%,,0,0,0%,1.00,,,US$0.00,US$0.00,,,,0,,,
212,FIPA assembly,Green,3%,,,,,,,20d,10/25/24,11/22/24,3,15,,120,120,0%,0,0,0,0%,1.00,"US$32,160.00",US$0.00,"US$32,160.00",US$0.00,0,US$0.00,897934437,deliverable,08/22/24,10/02/24,-35d
213,Assemble FIPA,Green,0%,,,,Not Started,,,10d,10/25/24,11/07/24,-12,11,,88,88,0%,0,0,0,0%,1.00,,US$0.00,US$0.00,US$0.00,0,US$0.00,897934438,deliverable,08/22/24,09/11/24,-39d
214,OPT - TASK IV - FIPA assembly - Assemble FIPA,,0%,,,,,Lead,Brian King,10d,10/25/24,11/07/24,-12,4,,32,32,0%,0,0,0,0%,1.00,,US$0.00,US$0.00,US$0.00,0,US$0.00,897934439,task,08/22/24,09/04/24,-44d
215,ME - TASK IV - FIPA assembly - Assemble FIPA,,0%,,,,,Support,Gene Wey,10d,10/25/24,11/07/24,-12,3,,24,24,0%,0,0,0,0%,1.00,,US$0.00,US$0.00,US$0.00,0,US$0.00,897934440,task,08/22/24,09/04/24,-44d
216,EE - TASK IV - FIPA assembly - Assemble FIPA,,0%,,,,,Support,dsorrentino@starfishmedical.com,10d,10/25/24,11/07/24,-12,4,,32,32,0%,0,0,0,0%,1.00,,US$0.00,US$0.00,US$0.00,0,US$0.00,897934441,task,08/22/24,09/11/24,-39d
217,Smoke Testing,Green,6%,,,,Not Started,,,10d,11/08/24,11/22/24,3,4,,32,32,0%,0,0,0,0%,1.00,,US$0.00,US$0.00,US$0.00,0,US$0.00,897934442,deliverable,09/12/24,10/02/24,-35d
218,SE - TASK IV - FIPA assembly - Smoke Testing,,100%,,,,,Support,Matt Lemay,1d,11/08/24,11/08/24,0,0,,0,0,0%,0,0,0,0%,1.00,,US$0.00,US$0.00,US$0.00,0,US$0.00,,0,09/12/24,10/02/24,-26d
219,OPT - TASK IV - FIPA assembly - Smoke Testing,,0%,,,,,Support,Brian King,10d,11/08/24,11/22/24,3,1,,8,8,0%,0,0,0,0%,1.00,,US$0.00,US$0.00,US$0.00,0,US$0.00,897934444,task,09/12/24,10/02/24,-35d
220,ME - TASK IV - FIPA assembly - Smoke Testing,,100%,,,,,Support,Gene Wey,1d,11/08/24,11/08/24,0,0,,0,0,0%,0,0,0,0%,1.00,,US$0.00,US$0.00,US$0.00,0,US$0.00,,0,09/12/24,10/02/24,-26d
221,EE - TASK IV - FIPA assembly - Smoke Testing,,0%,,,,,Lead,dsorrentino@starfishmedical.com,10d,11/08/24,11/22/24,3,2,,16,16,0%,0,0,0,0%,1.00,,US$0.00,US$0.00,US$0.00,0,US$0.00,897934446,task,09/12/24,10/02/24,-35d
222,SW - TASK IV - FIPA assembly - Smoke Testing,,0%,,,,,Support,,10d,11/08/24,11/22/24,3,1,,8,8,0%,0,0,0,0%,1.00,,US$0.00,US$0.00,US$0.00,0,US$0.00,897934447,task,09/12/24,10/02/24,-35d
223,Develop Test Strategy,Green,0%,,,,,,,40d,09/18/24,11/15/24,-4,12,,96,95.5,1%,1.25,0,-0.75,1%,0.00,"US$25,728.00",US$376.75,"US$25,351.25",US$0.00,1.25,US$376.75,897934448,deliverable,08/01/24,09/25/24,-34d
224,Draft test strategy for FIPA,Green,0%,,,,Not Started,,,40d,09/18/24,11/15/24,-4,12,,96,95.5,1%,1.25,0,-0.75,0%,0.00,,US$376.75,--US$376.75,US$0.00,1.25,US$376.75,897934449,deliverable,08/01/24,09/25/24,-34d
225,SE - Task IV - Develop Test Strategy - Draft test strategy for FIPA,,0%,,,,,Lead,Matt Lemay,40d,09/18/24,11/15/24,-4,3,,24,24,0%,0,0,0,0%,1.00,,US$0.00,US$0.00,US$0.00,0,US$0.00,897934450,task,08/01/24,09/25/24,-34d
226,HF - Task IV - Develop Test Strategy - Draft test strategy for FIPA,,0%,,,,,Support,Mark Ware,40d,09/18/24,11/15/24,-4,1,,8,8,0%,0,0,0,0%,1.00,,US$0.00,US$0.00,US$0.00,0,US$0.00,897934451,task,08/01/24,09/25/24,-34d
227,OPT - Task IV - Develop Test Strategy - Draft test strategy for FIPA,,0%,,,,,Support,Brian King,40d,09/18/24,11/15/24,-4,2,,16,16,5%,0.75,0,-0.75,0%,0.00,,US$237.75,--US$237.75,US$0.00,0.75,US$237.75,897934452,task,08/01/24,09/25/24,-34d
228,ME - Task IV - Develop Test Strategy - Draft test strategy for FIPA,,0%,,,,,Support,Gene Wey,40d,09/18/24,11/15/24,-4,3,,24,24,0%,0,0,0,0%,1.00,,US$0.00,US$0.00,US$0.00,0,US$0.00,897934453,task,08/01/24,09/25/24,-34d
229,EE - Task IV - Develop Test Strategy - Draft test strategy for FIPA,,0%,,,,,Support,dsorrentino@starfishmedical.com,40d,09/18/24,11/15/24,-4,2,,16,15.5,3%,0.5,0,0,0%,0.00,,US$139.00,--US$139.00,US$0.00,0.5,US$139.00,897934454,task,08/01/24,09/25/24,-34d
230,SW - Task IV - Develop Test Strategy - Draft test strategy for FIPA,,0%,,,,,Support,,40d,09/18/24,11/15/24,-4,1,,8,8,0%,0,0,0,0%,1.00,,US$0.00,US$0.00,US$0.00,0,US$0.00,897934455,task,08/01/24,09/25/24,-34d
231,Task V: DHF Updates,Green,36%,,,,,,,90d,05/27/24,09/27/24,-53,45.0625,,360.5,95.08,92%,330.84,13.75,-65.42,91%,0.39,"US$96,102.00","US$87,044.49","US$9,057.51","US$3,548.75",317.09,"US$83,495.74",897934456,milestone,06/03/24,08/30/24,-20d
232,PRD,Green,0%,,,,Not Started,,,75d,06/17/24,09/27/24,-53,1.5,,12,12,0%,0,0,0,0%,1.00,"US$3,196.00",US$0.00,"US$3,196.00",US$0.00,0,US$0.00,897934457,deliverable,06/17/24,07/12/24,-55d
233,SE - Task V - PRD,,0%,,,,,Lead,"Brian King, Matt Lemay",75d,06/17/24,09/27/24,-53,0.5,,4,4,0%,0,0,0,0%,1.00,,US$0.00,US$0.00,US$0.00,0,US$0.00,897934458,task,06/17/24,07/12/24,-55d
234,QAC - Task V - PRD,,0%,,,,,Support,,75d,06/17/24,09/27/24,-53,1,,8,8,0%,0,0,0,0%,1.00,,US$0.00,US$0.00,US$0.00,0,US$0.00,897934459,task,06/17/24,07/12/24,-55d
235,SA,Green,10%,,,,In Progress,,,75d,05/27/24,09/06/24,-74,5,,40,28,10%,4,0,8,10%,1.00,"US$10,655.00","US$1,112.00","US$9,543.00",US$0.00,4,"US$1,112.00",897934460,deliverable,06/17/24,07/26/24,-30d
236,SE - Task V - SA,,10%,,,,,Lead,"Brian King, Matt Lemay",75d,05/27/24,09/06/24,-74,4,,32,20,13%,4,0,8,0%,0.80,,"US$1,112.00","--US$1,112.00",US$0.00,4,"US$1,112.00",897855922,task,06/17/24,07/26/24,-30d
237,QAC - Task V - SA,,10%,,,,,Support,,75d,05/27/24,09/06/24,-74,1,,8,8,0%,0,0,0,0%,1.00,,US$0.00,US$0.00,US$0.00,0,US$0.00,897934462,task,06/17/24,07/26/24,-30d
238,RA,Green,67%,,,,In Progress,,,85d,05/27/24,09/20/24,-60,16.25,,130,45.08,81%,104.92,5.5,-20,72%,0.83,"US$34,627.00","US$25,039.08","US$9,587.92","US$1,215.50",99.42,"US$23,823.58",897934463,deliverable,06/03/24,08/09/24,-30d
239,SE - Task V - RA,,67%,,,,,Lead,"Brian King, Matt Lemay",85d,05/27/24,09/20/24,-60,15.25,,122,37.08,86%,104.92,5.5,-20,0%,0.78,,"US$25,039.08","--US$25,039.08","US$1,215.50",99.42,"US$23,823.58",897855925,task,06/03/24,08/09/24,-30d
240,QAC - Task V - RA,,67%,,,,,Support,,85d,05/27/24,09/20/24,-60,1,,8,8,0%,0,0,0,0%,1.00,,US$0.00,US$0.00,US$0.00,0,US$0.00,897934466,task,06/03/24,08/09/24,-30d
241,TRD,Green,60%,,,,In Progress,,,85d,05/27/24,09/20/24,-60,22.3125,,178.5,10,124%,221.92,8.25,-53.42,128%,0.48,"US$47,624.00","US$60,893.41","--US$13,269.41","US$2,333.25",213.67,"US$58,560.16",897934467,deliverable,06/17/24,08/30/24,-15d
242,SE - Task V - TRD,,60%,,,,,Lead,"Brian King, Matt Lemay",85d,05/27/24,09/20/24,-60,21.3125,,170.5,5,130%,221.92,8.25,-56.42,0%,0.46,,"US$60,893.41","--US$60,893.41","US$2,333.25",213.67,"US$58,560.16",897855924,task,06/17/24,08/30/24,-15d
243,QAC - Task V - TRD,,60%,,,,,Support,,85d,05/27/24,09/20/24,-60,1,,8,5,0%,0,0,3,0%,1.00,,US$0.00,US$0.00,US$0.00,0,US$0.00,897934469,task,06/17/24,08/30/24,-15d
244,Task VI: Model Eye Development,Green,72%,,,,,,,115d,05/31/24,11/12/24,-7,57.25,,458,216,77%,351.08,14,-109.08,79%,0.94,"US$122,744.00","US$96,579.50","US$26,164.50","US$3,927.50",337.08,"US$92,652.00",897934470,milestone,05/13/24,08/20/24,-57d
245,Model eye 1 Beam Profiler Test Protocol (internal),Green,100%,,,,,,,35d,07/15/24,08/30/24,0,9,,72,0,198%,142.83,9.5,-70.83,202%,0.50,"US$19,296.00","US$39,063.50",US$0.00,"US$2,680.00",133.33,"US$36,383.50",897934471,deliverable,05/23/24,06/13/24,-56d
246,Model eye 1 Beam Profiler Test Protocol (internal),Green,100%,,,,In Progress,,Ryan Field,35d,07/15/24,08/30/24,0,9,,72,0,198%,142.83,9.5,-70.83,0%,0.50,,"US$39,063.50",US$0.00,"US$2,680.00",133.33,"US$36,383.50",897934473,task,05/23/24,05/28/24,-68d
247,Model eye 2 Alignment Tool Perform. Report (internal),Green,100%,,,,,,,65d,05/31/24,08/29/24,0,3,,24,0,117%,28,0,-4,126%,0.86,"US$6,432.00","US$8,076.50",US$0.00,US$0.00,28,"US$8,076.50",897934482,deliverable,05/13/24,05/22/24,-71d
248,Model eye 2 Alignment Tool Perform. Report (internal),Green,100%,,,,In Progress,,Ryan Field,65d,05/31/24,08/29/24,0,3,,24,0,117%,28,0,-4,0%,0.86,,"US$8,076.50",US$0.00,US$0.00,28,"US$8,076.50",897934484,task,05/13/24,05/15/24,-76d
249,Model eye 3 Safety Checker Perform. Report  (new scope),Green,100%,,,,,,,42d,07/02/24,08/28/24,0,2.5,,20,0,170%,34,0,-14,189%,0.59,"US$5,360.00","US$10,149.50",US$0.00,US$0.00,34,"US$10,149.50",897934492,deliverable,06/14/24,06/26/24,-45d
250,Model eye 3 Safety Checker Perform. Report  (new scope),Green,100%,,,,In Progress,,Ryan Field,42d,07/02/24,08/28/24,0,2.5,,20,0,170%,34,0,-14,0%,0.59,US$0.00,"US$10,149.50",US$0.00,US$0.00,34,"US$10,149.50",897934493,task,06/14/24,06/18/24,-51d
251,Model eye 4 Trajectory Tracker Test Tool  (new scope),Green,100%,,,,,,,42d,07/02/24,08/28/24,0,10.5,,84,0,144%,120.67,0.5,-36.67,145%,0.70,"US$22,512.00","US$32,697.25",US$0.00,US$158.50,120.17,"US$32,538.75",897934500,deliverable,06/27/24,07/19/24,-28d
252,Model eye 4 Trajectory Tracker Test Tool  (new scope),Green,100%,,,,In Progress,,Ryan Field,42d,07/02/24,08/28/24,0,10.5,,84,0,144%,120.67,0.5,-36.67,0%,0.70,US$0.00,"US$32,697.25",US$0.00,US$158.50,120.17,"US$32,538.75",897934501,task,06/27/24,07/01/24,-42d
253,Model eye 5 Fixation Target Test Tool  (new scope),Green,0%,,,,,,,30d,09/30/24,11/12/24,-7,13,,104,104,0%,0,0,0,0%,1.00,"US$27,872.00",US$0.00,"US$27,872.00",US$0.00,0,US$0.00,897934510,deliverable,07/04/24,08/20/24,-57d
254,Model eye 5 Fixation Target Test Tool  (new scope),Green,0%,,,,Not Started,,Ryan Field,30d,09/30/24,11/12/24,-7,13,,104,104,0%,0,0,0,0%,1.00,,US$0.00,US$0.00,US$0.00,0,US$0.00,897934513,task,07/04/24,07/05/24,-89d
255,Coarse Alignment lasers (new scope),Green,0%,,,,,,,15d,08/12/24,08/30/24,-81,4,,32,32,9%,3,3,-3,10%,0.00,"US$8,576.00",US$834.00,"US$7,742.00",US$834.00,0,US$0.00,897934539,deliverable,07/11/24,07/31/24,-22d
256,Coarse Alignment lasers (new scope),Green,0%,,,,Not Started,,Ryan Field,15d,08/12/24,08/30/24,-81,4,,32,32,9%,3,3,-3,0%,0.00,,US$834.00,--US$834.00,US$834.00,0,US$0.00,897934542,task,07/11/24,07/31/24,-22d
257,Model Eye Support,Green,0%,,,,,,,25d,07/29/24,08/30/24,-81,15.25,,122,80,19%,22.58,1,19.42,18%,0.00,"US$32,696.00","US$5,758.75","US$26,937.25",US$255.00,21.58,"US$5,503.75",900585424,deliverable,,,
258,Model Eye Support,Green,0%,,,,Not Started,,Ryan Field,25d,07/29/24,08/30/24,-81,15.25,,122,80,19%,22.58,1,19.42,0%,0.00,,"US$5,758.75","--US$5,758.75",US$255.00,21.58,"US$5,503.75",900597347,task,,,
259,Additional Support Tasks,Green,37%,,,,,,,96d,05/31/24,10/15/24,-35,7.125,,57,46,86%,48.75,#NO MATCH,-37.75,69%,0.43,"US$15,276.00","US$10,553.00","US$4,723.00",#NO MATCH,#NO MATCH,#NO MATCH,897855736,milestone,,,
260,Additional formative support,Green,37%,,,,,,,96d,05/31/24,10/15/24,-35,7.125,,57,46,86%,48.75,#NO MATCH,-37.75,69%,0.43,"US$15,276.00","US$10,553.00","US$4,723.00",#NO MATCH,#NO MATCH,#NO MATCH,898765809,deliverable,,,
261,Investigation into Headrest (contingency)),Green,100%,,,,Complete,,,65d,05/31/24,08/29/24,0,1.125,,9,0,0%,0,-76,9,0%,1.00,,US$0.00,US$0.00,"--US$18,069.68",76,"US$18,069.68",898765813,deliverable,,,
262,SE - Additional Support Tasks - Investigation into Headrest - Headrest research,Green,100%,,,,,Support,Matt Lemay,65d,05/31/24,08/29/24,0,0.125,,1,0,0%,0,-26.83,1,0%,1.00,,US$0.00,US$0.00,"--US$7,337.00",26.83,"US$7,337.00",898765836,task,,,
263,HF -Additional Support Tasks - Investigation into Headrest - Headrest research,Green,100%,,,,,Lead,Mark Ware,65d,05/31/24,08/29/24,0,1,,8,0,0%,0,-49.17,8,0%,1.00,,US$0.00,US$0.00,"--US$10,732.68",49.17,"US$10,732.68",898765843,task,,,
264,Screen placement formative (contingency),Green,30%,,,,In Progress,,,95d,05/31/24,10/11/24,-39,6,,48,0,0%,0,-93.83,48,0%,1.00,,US$0.00,US$0.00,"--US$20,640.34",93.83,"US$20,640.34",898765872,deliverable,,,
265,SE -  Additional formative support - Screen placement formative,Green,30%,,,,,Support,Matt Lemay,95d,05/31/24,10/11/24,-39,0.375,,3,0,0%,0,-5,3,0%,1.00,,US$0.00,US$0.00,"--US$1,390.00",5,"US$1,390.00",898765881,task,,,
266,HF - Additional formative support - Screen placement formative,Green,30%,,,,,Lead,Mark Ware,95d,05/31/24,10/11/24,-39,4.375,,35,0,0%,0,-72.33,35,0%,1.00,,US$0.00,US$0.00,"--US$15,270.09",72.33,"US$15,270.09",898765885,task,,,
267,ME -  Additional formative support - Screen placement formative,Green,30%,,,,,Support,"Ammar Al-Dojaily, Gene Wey",95d,05/31/24,10/11/24,-39,1.25,,10,0,0%,0,-16.5,10,0%,1.00,,US$0.00,US$0.00,"--US$3,980.25",16.5,"US$3,980.25",898765891,task,,,
268,Clinical device rendering for Technical Baseline (contingency),,,,,,,,,25d,09/09/24,10/15/24,-35,0,,0,0,0%,19,0,-19,0%,1.00,,"US$5,282.00","--US$5,282.00",US$0.00,19,"US$5,282.00",902120730,task,,,
269,Client support (Mike O),Green,0%,,,,In Progress,,,25d,08/22/24,09/25/24,-55,0,,0,0,0%,0,-24.25,0,0%,1.00,,US$0.00,US$0.00,"--US$6,848.75",24.25,"US$6,848.75",900510045,deliverable,,,
270,Galvo questions,Green,0%,,,,,,,25d,08/22/24,09/25/24,-55,0,,0,0,0%,0,-8.25,0,0%,1.00,,US$0.00,US$0.00,"--US$2,361.75",8.25,"US$2,361.75",900510057,task,,,
271,ME discussion,Green,0%,,,,,,,25d,08/22/24,09/25/24,-55,0,,0,0,0%,0,-16,0,0%,1.00,,US$0.00,US$0.00,"--US$4,487.00",16,"US$4,487.00",900510081,task,,,
272,Further client updates to laser safety memo,,,,,,,,,25d,09/09/24,10/15/24,-35,0,,0,0,0%,18.75,8.75,-18.75,0%,1.00,,"US$5,271.00","--US$5,271.00","US$2,481.25",10,"US$2,789.75",902477142,task,,,
273,Optical Work Carry Over from SOW 5,Green,40%,,,,In Progress,,,65d,07/02/24,10/01/24,-49,0,,0,46,0%,0,-23.5,-46,0%,1.00,,US$0.00,US$0.00,"--US$6,671.00",23.5,"US$6,671.00",902511851,task,,,
274,Integrate Laser Engine,Green,24%,,,,,,,65d,07/02/24,10/01/24,-49,0,,0,12,0%,16.75,0,-28.75,0%,1.00,,"US$4,531.25","--US$4,531.25",US$0.00,16.75,"US$4,531.25",902511889,task,,,
275,Optics Alignment,Green,25%,,,,,,,65d,07/02/24,10/01/24,-49,0,,0,10,0%,5.75,0,-15.75,0%,1.00,,"US$1,822.75","--US$1,822.75",US$0.00,5.75,"US$1,822.75",902511895,task,,,
276,Collaborative behavior definition & Document behavior,Green,70%,,,,,,,65d,07/02/24,10/01/24,-49,0,,0,24,0%,1,0,-25,0%,1.00,,US$317.00,--US$317.00,US$0.00,1,US$317.00,902511905,task,,,
277,Requirements Writing for Clinical,,,,,,,,,25d,09/09/24,10/15/24,-35,0,,0,0,0%,11,#NO MATCH,-11,0%,1.00,,US$0.00,US$0.00,#NO MATCH,#NO MATCH,#NO MATCH,906450548
278,Requirements Writing for Clinical - SE,,,,,,,,,25d,09/09/24,10/15/24,-35,0,,0,0,0%,11,#NO MATCH,-11,0%,1.00,,"US$3,058.00","--US$3,058.00",#NO MATCH,#NO MATCH,#NO MATCH,906450612
279,SOW 6-1 - SW,,48%,,,,,,,125d,05/06/24,10/29/24,-21,300.00875,,2400.07,438.5,59%,1417.96,83.54,543.61,70%,0.81,"US$547,500.00","US$380,863.44","US$166,636.56","US$20,992.39",1334.42,"US$359,871.05"
280,Project Operations,,34%,,,,,,,110d,05/06/24,10/07/24,-43,109.19625,,873.57,0,33%,291.2,51.37,582.37,38%,1.02,"US$206,604.00","US$78,468.03","US$128,135.97","US$14,208.03",239.83,"US$64,260.00",901647703,milestone,,,
281,Management Reserve / Contingency,,50%,,,,,,,110d,05/06/24,10/07/24,-43,27.825,,222.6,0,0%,0,0,222.6,0%,1.00,"US$60,465.00",US$0.00,"US$60,465.00",US$0.00,0,US$0.00,901647704,deliverable,,,
282,Management Reserve / Contingency,Green,50%,,,,In Progress,,,110d,05/06/24,10/07/24,-43,27.825,,222.6,0,0%,0,0,222.6,0%,1.00,,US$0.00,US$0.00,US$0.00,0,US$0.00,901647899,task,,,
283,PM Load,,50%,,,,,,,110d,05/06/24,10/07/24,-43,70.12125,,560.97,0,52%,290.7,51.37,270.27,64%,0.96,"US$122,019.00","US$78,309.53","US$43,709.47","US$14,208.03",239.33,"US$64,101.50",901647705,deliverable,,,
284,Project Management Activities,Green,50%,,,,In Progress,,,110d,05/06/24,10/07/24,-43,44.05,,352.4,0,76%,268.25,51,84.15,0%,0.66,,"US$74,305.25","--US$74,305.25","US$14,127.00",217.25,"US$60,178.25",900590740,task,,,
285,PM Admin / Support activities,Green,50%,,,,In Progress,,,110d,05/06/24,10/07/24,-43,26.07125,,208.57,0,11%,22.45,0.370000000000001,186.12,0%,4.65,,"US$4,004.28","--US$4,004.28",US$81.03,22.08,"US$3,923.25",901647707,task,,,
286,Project Overhead,,1%,,,,,,,110d,05/06/24,10/07/24,-43,11.25,,90,0,1%,0.5,0,89.5,1%,1.80,"US$24,120.00",US$158.50,"US$23,961.50",US$0.00,0.5,US$158.50,901647708,deliverable,,,
287,External Project Coordination Meetings - Weekly,,0%,,,,Not Started,,,110d,05/06/24,10/07/24,-43,0,,0,0,0%,0,0,0,0%,1.00,,US$0.00,US$0.00,US$0.00,0,US$0.00,901647709,task,,,
288,Project Planning for next SOW (New in 2024),,0%,,,,Not Started,,,110d,05/06/24,10/07/24,-43,10,,80,0,0%,0,0,80,0%,1.00,,US$0.00,US$0.00,US$0.00,0,US$0.00,901647710,task,,,
289,Kickoff Meetings,,100%,,,,Complete,,,5d,05/06/24,05/10/24,0,0,,0,0,0%,0.5,0,-0.5,0%,1.00,,US$158.50,US$0.00,US$0.00,0.5,US$158.50,901647711,task,,,
290,End of SOW Meetings,,0%,,,,Not Started,,,110d,05/06/24,10/07/24,-43,0,,0,0,0%,0,0,0,0%,1.00,,US$0.00,US$0.00,US$0.00,0,US$0.00,901647712,task,,,
291,Closing Activities,,0%,,,,Not Started,,,110d,05/06/24,10/07/24,-43,1.25,,10,0,0%,0,0,10,0%,1.00,,US$0.00,US$0.00,US$0.00,0,US$0.00,901647713,task,,,
292,Project Management Deliverables,,0%,,,,,,,110d,05/06/24,10/07/24,-43,0,,0,0,0%,0,0,0,0%,1.00,US$0.00,US$0.00,US$0.00,US$0.00,0,US$0.00,901647716,milestone,,,
293,Design Plan,,0%,,,,,,,110d,05/06/24,10/07/24,-43,0,,0,0,0%,0,0,0,0%,1.00,US$0.00,US$0.00,US$0.00,US$0.00,0,US$0.00,901647717,deliverable,,,
294,Update Design Plan,,0%,,,,Not Started,Lead,,110d,05/06/24,10/07/24,-43,0,,0,0,0%,0,0,0,0%,1.00,,US$0.00,US$0.00,US$0.00,0,US$0.00,901647718,task,,,
295,Next SOW Proposal,,0%,,,,,,,110d,05/06/24,10/07/24,-43,0,,0,0,0%,0,0,0,0%,1.00,US$0.00,US$0.00,US$0.00,US$0.00,0,US$0.00,901647719,deliverable,,,
296,High Level Alignment with Client,,0%,,,,Not Started,Lead,,110d,05/06/24,10/07/24,-43,0,,0,0,0%,0,0,0,0%,1.00,,US$0.00,US$0.00,US$0.00,0,US$0.00,901647720,task,,,
297,"Internal Alignment with FMs, Draft WBS",,0%,,,,Not Started,Lead,,110d,05/06/24,10/07/24,-43,0,,0,0,0%,0,0,0,0%,1.00,,US$0.00,US$0.00,US$0.00,0,US$0.00,901647721,task,,,
298,"Write, review, approve, present Proposal",,0%,,,,Not Started,Lead,,110d,05/06/24,10/07/24,-43,0,,0,0,0%,0,0,0,0%,1.00,,US$0.00,US$0.00,US$0.00,0,US$0.00,901647722,task,,,
299,Sprint 19,Blue,100%,,,,,,,35d,05/06/24,06/21/24,0,27,,216,0,150%,322.92,0,-106.92,159%,0.67,"US$57,888.00","US$92,235.08",US$0.00,US$0.00,322.92,"US$92,235.08",901647723,milestone,,,
300,Sprint 19 Schedule,,100%,,,,,,,35d,05/06/24,06/21/24,0,0,,0,0,0%,0,0,0,0%,1.00,US$0.00,US$0.00,US$0.00,US$0.00,0,US$0.00,,0,,,
301,FPGA FW Iteration 7 - Data Logging,Blue,100%,,,,,,,15d,06/03/24,06/21/24,0,20,,160,0,70%,112.67,0,47.33,73%,1.42,"US$42,880.00","US$31,321.33",US$0.00,US$0.00,112.67,"US$31,321.33",901647724,deliverable,,,
302,Sprint 19 - FPGA FW Iteration 7 - Data Logging - Create a log infrastructure,Blue,100%,,,,Complete,Lead,,15d,06/03/24,06/21/24,0,5,,40,0,86%,34.42,0,5.58,0%,1.16,,"US$9,567.83",US$0.00,US$0.00,34.42,"US$9,567.83",900313957,task,,,
303,Sprint 19 - FPGA FW Iteration 7 - Data Logging - Retrieve Log Data,Blue,100%,,,,Complete,Lead,,15d,06/03/24,06/21/24,0,5,,40,0,21%,8.25,0,31.75,0%,4.85,,"US$2,293.50",US$0.00,US$0.00,8.25,"US$2,293.50",900313958,task,,,
304,Sprint 19 - FPGA FW Iteration 7 - Data Logging - Transmit log data to phytec using SPI,Blue,100%,,,,Complete,Lead,,15d,06/03/24,06/21/24,0,10,,80,0,88%,70,0,10,0%,1.14,,"US$19,460.00",US$0.00,US$0.00,70,"US$19,460.00",900313960,task,,,
305,TCB FW Iteration 2,Blue,100%,,,,,,,15d,06/03/24,06/21/24,0,5,,40,0,135%,54,0,-14,160%,0.74,"US$10,720.00","US$17,118.00",US$0.00,US$0.00,54,"US$17,118.00",901647728,deliverable,,,
306,Sprint 19 - TCB FW Iteration 2 - Fixation Control,Blue,100%,,,,Complete,Lead,,15d,06/03/24,06/21/24,0,5,,40,0,135%,54,0,-14,0%,0.74,,"US$17,118.00",US$0.00,US$0.00,54,"US$17,118.00",900588166,task,,,
307,Test Tool,Blue,100%,,,,,,,15d,06/03/24,06/21/24,0,2,,16,0,977%,156.25,0,-140.25,"1,021%",0.10,"US$4,288.00","US$43,795.75",US$0.00,US$0.00,156.25,"US$43,795.75",901647730,deliverable,,,
308,Sprint 19 - Test Tool - Update FPGA Test tool,Blue,100%,,,,Complete,Lead,,15d,06/03/24,06/21/24,0,2,,16,0,627%,100.25,0,-84.25,0%,0.16,,"US$26,043.75",US$0.00,US$0.00,100.25,"US$26,043.75",900770438,task,,,
309,Sprint 19 - Test Tool - TCB Test Tool,Blue,100%,,,,Complete,Lead,,15d,06/03/24,06/21/24,0,0,,0,0,0%,56,0,-56,0%,1.00,,"US$17,752.00",US$0.00,US$0.00,56,"US$17,752.00",901660054,task,,,
310,Sprint 20,Blue,100%,,,,,,,15d,06/24/24,07/12/24,0,17,,136,0,53%,72,-56.25,64,53%,1.89,"US$36,448.00","US$19,288.00",US$0.00,"--US$11,912.64",128.25,"US$31,200.64",901647733,milestone,,,
311,Sprint 20 Schedule,,100%,,,,,,,15d,06/24/24,07/12/24,0,0,,0,0,0%,0,0,0,0%,1.00,US$0.00,US$0.00,US$0.00,US$0.00,0,US$0.00,,0,,,
312,FPGA FW Iteration 7,Blue,100%,,,,,,,15d,06/24/24,07/12/24,0,10,,80,0,48%,38.5,0,41.5,50%,2.08,"US$21,440.00","US$10,703.00",US$0.00,US$0.00,38.5,"US$10,703.00",901647734,deliverable,,,
313,Sprint 20 - FPGA FW Iteration 7 - Transmit log data to phytec using SPI,Blue,100%,,,,,Lead,,15d,06/24/24,07/12/24,0,10,,80,0,5%,4,0,76,0%,20.00,,"US$1,112.00",US$0.00,US$0.00,4,"US$1,112.00",901647735,task,,,
314,Sprint 20 - FPGA FW Iteration 7 - Beam Metrology Iteration 2,Blue,100%,,,,,Lead,,15d,06/24/24,07/12/24,0,0,,0,0,0%,34.5,0,-34.5,0%,1.00,,"US$9,591.00",US$0.00,US$0.00,34.5,"US$9,591.00",900605586,task,,,
315,SW Architecture and Requirements,Blue,100%,,,,,Lead,,15d,06/24/24,07/12/24,0,5,,40,,0%,0,-56.25,40,0%,1.00,"US$10,720.00",US$0.00,US$0.00,"--US$11,912.64",56.25,"US$11,912.64",904780166,deliverable,,,
316,SW Architecture and Requirements,Blue,100%,,,,,,,15d,06/24/24,07/12/24,0,5,,40,0,141%,56.25,0,-16.25,0%,0.71,,"US$11,912.64",US$0.00,US$0.00,56.25,"US$11,912.64",900691010,task,,,
317,Sprint 20 - Chronos Checker,Blue,100%,,,,,Lead,,15d,06/24/24,07/12/24,0,0,,0,0,0%,0,0,0,0%,1.00,US$0.00,US$0.00,US$0.00,US$0.00,0,US$0.00,901647740,deliverable,,,
318,Test Tool,Blue,100%,,,,,,,15d,06/24/24,07/12/24,0,2,,16,0,209%,33.5,0,-17.5,200%,0.48,"US$4,288.00","US$8,585.00",US$0.00,US$0.00,33.5,"US$8,585.00",901647752,deliverable,,,
319,Sprint 20 - Test Tool - Update TCB  Test Tool,Blue,100%,,,,,Lead,,15d,06/24/24,07/12/24,0,2,,16,0,209%,33.5,0,-17.5,0%,0.48,,"US$8,585.00",US$0.00,US$0.00,33.5,"US$8,585.00",900586481,task,,,
320,Sprint 21,Blue,100%,,,,,,,15d,07/15/24,08/02/24,0,16.5625,,132.5,0,115%,151.75,0,-19.25,117%,0.87,"US$35,510.00","US$41,450.50",US$0.00,US$0.00,151.75,"US$41,450.50",901647745,milestone,,,
321,Sprint 21 Schedule,,100%,,,,,,,15d,07/15/24,08/02/24,0,0,,0,0,0%,0,0,0,0%,1.00,US$0.00,US$0.00,US$0.00,US$0.00,0,US$0.00,,0,,,
322,FPGA Iteration 8 - Procedure Primitive,Blue,100%,,,,,,,15d,07/15/24,08/02/24,0,6,,48,0,240%,115.25,0,-67.25,249%,0.42,"US$12,864.00","US$32,039.50",US$0.00,US$0.00,115.25,"US$32,039.50",901647746,deliverable,,,
323,Sprint 21 - FPGA Iteration 8 - Procedure Primitive - FPGA to run procedure initiated by TCB,Blue,100%,,,,,Lead,,15d,07/15/24,08/02/24,0,5,,40,0,279%,111.75,0,-71.75,0%,0.36,,"US$31,066.50",US$0.00,US$0.00,111.75,"US$31,066.50",901647747,task,,,
324,Sprint 21 - FPGA Iteration 8 - Procedure Primitive - Other Behaviours needed for OSA,Blue,100%,,,,,Lead,,15d,07/15/24,08/02/24,0,0.5,,4,0,0%,0,0,4,0%,1.00,,US$0.00,US$0.00,US$0.00,0,US$0.00,901647736,task,,,
325,Rework,Blue,100%,,,,,,,15d,07/15/24,08/02/24,0,0.5,,4,0,88%,3.5,0,0.5,0%,1.14,,US$973.00,US$0.00,US$0.00,3.5,US$973.00,901647737,task,,,
326,Chronos Checker,Blue,100%,,,,,,,15d,07/15/24,08/02/24,0,9.5625,,76.5,0,37%,28.5,0,48,35%,2.68,"US$20,502.00","US$7,267.50",US$0.00,US$0.00,28.5,"US$7,267.50",901647749,deliverable,,,
327,CC algorithm improvement,Blue,100%,,,,,Lead,,15d,07/15/24,08/02/24,0,3.5625,,28.5,0,100%,28.5,0,0,0%,1.00,,"US$7,267.50",US$0.00,US$0.00,28.5,"US$7,267.50",901647741,task,,,
328,Functional Testing,Blue,100%,,,,,Lead,,15d,07/15/24,08/02/24,0,2,,16,0,0%,0,0,16,0%,1.00,,US$0.00,US$0.00,US$0.00,0,US$0.00,901647750,task,,,
329,Rework,Blue,100%,,,,,,,15d,07/15/24,08/02/24,0,4,,32,0,0%,0,0,32,0%,1.00,,US$0.00,US$0.00,US$0.00,0,US$0.00,901647751,task,,,
330,SW architecture and Requirements,Blue,100%,,,,,,,15d,07/15/24,08/02/24,0,1,,8,0,100%,8,0,0,100%,1.00,"US$2,144.00","US$2,143.50",US$0.00,US$0.00,8,"US$2,143.50",904779194,deliverable,,,
331,SW architecture and Requirements,Blue,100%,,,,,Lead,,15d,07/15/24,08/02/24,0,1,,8,0,100%,8,0,0,0%,1.00,,"US$2,143.50",US$0.00,US$0.00,8,"US$2,143.50",901647765,task,,,
332,Sprint 22,Blue,100%,,,,,,,15d,08/05/24,08/23/24,0,15.375,,123,0,63%,77,-9.5,46,88%,1.60,"US$22,646.00","US$19,830.50",US$0.00,"--US$2,639.00",86.5,"US$22,469.50",901647754,milestone,,,
333,Sprint 22 Schedule,,100%,,,,,,,15d,08/05/24,08/23/24,0,0,,0,0,0%,0,0,0,0%,1.00,US$0.00,US$0.00,US$0.00,US$0.00,0,US$0.00,,0,,,
334,Chronos Checker,Blue,100%,,,,,,,15d,08/05/24,08/23/24,0,8.5,,68,0,100%,68,0,0,95%,1.00,"US$18,224.00","US$17,340.00",US$0.00,US$0.00,68,"US$17,340.00",904491645,deliverable,,,
335,CC algorithm Improvement / Testing,Blue,100%,,,,,Lead,,15d,08/05/24,08/23/24,0,8.5,,68,0,100%,68,0,0,0%,1.00,,"US$17,340.00",US$0.00,US$0.00,68,"US$17,340.00",904491673,task,,,
336,SW Architecture  and Requirements,Blue,100%,,,,,,,15d,08/05/24,08/23/24,0,0.875,,7,0,129%,9,0,-2,133%,0.78,"US$1,876.00","US$2,490.50",US$0.00,US$0.00,9,"US$2,490.50",904779350,deliverable,,,
337,SW Architecture & Requirements ( Top Level),Blue,100%,,,,,Lead,,15d,08/05/24,08/23/24,0,0.875,,7,0,129%,9,0,-2,0%,0.78,,"US$2,490.50",US$0.00,US$0.00,9,"US$2,490.50",903247550,task,,,
338,DHF Iteration 1,Blue,100%,,,,,Lead,,15d,08/05/24,08/23/24,0,6,,48,0,0%,0,-9.5,48,0%,1.00,"US$2,546.00",US$0.00,US$0.00,"--US$2,639.00",9.5,"US$2,639.00",904371569,deliverable,,,
339,"SDP including SW development process, SW Integration and Verification Testing, SW Issue Management, Config management",Blue,100%,,,,,Lead,,15d,08/05/24,08/23/24,0,1.1875,,9.5,0,100%,9.5,0,0,0%,1.00,,"US$2,639.00",US$0.00,US$0.00,9.5,"US$2,639.00",904371586,task,,,
340,Sprint 23 - Beam Primitive 1 and Beam metrology 2,Blue,100%,,,,Complete,,,15d,08/26/24,09/13/24,0,47.375,,379,354.5,13%,47.5,25.5,-23,10%,7.98,"US$108,004.00","US$10,703.00",US$0.00,"US$4,644.50",22,"US$6,058.50",901647768,milestone,,,
341,Sprint 23 Schedule,,100%,,,,,,,15d,08/26/24,09/13/24,0,0,,0,0,0%,0,0,0,0%,1.00,US$0.00,US$0.00,US$0.00,US$0.00,0,US$0.00,,0,,,
342,FPGA Iteration 8 - Procedure/ Beam Primitive,Blue,100%,,,,Complete,,,15d,08/26/24,09/13/24,0,19,,152,138,25%,38.5,19,-24.5,23%,3.95,"US$47,168.00","US$10,703.00",US$0.00,"US$5,282.00",19.5,"US$5,421.00",901647755,deliverable,,,
343,FPGA to run procedure & Other Behaviours needed for OSA,Blue,100%,,,,Complete,,,15d,08/26/24,09/13/24,0,10,,80,80,0%,0,0,0,0%,1.00,,US$0.00,US$0.00,US$0.00,0,US$0.00,901647748,task,,,
344,Functional Testing,Blue,100%,,,,Complete,,,15d,08/26/24,09/13/24,0,3,,24,24,0%,0,0,0,0%,1.00,,US$0.00,US$0.00,US$0.00,0,US$0.00,901647758,task,,,
345,Rework,Blue,100%,,,,Complete,,,15d,08/26/24,09/13/24,0,6,,48,34,80%,38.5,19,-24.5,0%,1.25,,"US$10,703.00",US$0.00,"US$5,282.00",19.5,"US$5,421.00",901647759,task,,,
346,FPGA Iteration 9 - Beam Metrology Iteration 2,Blue,100%,,,,Complete,,,15d,08/26/24,09/13/24,0,10,,80,80,0%,0,0,0,0%,1.00,"US$21,440.00",US$0.00,US$0.00,US$0.00,0,US$0.00,903247938,deliverable,,,
347,Sprint 23 - FPGA Iteration 9 - Beam metrology Iteration 2,Blue,100%,,,,Complete,Lead,,15d,08/26/24,09/13/24,0,10,,80,80,0%,0,0,0,0%,1.00,,US$0.00,US$0.00,US$0.00,0,US$0.00,901647757,task,,,
348,DHF - Iteration 1,Blue,100%,,,,Complete,,,15d,08/26/24,09/13/24,0,7.4375,,59.5,57,15%,9,6.5,-6.5,0%,6.61,"US$15,946.00",US$0.00,US$0.00,--US$637.50,2.5,US$637.50,904556980,deliverable,,,
349,Initial SW Requirements ( TRD) - Top Level Requirements for FPGA,Blue,100%,,,,Complete,,,15d,08/26/24,09/13/24,0,4.25,,34,34,0%,0,0,0,0%,1.00,,US$0.00,US$0.00,US$0.00,0,US$0.00,904556962,task,,,
350,Initial SW Risk Analysis - System Requirements with related SW risks,Blue,100%,,,,Complete,,,15d,08/26/24,09/13/24,0,0,,0,0,0%,2.5,2.5,-2.5,0%,1.00,,US$581.00,US$0.00,US$581.00,0,US$0.00,904556986,task,,,
351,Initial SW Verification Plan - Test Strategy and implementation,Blue,100%,,,,Complete,,,15d,08/26/24,09/13/24,0,1.9375,,15.5,15.5,0%,0,0,0,0%,1.00,,US$0.00,US$0.00,US$0.00,0,US$0.00,905531874,task,,,
352,Reviewing Chronos Documents,Blue,100%,,,,Complete,,,15d,08/26/24,09/13/24,0,1.25,,10,7.5,65%,6.5,4,-4,0%,1.54,,"US$1,657.50",US$0.00,"US$1,020.00",2.5,US$637.50,905532142,task,,,
353,SW architecture and Requirements,Blue,100%,,,,Complete,,,15d,08/26/24,09/13/24,0,5,,40,40,0%,0,0,0,0%,1.00,"US$10,720.00",US$0.00,US$0.00,US$0.00,0,US$0.00,904780350,deliverable,,,
354,SW architecture and Requirements,Blue,100%,,,,Complete,,,15d,08/26/24,09/13/24,0,5,,40,40,20%,8,8,-8,0%,5.00,,"US$2,224.00",US$0.00,"US$2,224.00",0,US$0.00,901647773,task,,,
355,Chronos Checker,Blue,100%,,,,Complete,,,15d,08/26/24,09/13/24,0,2.9375,,23.5,23.5,0%,0,0,0,0%,1.00,"US$6,298.00",US$0.00,US$0.00,US$0.00,0,US$0.00,905531191,deliverable,,,
356,CC Algorithm Improvement / Testing,Blue,100%,,,,Complete,,,15d,08/26/24,09/13/24,0,2.9375,,23.5,23.5,55%,13,13,-13,0%,1.81,,"US$3,315.00",US$0.00,"US$3,315.00",0,US$0.00,905531230,task,,,
357,Test Tool,Blue,100%,,,,Complete,,,15d,08/26/24,09/13/24,0,3,,24,16,0%,0,0,8,0%,1.00,"US$6,432.00",US$0.00,US$0.00,US$0.00,0,US$0.00,901647766,deliverable,,,
358,Update  TCB/ MCB Test tool,Blue,100%,,,,Complete,,,15d,08/26/24,09/13/24,0,3,,24,16,242%,58,50,-50,0%,0.41,,"US$15,219.50",US$0.00,"US$13,179.50",8,"US$2,040.00",901647767,task,,,
359,Sprint 24 - Beam Primitive 1,,100%,,,,,,,15d,09/16/24,10/07/24,0,14,,112,40,0%,0,0,72,0%,1.00,"US$10,720.00",US$0.00,US$0.00,US$0.00,0,US$0.00,901647774,milestone,,,
360,Sprint 24 Schedule,,100%,,,,,,,15d,09/16/24,10/07/24,0,0,,0,0,0%,0,0,0,0%,1.00,US$0.00,US$0.00,US$0.00,US$0.00,0,US$0.00,,0,,,
361,FPGA  - Iteration 8,,100%,,,,,,,15d,09/16/24,10/07/24,0,3,,24,,0%,,0,24,0%,1.00,,,US$0.00,US$0.00,,,,0,,,
362,Research & Restrict galvo angles to optic limits,Blue,100%,,,,In Progress,,,15d,09/16/24,10/07/24,0,3,,24,24,56%,13.5,7,-13.5,0%,1.78,,"US$3,753.00",US$0.00,"US$1,946.00",6.5,"US$1,807.00",905626010,task,,,
363,Test Tool,,100%,,,,,,,15d,09/16/24,10/07/24,0,1,,8,0,0%,0,0,8,0%,1.00,,US$0.00,US$0.00,US$0.00,0,US$0.00,903248034,deliverable,,,
364,Sprint 24 - Test Tool - Update FPGA/TCB Test tool,,100%,,,,,Lead,,15d,09/16/24,10/07/24,0,1,,8,0,0%,0,0,8,0%,1.00,,US$0.00,US$0.00,US$0.00,0,US$0.00,903248037,task,,,
365,DHF - Iteration 1,,100%,,,,,,,15d,09/16/24,10/07/24,0,10,,80,40,0%,0,0,40,0%,1.00,"US$10,720.00",US$0.00,US$0.00,US$0.00,0,US$0.00,904557134,deliverable,,,
366,Initial  SW Verification Plan - SLS,,100%,,,,,,,15d,09/16/24,10/07/24,0,5,,40,0,0%,0,0,40,0%,1.00,,US$0.00,US$0.00,US$0.00,0,US$0.00,904557136,task,,,
367,SW Architecture and Requirements ( Top Level),,100%,,,,,,,15d,09/16/24,10/07/24,0,5,,40,40,0%,0,0,0,0%,1.00,"US$10,720.00",US$0.00,US$0.00,US$0.00,0,US$0.00,904780390,deliverable,,,
368,SW Architecture and Requirements,,100%,,,,,,,15d,09/16/24,10/07/24,0,5,,40,40,0%,0,0,0,0%,1.00,,US$0.00,US$0.00,US$0.00,0,US$0.00,901647778,task,,,
369,Sprint 25 - TCB Alignment 1,,100%,,,,,,,15d,10/08/24,10/29/24,0,21,,168,24,0%,,0,144,0%,1.00,,,US$0.00,US$0.00,0,US$0.00
370,FPGA Iteration 9-  Evaluate FPGA SOM  & Calibration for clamping,,100%,,,,,,,15d,10/08/24,10/29/24,0,15,,120,24,0%,,0,96,0%,1.00,,,US$0.00,US$0.00
371,Evaluate the FPGA SOM / ARM HPS,,100%,,,,,,Bill Pringlemeir,15d,10/08/24,10/29/24,0,5,,40,0,0%,,0,40,0%,1.00,,,US$0.00,US$0.00
372,Send more parameters & Calibration for Clamping,,100%,,,,,,Bill Pringlemeir,15d,10/08/24,10/29/24,0,5,,40,0,0%,,0,40,0%,1.00,,,US$0.00,US$0.00
373,Non Recoverable errors,Blue,100%,,,,In Progress,,Bill Pringlemeir,15d,10/08/24,10/29/24,0,5,,40,24,0%,0,0,16,0%,1.00,,US$0.00,US$0.00,US$0.00,0,US$0.00,901647756,task,,,
#BLOCKED,Beam Primitive/ Metrology  - Engineering Integration Testing / Support,,100%,,,,,,,13d,10/08/24,10/25/24,0,6,,48,0,0%,0,0,48,0%,1.00,,,US$0.00,US$0.00,,,,0,,,
#BLOCKED,FPGA Beam Metrology Integration 1,,100%,,,,,,,13d,10/08/24,10/25/24,0,2,,16,0,0%,0,0,16,0%,1.00,,,US$0.00,US$0.00,,,,0,,,
#BLOCKED,FPGA Beam/ Engineering Integration 1,,100%,,,,,,,13d,10/08/24,10/25/24,0,2,,16,0,0%,0,0,16,0%,1.00,,,US$0.00,US$0.00,,,,0,,,
#BLOCKED,Rework,,100%,,,,,,,2d,10/08/24,10/09/24,0,2,,16,0,0%,0,0,16,0%,1.00,,,US$0.00,US$0.00,,,,0,,,
#BLOCKED,Support and Miscellaneous,,50%,,,,,,,65d,07/08/24,10/07/24,-43,32.5,,260,20,175%,455.59,72.42,-215.59,171%,0.29,"US$69,680.00","US$118,888.33","--US$49,208.33","US$16,691.50",383.17,"US$102,196.83",901648383,milestone,,,
#BLOCKED,EE Support Schedule,,50%,,,,,,,30d,07/08/24,08/16/24,-95,0,,0,0,0%,0,0,0,0%,1.00,US$0.00,US$0.00,US$0.00,US$0.00,0,US$0.00,,0,,,
#BLOCKED,EE Support,,50%,,,,,,,25d,09/02/24,10/07/24,-43,9.375,,75,0,259%,194.42,20,-119.42,256%,0.19,"US$20,100.00","US$51,387.33","--US$31,287.33","US$5,050.00",174.42,"US$46,337.33",901647779,deliverable,,,
#BLOCKED,EE Support - SDP Review,,50%,,,,,,,25d,09/02/24,10/07/24,-43,0,,0,0,0%,2,0,-2,0%,1.00,,,US$0.00,--US$510.00,2,US$510.00,904662177,task,,,
#BLOCKED,EE Support - OSA Testing Support,,50%,,,,,Support,,25d,09/02/24,10/07/24,-43,4.375,,35,0,354%,124,17.75,-89,0%,0.14,,"US$32,609.00","--US$32,609.00","US$4,934.50",106.25,"US$27,674.50",903207977,task,,,
#BLOCKED,EE Support - Beam Metrology Support,,50%,,,,,Support,,25d,09/02/24,10/07/24,-43,1.875,,15,0,173%,25.92,2.25,-10.92,0%,0.29,,"US$7,204.83","--US$7,204.83",US$625.50,23.67,"US$6,579.33",900770560,task,,,
#BLOCKED,EE Support - Laser Engine Support,,50%,,,,,Support,,25d,09/02/24,10/07/24,-43,1.875,,15,0,0%,0,0,15,0%,1.00,,US$0.00,US$0.00,US$0.00,0,US$0.00,901647781,task,,,
#BLOCKED,EE Support - Debugging Beam Metrology Board,,50%,,,,,Support,,25d,09/02/24,10/07/24,-43,1.25,,10,0,113%,11.25,0,-1.25,0%,0.44,,"US$3,127.50","--US$3,127.50",US$0.00,11.25,"US$3,127.50",901183173,task,,,
#BLOCKED,EE Documentation,,50%,,,,,Support,,25d,09/02/24,10/07/24,-43,0,,0,0,0%,14.25,0,-14.25,0%,1.00,,"US$3,961.50","--US$3,961.50",US$0.00,14.25,"US$3,961.50",900770535,task,,,
#BLOCKED,EE Support - Chronos documents review,,50%,,,,,Support,,25d,09/02/24,10/07/24,-43,0,,0,0,0%,17,0,-17,0%,1.00,,"US$4,484.50","--US$4,484.50",US$0.00,17,"US$4,484.50",902156465,task,,,
#BLOCKED,Miscellaneous,,50%,,,,,,,25d,09/02/24,10/07/24,-43,23.125,,185,20,141%,261.17,52.42,-96.17,136%,0.35,"US$49,580.00","US$67,501.00","--US$17,921.00","US$11,641.50",208.75,"US$55,859.50",901648387,deliverable,,,
#BLOCKED,Calibration Strategy,,50%,,,,,,,25d,09/02/24,10/07/24,-43,0.625,,5,0,0%,0,0,5,0%,1.00,,US$0.00,US$0.00,US$0.00,0,US$0.00,901647783,task,,,
#BLOCKED,Technical Meetings,,50%,,,,,,,25d,09/02/24,10/07/24,-43,20,,160,0,96%,153.67,27.17,6.33000000000001,0%,0.52,,"US$42,244.50","--US$42,244.50","US$7,358.75",126.5,"US$34,885.75",900305180,task,,,
#BLOCKED,Onboarding,,50%,,,,,,,25d,09/02/24,10/07/24,-43,2.5,,20,20,495%,99,25.25,-99,0%,0.10,,"US$25,256.50","--US$25,256.50","US$6,450.25",73.75,"US$18,806.25",904844930,task,,,
#BLOCKED,Review the front-end,,50%,,,,,,,25d,09/02/24,10/07/24,-43,0,,0,0,0%,8.5,0,-8.5,0%,1.00,,,US$0.00,"--US$2,167.50",8.5,"US$2,167.50",905743967,task,,,
#BLOCKED,PCR 5X-4,,3.00%,,,,,,,146d,05/06/24,11/28/24,9,127.13625,,1017.09,854.6,17.075185086865500%,173.67,88.17,-11.18,20.058360445510502%,0.18,"US$252,654.00","US$50,678.25","US$201,975.75","US$50,678.25",85.5,US$0.00,,,05/06/24,11/28/24,-1d
#BLOCKED,Project KO,,100%,,,,,,,0,07/08/24,07/08/24,0,,,0,,0%,,0,0,0%,1.00,,US$0.00,US$0.00,US$0.00,,,,0,07/08/24,07/08/24,-1d
#BLOCKED,Management Reserve / Contingency,,0%,,,,,,,110d,05/06/24,10/07/24,-43,0,,0,0,0%,0,0,0,0%,1.00,US$0.00,US$0.00,US$0.00,US$0.00,0,US$0.00,903176042,deliverable,05/06/24,10/07/24,-1d
#BLOCKED,PM Load,,0%,,,,,,,65d,07/08/24,10/07/24,-43,20.38625,,163.09,160.6,12.416457170887200%,20.25,13,-17.76,15.807828880622300%,0.00,"US$35,484.00","US$5,609.25","US$29,874.75","US$3,601.00",7.25,"US$2,008.25",903176043,deliverable,07/08/24,10/07/24,-1d
#BLOCKED,Project Management activities,,0%,,,,,,,65d,07/08/24,10/07/24,-43,12.81125,,102.49,100,19.758025173187598%,20.25,13,-17.76,0%,0.00,US$0.00,"US$5,609.25","--US$5,609.25","US$3,601.00",7.25,"US$2,008.25",903176044,task,07/08/24,10/07/24,-1d
#BLOCKED,PM Admin / Support activities,,0%,,,,,,,65d,07/08/24,10/07/24,-43,7.575,,60.6,60.6,0%,0,0,0,0%,1.00,US$0.00,US$0.00,US$0.00,US$0.00,0,US$0.00,903176045,task,07/08/24,10/07/24,-1d
#BLOCKED,Project Overhead,,0%,,,,,,,65d,07/08/24,10/07/24,-43,1.25,,10,0,100%,10,0,0,100%,0.00,"US$2,770.00","US$2,770.00",US$0.00,US$0.00,10,"US$2,770.00",903176050,deliverable,07/08/24,10/07/24,-1d
#BLOCKED,External Project Coordination Meetings - Weekly,,0%,,,,,,,65d,07/08/24,10/07/24,-43,0,,0,0,0%,0,0,0,0%,1.00,US$0.00,US$0.00,US$0.00,US$0.00,0,US$0.00,903176051,task,07/08/24,10/07/24,-1d
#BLOCKED,Project Planning for next SOW (New in 2024),,0%,,,,,,,65d,07/08/24,10/07/24,-43,0,,0,0,0%,0,0,0,0%,1.00,US$0.00,US$0.00,US$0.00,US$0.00,0,US$0.00,903176052,task,07/08/24,10/07/24,-1d
#BLOCKED,Kickoff Meetings,,0%,,,,,,,65d,07/08/24,10/07/24,-43,0,,0,0,0%,0,0,0,0%,1.00,US$0.00,US$0.00,US$0.00,US$0.00,0,US$0.00,903176053,task,07/08/24,10/07/24,-1d
#BLOCKED,End of SOW Meetings,,0%,,,,,,,65d,07/08/24,10/07/24,-43,0,,0,0,0%,0,0,0,0%,1.00,US$0.00,US$0.00,US$0.00,US$0.00,0,US$0.00,903176054,task,07/08/24,10/07/24,-1d
#BLOCKED,Closing Activities,,0%,,,,,,,65d,07/08/24,10/07/24,-43,1.25,,10,0,100%,10,0,0,0%,0.00,US$0.00,"US$2,770.00","--US$2,770.00",US$0.00,10,"US$2,770.00",903176055,task,07/08/24,10/07/24,-1d
#BLOCKED,Sr./Princ. Oversight; <0.5hr entries only,,0%,,,,,,,65d,07/08/24,10/07/24,-43,0,,0,0,0%,0,0,0,0%,1.00,US$0.00,US$0.00,US$0.00,US$0.00,0,US$0.00,903176056,task,07/08/24,10/07/24,-1d
#BLOCKED,Task 1 - OSA testing,,6.00%,,,,,,,101d,07/08/24,11/28/24,9,105.5,,844,694,16.992890995260700%,143.42,75.17,6.58000000000004,19.729011194029900%,0.35,"US$214,400.00","US$42,299.00","US$172,101.00","US$21,258.50",68.25,"US$21,040.50",903176059,milestone,07/08/24,11/28/24,-1d
#BLOCKED,OSA Learning freeze,,0%,,,,,,,0,10/01/24,10/01/24,-49,0,,0,0,0%,0,0,0,0%,1.00,US$0.00,US$0.00,US$0.00,US$0.00,0,US$0.00,,0,10/01/24,10/01/24,-1d
#BLOCKED,OSA Physical Testing,,15.00%,,,,,,,61d,09/02/24,11/28/24,9,81.5,,652,546,18.737730061349700%,122.17,71.92,-16.17,16.800839552238800%,0.80,"US$214,400.00","US$36,021.00","US$178,379.00","US$20,228.25",50.25,"US$15,792.75",903176060,deliverable,09/02/24,11/28/24,-1d
#BLOCKED,Pulse Energy Meter functionality,,0%,,,,,,,13d,09/09/24,09/25/24,-55,2,,16,6,204.687500%,32.75,13.5,-22.75,0%,0.00,US$0.00,"US$10,069.75","--US$10,069.75","US$4,104.00",19.25,"US$5,965.75",903176061,deliverable,09/09/24,09/25/24,-1d
#BLOCKED,OPT - Pulse Energy Meter functionality,,85.00%,,,,,Support,Brian King,13d,09/09/24,09/25/24,-55,1,,8,3,309.37500%,24.75,9,-19.75,0%,0.27,US$0.00,"US$7,845.75","--US$7,845.75","US$2,853.00",15.75,"US$4,992.75",903176062,task,09/09/24,09/25/24,-1d
#BLOCKED,EE - Pulse Energy Meter functionality,,85.00%,,,,,Lead,Michael Ganzert,13d,09/09/24,09/25/24,-55,1,,8,3,100%,8,4.5,-3,0%,0.85,US$0.00,"US$2,224.00","--US$2,224.00","US$1,251.00",3.5,US$973.00,903176063,task,09/09/24,09/25/24,-1d
#BLOCKED,Fiber Throughput Monitor Functionality,,0%,,,,,,,13d,09/09/24,09/25/24,-55,2,,16,6,0%,0,0,10,0%,1.00,US$0.00,US$0.00,US$0.00,US$0.00,0,US$0.00,903176064,deliverable,09/09/24,09/25/24,-1d
#BLOCKED,OPT - Fiber Throughput Monitor Functionality,,85.00%,,,,,Support,Brian King,13d,09/09/24,09/25/24,-55,1,,8,3,0%,0,0,5,0%,1.00,US$0.00,US$0.00,US$0.00,US$0.00,0,US$0.00,903176065,task,09/09/24,09/25/24,-1d
#BLOCKED,EE - Fiber Throughput Monitor Functionality,,85.00%,,,,,Lead,Michael Ganzert,13d,09/09/24,09/25/24,-55,1,,8,3,0%,0,0,5,0%,1.00,US$0.00,US$0.00,US$0.00,US$0.00,0,US$0.00,903176066,task,09/09/24,09/25/24,-1d
#BLOCKED,Fine BDS Optical Alignment,,100%,,,,,,,5d,09/02/24,09/06/24,0,1.5,,12,0,308.33333333333300%,37,8.25,-25,0%,0.32,US$0.00,"US$11,729.00",US$0.00,"US$2,615.25",28.75,"US$9,113.75",903176067,deliverable,09/02/24,09/06/24,-1d
#BLOCKED,OPT - Fine BDS Optical Alignment,,100%,,,,,Lead,Brian King,5d,09/02/24,09/06/24,0,1.5,,12,0,308.33333333333300%,37,8.25,-25,0%,0.32,US$0.00,"US$11,729.00",US$0.00,"US$2,615.25",28.75,"US$9,113.75",903176068,task,09/02/24,09/06/24,-1d
#BLOCKED,Beam Profile Verification,,100%,,,,,,,16d,09/09/24,10/01/24,0,5,,40,10,111.0500%,44.42,44.42,-14.42,0%,0.90,US$0.00,"US$11,744.75",US$0.00,"US$11,744.75",0,US$0.00,903176069,deliverable,09/09/24,10/01/24,-1d
#BLOCKED,OPT - Beam Profile Verification,,100%,,,,,Lead,Ryan Field,16d,09/09/24,10/01/24,0,5,,40,10,111.0500%,44.42,44.42,-14.42,0%,0.90,US$0.00,"US$11,744.75",US$0.00,"US$11,744.75",0,US$0.00,903176070,task,09/09/24,10/01/24,-1d
#BLOCKED,Calibrate and Verify Chronos Functionality,,100%,,,,,,,2d,09/09/24,09/10/24,0,4,,32,0,0%,0,0,32,0%,1.00,US$0.00,US$0.00,US$0.00,US$0.00,0,US$0.00,903176074,deliverable,09/09/24,09/10/24,-1d
#BLOCKED,OPT - Calibrate and Verify Chronos Functionality,,100%,,,,,Lead,Brian King,2d,09/09/24,09/10/24,0,4,,32,0,0%,0,0,32,0%,1.00,US$0.00,US$0.00,US$0.00,US$0.00,0,US$0.00,903176075,task,09/09/24,09/10/24,-1d
#BLOCKED,Verify and Calibrate Fixation Target Positioning,,0%,,,,,,,12d,11/13/24,11/28/24,9,3,,24,24,0%,0,0,0,0%,1.00,US$0.00,US$0.00,US$0.00,US$0.00,0,US$0.00,903176076,deliverable,11/13/24,11/28/24,-1d
#BLOCKED,OPT - Verify and Calibrate Fixation Target Positioning,,10.0%,,,,,Lead,Ryan Field,12d,11/13/24,11/28/24,9,3,,24,24,0%,0,0,0,0%,1.00,US$0.00,US$0.00,US$0.00,US$0.00,0,US$0.00,903176077,task,11/13/24,11/28/24,-1d
#BLOCKED,Verify beam delivery accuracy in single treatment pass on stationary eye,,0%,,,,,,,17d,09/09/24,10/02/24,-48,8,,64,64,0.7812500%,0.5,0,-0.5,0%,0.00,US$0.00,US$158.50,--US$158.50,US$0.00,0.5,US$158.50,903176078,deliverable,09/09/24,10/02/24,-1d
#BLOCKED,OPT - Verify beam delivery accuracy in single treatment pass on stationary eye,,50.0%,,,,,Lead,Ryan Field,17d,09/09/24,10/02/24,-48,4,,32,32,1.562500%,0.5,0,-0.5,0%,32.00,US$0.00,US$158.50,--US$158.50,US$0.00,0.5,US$158.50,903176079,task,09/09/24,10/02/24,-1d
#BLOCKED,EE - Verify beam delivery accuracy in single treatment pass on stationary eye,,50.0%,,,,,Support,dsorrentino@starfishmedical.com,17d,09/09/24,10/02/24,-48,4,,32,32,0%,0,0,0,0%,1.00,US$0.00,US$0.00,US$0.00,US$0.00,0,US$0.00,903176080,task,09/09/24,10/02/24,-1d
#BLOCKED,Beam Position Monitor Functionality and Calibration,,0%,,,,,,,4d,09/27/24,10/03/24,-47,2.5,,20,8,0%,0,0,12,0%,1.00,US$0.00,US$0.00,US$0.00,US$0.00,0,US$0.00,903176071,deliverable,09/27/24,10/03/24,-1d
#BLOCKED,OPT - Beam Position Monitor Functionality and Calibration,,55.00%,,,,,Support,Brian King,4d,09/27/24,10/03/24,-47,2,,16,6,0%,0,0,10,0%,1.00,US$0.00,US$0.00,US$0.00,US$0.00,0,US$0.00,903176072,task,09/27/24,10/03/24,-1d
#BLOCKED,EE - Beam Position Monitor Functionality and Calibration,,55.00%,,,,,Lead,Michael Ganzert,4d,09/27/24,10/03/24,-47,0.5,,4,2,0%,0,0,2,0%,1.00,US$0.00,US$0.00,US$0.00,US$0.00,0,US$0.00,903176073,task,09/27/24,10/03/24,-1d
#BLOCKED,Verify Active Tracking with Normal Eye Motion (<300 m micro saccades)  in single treatment pass,,0%,,,,,,,3d,10/03/24,10/07/24,-43,7,,56,56,0%,0,0,0,0%,1.00,US$0.00,US$0.00,US$0.00,US$0.00,0,US$0.00,903176081,deliverable,10/03/24,10/07/24,-1d
#BLOCKED,OPT - Verify Active Tracking with Normal Eye Motion (<300 m micro saccades)  in single treatment pass,,0%,,,,,Lead,Brian King,3d,10/03/24,10/07/24,-43,4,,32,32,0%,0,0,0,0%,1.00,US$0.00,US$0.00,US$0.00,US$0.00,0,US$0.00,903176082,task,10/03/24,10/07/24,-1d
#BLOCKED,EE - Verify Active Tracking with Normal Eye Motion (<300 m micro saccades)  in single treatment pass,,0%,,,,,Support,dsorrentino@starfishmedical.com,3d,10/03/24,10/07/24,-43,3,,24,24,0%,0,0,0,0%,1.00,US$0.00,US$0.00,US$0.00,US$0.00,0,US$0.00,903176083,task,10/03/24,10/07/24,-1d
#BLOCKED,Verify treatment behavior in single treatment pass with single non-recovering excursion into passive tracking range (in XY and Z),,0%,,,,,,,2d,10/08/24,10/09/24,-41,5.5,,44,44,0%,0,0,0,0%,1.00,US$0.00,US$0.00,US$0.00,US$0.00,0,US$0.00,903176084,deliverable,10/08/24,10/09/24,-1d
#BLOCKED,OPT - Verify treatment behavior in single treatment pass with single non-recovering excursion into passive tracking range (in XY and Z),,0%,,,,,Lead,Brian King,2d,10/08/24,10/09/24,-41,3,,24,24,0%,0,0,0,0%,1.00,US$0.00,US$0.00,US$0.00,US$0.00,0,US$0.00,903176085,task,10/08/24,10/09/24,-1d
#BLOCKED,EE - Verify treatment behavior in single treatment pass with single non-recovering excursion into passive tracking range (in XY and Z),,0%,,,,,Support,dsorrentino@starfishmedical.com,2d,10/08/24,10/09/24,-41,2.5,,20,20,0%,0,0,0,0%,1.00,US$0.00,US$0.00,US$0.00,US$0.00,0,US$0.00,903176086,task,10/08/24,10/09/24,-1d
#BLOCKED,Verify treatment behavior in single treatment pass with single non-recovering excursion into passive partial tracking range,,0%,,,,,,,2d,10/10/24,10/11/24,-39,4,,32,32,0%,0,0,0,0%,1.00,US$0.00,US$0.00,US$0.00,US$0.00,0,US$0.00,903176087,deliverable,10/10/24,10/11/24,-1d
#BLOCKED,OPT - Verify treatment behavior in single treatment pass with single non-recovering excursion into passive partial tracking range,,0%,,,,,Lead,Brian King,2d,10/10/24,10/11/24,-39,2,,16,16,0%,0,0,0,0%,1.00,US$0.00,US$0.00,US$0.00,US$0.00,0,US$0.00,903176088,task,10/10/24,10/11/24,-1d
#BLOCKED,EE - Verify treatment behavior in single treatment pass with single non-recovering excursion into passive partial tracking range,,0%,,,,,Support,dsorrentino@starfishmedical.com,2d,10/10/24,10/11/24,-39,2,,16,16,0%,0,0,0,0%,1.00,US$0.00,US$0.00,US$0.00,US$0.00,0,US$0.00,903176089,task,10/10/24,10/11/24,-1d
#BLOCKED,Verify treatment behavior in single treatment pass with single recovering excursion into passive tracking range,,0%,,,,,,,2d,10/15/24,10/16/24,-34,4,,32,32,0%,0,0,0,0%,1.00,US$0.00,US$0.00,US$0.00,US$0.00,0,US$0.00,903176090,deliverable,10/15/24,10/16/24,-1d
#BLOCKED,OPT - Verify treatment behavior in single treatment pass with single recovering excursion into passive tracking range,,0%,,,,,Lead,Brian King,2d,10/15/24,10/16/24,-34,2,,16,16,0%,0,0,0,0%,1.00,US$0.00,US$0.00,US$0.00,US$0.00,0,US$0.00,903176091,task,10/15/24,10/16/24,-1d
#BLOCKED,EE - Verify treatment behavior in single treatment pass with single recovering excursion into passive tracking range,,0%,,,,,Support,dsorrentino@starfishmedical.com,2d,10/15/24,10/16/24,-34,2,,16,16,0%,0,0,0,0%,1.00,US$0.00,US$0.00,US$0.00,US$0.00,0,US$0.00,903176092,task,10/15/24,10/16/24,-1d
#BLOCKED,Verify treatment behavior in single treatment pass with single recovering excursion into passive partial tracking range,,0%,,,,,,,2d,10/17/24,10/18/24,-32,3,,24,24,0%,0,0,0,0%,1.00,US$0.00,US$0.00,US$0.00,US$0.00,0,US$0.00,903176093,deliverable,10/17/24,10/18/24,-1d
#BLOCKED,OPT - Verify treatment behavior in single treatment pass with single recovering excursion into passive partial tracking range,,0%,,,,,Lead,Brian King,2d,10/17/24,10/18/24,-32,2,,16,16,0%,0,0,0,0%,1.00,US$0.00,US$0.00,US$0.00,US$0.00,0,US$0.00,903176094,task,10/17/24,10/18/24,-1d
#BLOCKED,EE - Verify treatment behavior in single treatment pass with single recovering excursion into passive partial tracking range,,0%,,,,,Support,dsorrentino@starfishmedical.com,2d,10/17/24,10/18/24,-32,1,,8,8,0%,0,0,0,0%,1.00,US$0.00,US$0.00,US$0.00,US$0.00,0,US$0.00,903176095,task,10/17/24,10/18/24,-1d
#BLOCKED,Verify treatment behavior in single treatment pass with single non-recovering excursion outside of eye detection range,,0%,,,,,,,2d,10/21/24,10/22/24,-28,3,,24,24,0%,0,0,0,0%,1.00,US$0.00,US$0.00,US$0.00,US$0.00,0,US$0.00,903176096,deliverable,10/21/24,10/22/24,-1d
#BLOCKED,OPT - Verify treatment behavior in single treatment pass with single non-recovering excursion outside of eye detection range,,0%,,,,,Lead,Brian King,2d,10/21/24,10/22/24,-28,2,,16,16,0%,0,0,0,0%,1.00,US$0.00,US$0.00,US$0.00,US$0.00,0,US$0.00,903176097,task,10/21/24,10/22/24,-1d
#BLOCKED,EE - Verify treatment behavior in single treatment pass with single non-recovering excursion outside of eye detection range,,0%,,,,,Support,dsorrentino@starfishmedical.com,2d,10/21/24,10/22/24,-28,1,,8,8,0%,0,0,0,0%,1.00,US$0.00,US$0.00,US$0.00,US$0.00,0,US$0.00,903176098,task,10/21/24,10/22/24,-1d
#BLOCKED,Verify effective second pass with no excursions,,0%,,,,,,,2d,10/23/24,10/24/24,-26,3,,24,24,0%,0,0,0,0%,1.00,US$0.00,US$0.00,US$0.00,US$0.00,0,US$0.00,903176099,deliverable,10/23/24,10/24/24,-1d
#BLOCKED,OPT - Verify effective second pass with no excursions,,0%,,,,,Lead,Brian King,2d,10/23/24,10/24/24,-26,1,,8,8,0%,0,0,0,0%,1.00,US$0.00,US$0.00,US$0.00,US$0.00,0,US$0.00,903176100,task,10/23/24,10/24/24,-1d
#BLOCKED,EE- Verify effective second pass with no excursions,,0%,,,,,Support,dsorrentino@starfishmedical.com,2d,10/23/24,10/24/24,-26,2,,16,16,0%,0,0,0,0%,1.00,US$0.00,US$0.00,US$0.00,US$0.00,0,US$0.00,903176101,task,10/23/24,10/24/24,-1d
#BLOCKED,Verify effective second pass with multiple  excursions,,0%,,,,,,,2d,10/25/24,10/28/24,-22,3,,24,24,0%,0,0,0,0%,1.00,US$0.00,US$0.00,US$0.00,US$0.00,0,US$0.00,903176102,deliverable,10/25/24,10/28/24,-1d
#BLOCKED,OPT - Verify effective second pass with multiple  excursions,,0%,,,,,Lead,Brian King,2d,10/25/24,10/28/24,-22,1.5,,12,12,0%,0,0,0,0%,1.00,US$0.00,US$0.00,US$0.00,US$0.00,0,US$0.00,903176103,task,10/25/24,10/28/24,-1d
#BLOCKED,EE - Verify effective second pass with multiple  excursions,,0%,,,,,Support,dsorrentino@starfishmedical.com,2d,10/25/24,10/28/24,-22,1.5,,12,12,0%,0,0,0,0%,1.00,US$0.00,US$0.00,US$0.00,US$0.00,0,US$0.00,903176104,task,10/25/24,10/28/24,-1d
#BLOCKED,Verify Treatment Behavior for full treatment,,0%,,,,,,,2d,10/29/24,10/30/24,-20,3,,24,24,0%,0,0,0,0%,1.00,US$0.00,US$0.00,US$0.00,US$0.00,0,US$0.00,903176105,deliverable,10/29/24,10/30/24,-1d
#BLOCKED,OPT - Verify Treatment Behavior for full treatment,,0%,,,,,Lead,Brian King,2d,10/29/24,10/30/24,-20,2,,16,16,0%,0,0,0,0%,1.00,US$0.00,US$0.00,US$0.00,US$0.00,0,US$0.00,903176106,task,10/29/24,10/30/24,-1d
#BLOCKED,EE - Verify Treatment Behavior for full treatment,,0%,,,,,Support,dsorrentino@starfishmedical.com,2d,10/29/24,10/30/24,-20,1,,8,8,0%,0,0,0,0%,1.00,US$0.00,US$0.00,US$0.00,US$0.00,0,US$0.00,903176107,task,10/29/24,10/30/24,-1d
#BLOCKED,Pulse Energy Meter Stability Tests,,0%,,,,,,,1d,10/31/24,10/31/24,-19,1.5,,12,12,12.500%,1.5,1.5,-1.5,0%,0.00,US$0.00,US$417.00,--US$417.00,US$417.00,0,US$0.00,903176108,deliverable,10/31/24,10/31/24,-1d
#BLOCKED,OPT - Pulse Energy Meter Stability Tests,,0%,,,,,Lead,Brian King,1d,10/31/24,10/31/24,-19,1,,8,8,0%,0,0,0,0%,1.00,US$0.00,US$0.00,US$0.00,US$0.00,0,US$0.00,903176109,task,10/31/24,10/31/24,-1d
#BLOCKED,EE - Pulse Energy Meter Stability Tests,,0%,,,,,Support,dsorrentino@starfishmedical.com,1d,10/31/24,10/31/24,-19,0.5,,4,4,37.500%,1.5,1.5,-1.5,0%,0.00,US$0.00,US$417.00,--US$417.00,US$417.00,0,US$0.00,903176110,task,10/31/24,10/31/24,-1d
#BLOCKED,Internal Position Monitor Stability Tests,,0%,,,,,,,1d,10/31/24,10/31/24,-19,1.5,,12,12,0%,0,0,0,0%,1.00,US$0.00,US$0.00,US$0.00,US$0.00,0,US$0.00,903176111,deliverable,10/31/24,10/31/24,-1d
#BLOCKED,OPT - Internal Position Monitor Stability Tests,,0%,,,,,Lead,Brian King,1d,10/31/24,10/31/24,-19,1,,8,8,0%,0,0,0,0%,1.00,US$0.00,US$0.00,US$0.00,US$0.00,0,US$0.00,903176112,task,10/31/24,10/31/24,-1d
#BLOCKED,EE- Internal Position Monitor Stability Tests,,0%,,,,,Support,dsorrentino@starfishmedical.com,1d,10/31/24,10/31/24,-19,0.5,,4,4,0%,0,0,0,0%,1.00,US$0.00,US$0.00,US$0.00,US$0.00,0,US$0.00,903176113,task,10/31/24,10/31/24,-1d
#BLOCKED,Fiber Throughput Monitor Stability Tests Subtitle,,0%,,,,,,,1d,10/31/24,10/31/24,-19,1,,8,8,0%,0,0,0,0%,1.00,US$0.00,US$0.00,US$0.00,US$0.00,0,US$0.00,903176114,deliverable,10/31/24,10/31/24,-1d
#BLOCKED,OPT - Fiber Throughput Monitor Stability Tests Subtitle,,0%,,,,,Lead,Brian King,1d,10/31/24,10/31/24,-19,0.5,,4,4,0%,0,0,0,0%,1.00,US$0.00,US$0.00,US$0.00,US$0.00,0,US$0.00,903176115,task,10/31/24,10/31/24,-1d
#BLOCKED,EE - Fiber Throughput Monitor Stability Tests Subtitle,,0%,,,,,Support,dsorrentino@starfishmedical.com,1d,10/31/24,10/31/24,-19,0.5,,4,4,0%,0,0,0,0%,1.00,US$0.00,US$0.00,US$0.00,US$0.00,0,US$0.00,903176116,task,10/31/24,10/31/24,-1d
#BLOCKED,OSA Actuator to COL vibrational coupling,,0%,,,,,,,3d,10/30/24,11/01/24,-18,3,,24,24,0%,0,0,0,0%,1.00,US$0.00,US$0.00,US$0.00,US$0.00,0,US$0.00,903176117,deliverable,10/30/24,11/01/24,-1d
#BLOCKED,OPT - OSA Actuator to COL vibrational coupling,,0%,,,,,Support,Brian King,3d,10/30/24,11/01/24,-18,2,,16,16,0%,0,0,0,0%,1.00,US$0.00,US$0.00,US$0.00,US$0.00,0,US$0.00,903176118,task,10/30/24,11/01/24,-1d
#BLOCKED,EE - OSA Actuator to COL vibrational coupling,,0%,,,,,Lead,dsorrentino@starfishmedical.com,3d,10/30/24,11/01/24,-18,1,,8,8,0%,0,0,0,0%,1.00,US$0.00,US$0.00,US$0.00,US$0.00,0,US$0.00,903176119,task,10/30/24,11/01/24,-1d
#BLOCKED,OSA Thermal Testing,,0%,,,,,,,5d,11/04/24,11/08/24,-11,7,,56,56,0%,0,0,0,0%,1.00,US$0.00,US$0.00,US$0.00,US$0.00,0,US$0.00,903176120,deliverable,11/04/24,11/08/24,-1d
#BLOCKED,OPT - OSA Thermal Testing,,0%,,,,,Lead,Brian King,5d,11/04/24,11/08/24,-11,1,,8,8,0%,0,0,0,0%,1.00,US$0.00,US$0.00,US$0.00,US$0.00,0,US$0.00,903176121,task,11/04/24,11/08/24,-1d
#BLOCKED,ME - OSA Thermal Testing,,0%,,,,,Support,Gene Wey,5d,11/04/24,11/08/24,-11,5,,40,40,0%,0,0,0,0%,1.00,US$0.00,US$0.00,US$0.00,US$0.00,0,US$0.00,903176122,task,11/04/24,11/08/24,-1d
#BLOCKED,EE - OSA Thermal Testing,,0%,,,,,Support,dsorrentino@starfishmedical.com,5d,11/04/24,11/08/24,-11,1,,8,8,0%,0,0,0,0%,1.00,US$0.00,US$0.00,US$0.00,US$0.00,0,US$0.00,903176123,task,11/04/24,11/08/24,-1d
#BLOCKED,Eye Trajectory creation,,0%,,,,,,,40d,09/03/24,10/30/24,-20,4,,32,32,18.7500%,6,4.25,-6,0%,0.00,US$0.00,"US$1,902.00","--US$1,902.00","US$1,347.25",1.75,US$554.75,903176124,deliverable,09/03/24,10/30/24,-1d
#BLOCKED,OPT - Eye Trajectory creation,,0%,,,,,Lead,Brian King,40d,09/03/24,10/30/24,-20,4,,32,32,18.7500%,6,4.25,-6,0%,0.00,US$0.00,"US$1,902.00","--US$1,902.00","US$1,347.25",1.75,US$554.75,903176125,task,09/03/24,10/30/24,-1d
#BLOCKED,Additional Support,,0%,,,,,,,93d,07/08/24,11/18/24,-1,24,,192,148,11.067708333333300%,21.25,3.25,22.75,0%,0.00,US$0.00,"US$6,278.00","--US$6,278.00","US$1,030.25",18,"US$5,247.75",903176126,deliverable,07/08/24,11/18/24,-1d
#BLOCKED,Test planning,,0%,,,,,,,19d,07/08/24,08/01/24,-110,8,,64,32,12.10937500%,7.75,0,24.25,0%,0.00,US$0.00,"US$2,154.50","--US$2,154.50",US$0.00,7.75,"US$2,154.50",903176127,deliverable,07/08/24,08/01/24,-1d
#BLOCKED,SE - Test planning,,0%,,,,,,Matt Lemay,19d,07/08/24,08/01/24,-110,2,,16,8,0%,0,0,8,0%,1.00,US$0.00,US$0.00,US$0.00,US$0.00,0,US$0.00,903176128,task,07/08/24,08/01/24,-1d
#BLOCKED,OPT - Test planning,,0%,,,,,,Brian King,19d,07/08/24,08/01/24,-110,2,,16,8,0%,0,0,8,0%,1.00,US$0.00,US$0.00,US$0.00,US$0.00,0,US$0.00,903176129,task,07/08/24,08/01/24,-1d
#BLOCKED,ME - Test planning,,0%,,,,,,Gene Wey,19d,07/08/24,08/01/24,-110,1,,8,4,0%,0,0,4,0%,1.00,US$0.00,US$0.00,US$0.00,US$0.00,0,US$0.00,903176130,task,07/08/24,08/01/24,-1d
#BLOCKED,EE -Test planning,,0%,,,,,,dsorrentino@starfishmedical.com,19d,07/08/24,08/01/24,-110,2,,16,8,48.437500%,7.75,0,0.25,0%,0.00,US$0.00,"US$2,154.50","--US$2,154.50",US$0.00,7.75,"US$2,154.50",903176131,task,07/08/24,08/01/24,-1d
#BLOCKED,SW - Test planning,,0%,,,,,,,19d,07/08/24,08/01/24,-110,1,,8,4,0%,0,0,4,0%,1.00,US$0.00,US$0.00,US$0.00,US$0.00,0,US$0.00,903176132,task,07/08/24,08/01/24,-1d
#BLOCKED,Additional tech support,,0%,,,,,,,60d,07/08/24,09/27/24,-53,9,,72,60,18.7500%,13.5,3.25,-1.5,0%,0.00,US$0.00,"US$4,123.50","--US$4,123.50","US$1,030.25",10.25,"US$3,093.25",903176133,deliverable,07/08/24,09/27/24,-1d
#BLOCKED,SE - Additional tech support,,0%,,,,,,Matt Lemay,60d,07/08/24,09/27/24,-53,2,,16,16,0%,0,0,0,0%,1.00,US$0.00,US$0.00,US$0.00,US$0.00,0,US$0.00,903176134,task,07/08/24,09/27/24,-1d
#BLOCKED,OPT - Additional tech support,,0%,,,,,,Brian King,60d,07/08/24,09/27/24,-53,2,,16,8,59.37500%,9.5,3.25,-1.5,0%,0.00,US$0.00,"US$3,011.50","--US$3,011.50","US$1,030.25",6.25,"US$1,981.25",903176135,task,07/08/24,09/27/24,-1d
#BLOCKED,ME - Additional tech support,,0%,,,,,,Gene Wey,60d,07/08/24,09/27/24,-53,1,,8,4,50.0%,4,0,0,0%,0.00,US$0.00,"US$1,112.00","--US$1,112.00",US$0.00,4,"US$1,112.00",903176136,task,07/08/24,09/27/24,-1d
#BLOCKED,EE - Additional tech support,,0%,,,,,,dsorrentino@starfishmedical.com,60d,07/08/24,09/27/24,-53,1,,8,8,0%,0,0,0,0%,1.00,US$0.00,US$0.00,US$0.00,US$0.00,0,US$0.00,903176137,task,07/08/24,09/27/24,-1d
#BLOCKED,SW - Additional tech support,,0%,,,,,,,60d,07/08/24,09/27/24,-53,3,,24,24,0%,0,0,0,0%,1.00,US$0.00,US$0.00,US$0.00,US$0.00,0,US$0.00,903176138,task,07/08/24,09/27/24,-1d
#BLOCKED,reporting and presenting,,0%,,,,,,,15d,10/28/24,11/18/24,-1,7,,56,56,0%,0,0,0,0%,1.00,US$0.00,US$0.00,US$0.00,US$0.00,0,US$0.00,903176139,deliverable,10/28/24,11/18/24,-1d
#BLOCKED,SE - reporting and presenting,,0%,,,,,,Matt Lemay,15d,10/28/24,11/18/24,-1,2,,16,16,0%,0,0,0,0%,1.00,US$0.00,US$0.00,US$0.00,US$0.00,0,US$0.00,903176140,task,10/28/24,11/18/24,-1d
#BLOCKED,OPT - reporting and presenting,,0%,,,,,,Brian King,15d,10/28/24,11/18/24,-1,2,,16,16,0%,0,0,0,0%,1.00,US$0.00,US$0.00,US$0.00,US$0.00,0,US$0.00,903176141,task,10/28/24,11/18/24,-1d
#BLOCKED,ME - reporting and presenting,,0%,,,,,,Gene Wey,15d,10/28/24,11/18/24,-1,1,,8,8,0%,0,0,0,0%,1.00,US$0.00,US$0.00,US$0.00,US$0.00,0,US$0.00,903176142,task,10/28/24,11/18/24,-1d
#BLOCKED,EE - reporting and presenting,,0%,,,,,,dsorrentino@starfishmedical.com,15d,10/28/24,11/18/24,-1,2,,16,16,0%,0,0,0,0%,1.00,US$0.00,US$0.00,US$0.00,US$0.00,0,US$0.00,903176143,task,10/28/24,11/18/24,-1d
#BLOCKED,SOW/PCR - SW Code Completion,,1%,,,,,,,169d,10/07/24,06/09/25,202,1097,936,8776,9764,0%,,0,-988,0%,1.00,,,US$0.00,US$0.00,0,US$0.00
#BLOCKED,Sprint 26 - Rerate ADC & MCB dev,,0%,,,,,,,20d,10/30/24,11/27/24,8,71,41,568,432,0%,,0,136,0%,1.00,,,US$0.00,US$0.00,0,US$0.00
#BLOCKED,FPGA FW Iteration 11,,0%,,,,,,,15d,10/30/24,11/20/24,1,15,15,120,120,0%,,0,0,0%,1.00,,,US$0.00,US$0.00,0,US$0.00
#BLOCKED,Rerate ADC (Compare ADC to DAC),,0%,FPGA,SW,SW DEV,,,Bill Pringlemeir,15d,10/30/24,11/20/24,1,15,15,120,120,0%,,0,0,0%,1.00,,,US$0.00,US$0.00,0,US$0.00
374,"TCB FW Iteration 2 - Alignment 1 - Move x,y using joystick",,0%,,,,,,,20d,10/30/24,11/27/24,8,15,,120,64,0%,0,0,56,0%,1.00,"US$40,736.00",US$0.00,"US$40,736.00",US$0.00,0,US$0.00,901647760,deliverable,,,
375,"Alignment 1 ( move x,y  stage under control of joystick)",,0%,,,,,,Sal Sanci,10d,10/30/24,11/13/24,-6,5,,40,24,0%,0,0,16,0%,1.00,,US$0.00,US$0.00,US$0.00,0,US$0.00
376,Xeryon initialization and depth setting support ( Xeryon control 1),Blue,0%,,,,Complete,Lead,Sal Sanci,10d,11/14/24,11/27/24,8,10,,80,40,0%,0,0,40,0%,1.00,,US$0.00,US$0.00,US$0.00,0,US$0.00,901647743,task,,,
#BLOCKED,MCB FW  Iteration 1  - Environment Setup,,0%,,,,,,,15d,10/30/24,11/20/24,1,16,14,128,152,0%,0,0,-24,0%,1.00,,US$0.00,US$0.00,US$0.00,0,US$0.00
#UNPARSEABLE,Setup the environment with nucleo board,,0%,,,,,Lead,Sal Sanci,15d,10/30/24,11/20/24,1,2,,16,40,0%,0,0,-24,0%,1.00,,US$0.00,US$0.00,US$0.00,0,US$0.00,901647770,task,,,
#BLOCKED,Build Class C Framework ( nucleo board),,0%,MCB,SW,SW DEV,,Lead,Sal Sanci,15d,10/30/24,11/20/24,1,5,5,40,40,0%,0,0,0,0%,1.00,,US$0.00,US$0.00,US$0.00,0,US$0.00,901647772,task,,,
#BLOCKED,Read Joystick and send commands to TCB ( Message passing),,0%,MCB,SW,SW DEV,,,Charu Pande,15d,10/30/24,11/20/24,1,2,2,16,16,0%,0,0,0,0%,1.00,,US$0.00,US$0.00,US$0.00,0,US$0.00
#BLOCKED,Pass foot pedal from MCB to TCB,,0%,MCB,SW,SW DEV,,,Charu Pande,15d,10/30/24,11/20/24,1,2,2,16,16,0%,0,0,0,0%,1.00,,US$0.00,US$0.00,US$0.00,0,US$0.00
#BLOCKED,Alignment 1 ( gantry up and down i.e. Z),,0%,MCB,SW,SW DEV,,,Charu Pande,15d,10/30/24,11/20/24,1,5,5,40,40,0%,,0,0,0%,1.00,,,US$0.00,US$0.00,0,US$0.00
#BLOCKED,CCA/CC - Iteration 2 - Algo Improvements,,,,,,,,,15d,10/30/24,11/20/24,1,10,10,80,80,0%,,0,0,0%,1.00,,,US$0.00,US$0.00,0,US$0.00
#BLOCKED,"Improvements to existing algorithms for x,y,z",,,CCA/CC,SW,SW DEV,,,Jose Guerrero,15d,10/30/24,11/20/24,1,10,10,80,80,0%,,0,0,0%,1.00,,,US$0.00,US$0.00,0,US$0.00
#BLOCKED,Test Tool,,0%,,,,,,,15d,10/30/24,11/20/24,1,2,2,16,16,0%,0,0,0,0%,1.00,,US$0.00,US$0.00,US$0.00,0,US$0.00
#BLOCKED,Initial MCBFW test application,,0%,Test Tool,SW,SW DEV,,,Jose Guerrero,15d,10/30/24,11/20/24,1,2,2,16,16,0%,0,0,0,0%,1.00,,US$0.00,US$0.00,US$0.00,0,US$0.00
#UNPARSEABLE,DHF - Iteration 1,,0%,,,,,,,15d,10/30/24,11/20/24,1,13,,104,,0%,,0,104,0%,1.00,,,US$0.00,US$0.00
#BLOCKED,Initial SW Requirements ( TRD) - CCA FW,,0%,,,,,,,15d,10/30/24,11/20/24,1,5,,40,0,0%,0,0,40,0%,1.00,,US$0.00,US$0.00,US$0.00,0,US$0.00,904557135,task,,,
#BLOCKED,Initial SW Requirements ( TRD) - TCB FW,,0%,,,,,,,15d,10/30/24,11/20/24,1,5,,40,0,0%,0,0,40,0%,1.00,,US$0.00,US$0.00,US$0.00,0,US$0.00,904556981,task,,,
#BLOCKED,Initial Chronos Verification Plan & Protocol,,0%,,,,,,,15d,10/30/24,11/20/24,1,2,,16,0,0%,0,0,16,0%,1.00,,US$0.00,US$0.00,US$0.00,0,US$0.00,904947985,task,,,
#BLOCKED,Initial Cyber Security Plan,,0%,,,,,,,15d,10/30/24,11/20/24,1,1,,8,0,0%,0,0,8,0%,1.00,,US$0.00,US$0.00,US$0.00,0,US$0.00,904557143,task,,,
#BLOCKED,Sprint 27 - Full Treatment Procedure,,0%,,,,,,,30d,11/21/24,01/03/25,45,57,47,456,456,0%,0,0,0,0%,1.00,,US$0.00,US$0.00,US$0.00,0,US$0.00
#BLOCKED,FPGA FW Iteration 12 -  Full  Treatment procedure / Beam primitive 2,,0%,,,,,,,20d,11/21/24,12/18/24,29,15,15,120,120,0%,0,0,0,0%,1.00,,US$0.00,US$0.00,US$0.00,0,US$0.00
#BLOCKED,Beam Primitive 2 -Full procedure using treatment parameters ( unknowns),,0%,FPGA,SW,SW DEV,,,Bill Pringlemeir,15d,11/21/24,12/11/24,22,10,10,80,80,0%,0,0,0,0%,1.00,,US$0.00,US$0.00,US$0.00,0,US$0.00
#BLOCKED,Engineering Primitive 2 ( Calibration & Testing),,0%,FPGA,SW,SW DEV,,,Bill Pringlemeir,15d,11/28/24,12/18/24,29,5,5,40,40,0%,0,0,0,0%,1.00,,US$0.00,US$0.00,US$0.00,0,US$0.00
#BLOCKED,TCB MCU - Iteration 3,,0%,,,,,,,15d,11/21/24,12/11/24,22,7,7,56,56,0%,0,0,0,0%,1.00,,US$0.00,US$0.00,US$0.00,0,US$0.00
#BLOCKED,Fixation 2 ( move to Z),,0%,TCB,SW,SW DEV,,,Sal Sanci,15d,11/21/24,12/11/24,22,2,2,16,16,0%,,0,0,0%,1.00,,,US$0.00,US$0.00
#BLOCKED,"Alignment 2 (  Automate alignment  x,y) OSA Automatic move from Home to middle position",,0%,TCB,SW,SW DEV,,,Sal Sanci,15d,11/21/24,12/11/24,22,5,5,40,40,0%,,0,0,0%,1.00,,,US$0.00,US$0.00
#BLOCKED,TCB FW Iteration 4 - Pattern Generation ( Treatment 1),,0%,,,,,,,25d,11/28/24,01/03/25,45,15,15,120,120,0%,0,0,0,0%,1.00,,US$0.00,US$0.00,US$0.00,0,US$0.00
#BLOCKED,Pattern generation with FPGA ( 4 dimensions),,0%,TCB,SW,SW DEV,,,Sal Sanci,15d,12/12/24,01/03/25,45,5,5,40,40,0%,0,0,0,0%,1.00,,US$0.00,US$0.00,US$0.00,0,US$0.00
#BLOCKED,Procedure primitive,,0%,TCB,SW,SW DEV,,,Sal Sanci,15d,11/28/24,12/18/24,29,5,5,40,40,0%,0,0,0,0%,1.00,,US$0.00,US$0.00,US$0.00,0,US$0.00,901647761,task,,,
#BLOCKED,Xeryon control 2 ( implement any updates required),,0%,TCB,SW,SW DEV,,,Sal Sanci,15d,11/28/24,12/18/24,29,5,5,40,40,0%,,0,0,0%,1.00,,,US$0.00,US$0.00
#BLOCKED,CCA/CC - Iteration 2 -Improvements,,,,,,,,,15d,11/21/24,12/11/24,22,10,10,80,80,0%,,0,0,0%,1.00,,,US$0.00,US$0.00,0,US$0.00
#BLOCKED,"Improvements to existing algorithms for x,y,z",,,CCA/CC,SW,SW DEV,,,Jose Guerrero,15d,11/21/24,12/11/24,22,10,10,80,80,0%,,0,0,0%,1.00,,,US$0.00,US$0.00,0,US$0.00
#BLOCKED,Engineering Integration Testing,,0%,,,,,,,15d,11/28/24,12/18/24,29,10,0,80,80,0%,,0,0,0%,1.00,,,US$0.00,US$0.00,0,US$0.00
#BLOCKED,FPGA Beam Metrology Integration 2,,0%,FPGA,SW,SW Integration Testing,,,Bill Pringlemeir,15d,11/28/24,12/18/24,29,5,0,40,40,0%,,0,0,0%,1.00,,,US$0.00,US$0.00,0,US$0.00
#BLOCKED,FPGA Beam/ Engineering Integration 2,,0%,FPGA,SW,SW Integration Testing,,,Bill Pringlemeir,15d,11/28/24,12/18/24,29,5,0,40,40,0%,,0,0,0%,1.00,,,US$0.00,US$0.00,0,US$0.00
#BLOCKED,Sprint 28 -  FPGA Safety Check 1,,0%,,,,,,,20d,12/12/24,01/10/25,52,37,37,296,296,0%,,0,0,0%,1.00,,,US$0.00,US$0.00,0,US$0.00
#BLOCKED,FPGA FW Iteration 12 -  Safety Check 1,,0%,,,,,,,15d,12/19/24,01/10/25,52,15,15,120,120,0%,0,0,0,0%,1.00,,US$0.00,US$0.00,US$0.00,0,US$0.00
#BLOCKED,Safety Check 1 - Collection of safety checks - Pause/ Fail Handling ( Non recoverable ones),,0%,FPGA,SW,SW DEV,,,Bill Pringlemeir,15d,12/19/24,01/10/25,52,15,15,120,120,0%,0,0,0,0%,1.00,,,US$0.00,US$0.00,0,US$0.00
#BLOCKED,TCB FW Iteration 5 - Treatment 2,,0%,,,,,,,10d,12/19/24,01/03/25,45,10,10,80,80,0%,0,0,0,0%,1.00,,US$0.00,US$0.00,US$0.00,0,US$0.00
#BLOCKED,Mask area of Trajectory overlapping the sclera,,0%,FPGA,SW,SW DEV,,,Sal Sanci,3d,12/19/24,12/23/24,34,5,5,40,40,0%,0,0,0,0%,1.00,,US$0.00,US$0.00,US$0.00,0,US$0.00
#BLOCKED,"Treatment 2 ( Move stage, repeat across depths)",,0%,FPGA,SW,SW DEV,,,Sal Sanci,7d,12/24/24,01/03/25,45,5,5,40,40,0%,,0,0,0%,1.00,,US$0.00,US$0.00,US$0.00,0,US$0.00
#BLOCKED,MCB FW Iteration 3 - Treatment procedure,,0%,,,,,,,15d,12/19/24,01/10/25,52,2,2,16,16,0%,0,0,0,0%,1.00,,US$0.00,US$0.00,US$0.00,0,US$0.00
#BLOCKED,Treatment  Procedure( messages  for treatment),,0%,FPGA,SW,SW DEV,,,Charu Pande,15d,12/19/24,01/10/25,52,2,2,16,16,0%,0,0,0,0%,1.00,,US$0.00,US$0.00,US$0.00,0,US$0.00
#BLOCKED,CCA/CC Iteration 3 - Ellipticity & Iris Center,,,,,,,,,15d,12/12/24,01/03/25,45,10,10,80,80,0%,0,0,0,0%,1.00,,US$0.00,US$0.00,US$0.00,0,US$0.00
#BLOCKED,Add ellipticity and iris center ( concentricity),,,FPGA,SW,SW DEV,,,Jose Guerrero,15d,12/12/24,01/03/25,45,10,10,80,80,0%,0,0,0,0%,1.00,,US$0.00,US$0.00,US$0.00,0,US$0.00
#BLOCKED,Sprint 29 - Safety Check 2 and  Alignment,,0%,,,,,,,15d,01/13/25,01/31/25,73,46,31,368,368,0%,,0,0,0%,1.00,,,US$0.00,US$0.00,0,US$0.00
#BLOCKED,FPGA FW Iteration 13 - Safety Checks 2,,0%,,,,,,,15d,01/13/25,01/31/25,73,12,7,96,96,0%,,0,0,0%,1.00,,,US$0.00,US$0.00,0,US$0.00
#BLOCKED,"Additional Safety Features ( Light Curtain crash, stop treatment if crash is detected)",,0%,FPGA,SW,SW DEV,,,Bill Pringlemeir,15d,01/13/25,01/31/25,73,5,5,40,40,0%,0,0,0,0%,1.00,,,US$0.00,US$0.00,0,US$0.00
#BLOCKED,Engineering primitive 3,,0%,FPGA,SW,SW DEV,,,Bill Pringlemeir,15d,01/13/25,01/31/25,73,5,0,40,40,0%,0,0,0,0%,1.00,,US$0.00,US$0.00,US$0.00,0,US$0.00
#BLOCKED,FPGA Safety Integration 1,,0%,FPGA,SW,SW DEV,,,Bill Pringlemeir,15d,01/13/25,01/31/25,73,2,2,16,16,0%,0,0,0,0%,1.00,,,US$0.00,US$0.00,0,US$0.00
#BLOCKED,TCB MCU - Iteration 6 - Coarse Alignment,,0%,,,,,,,10d,01/13/25,01/24/25,66,10,10,80,80,0%,0,0,0,0%,1.00,,US$0.00,US$0.00,US$0.00,0,US$0.00
#BLOCKED,Drive & Control Coarse & Medium Alignment,,0%,TCB,SW,SW DEV,,,Sal Sanci,5d,01/13/25,01/17/25,59,5,5,40,40,0%,0,0,0,0%,1.00,,US$0.00,US$0.00,US$0.00,0,US$0.00
#BLOCKED,Treatment 3 ( full path and stage handling),,0%,TCB,SW,SW DEV,,,Sal Sanci,5d,01/20/25,01/24/25,66,5,5,40,40,0%,,0,0,0%,1.00,,US$0.00,US$0.00,US$0.00,0,US$0.00
#BLOCKED,CCA  (Chronos Control Application) / CC - Iteration 4,,0%,,,,,,,15d,01/13/25,01/31/25,73,15,10,120,120,0%,0,0,0,0%,1.00,,US$0.00,US$0.00,US$0.00,0,US$0.00
#BLOCKED,Class C architecture based on risks mitigation,,0%,CCA/CC,SW,SW DEV,,,Jose Guerrero,15d,01/13/25,01/31/25,73,15,10,120,120,0%,0,0,0,0%,1.00,,US$0.00,US$0.00,US$0.00,0,US$0.00
#BLOCKED,MCB FW Iteration 4 - Communication with GUI,,0%,,,,,,,15d,01/13/25,01/31/25,73,9,4,72,72,0%,0,0,0,0%,1.00,,US$0.00,US$0.00,US$0.00,0,US$0.00
#BLOCKED,Board Bring up ( new MCB Board),,0%,,,,,Lead,Sal Sanci,15d,01/13/25,01/31/25,73,5,,40,40,0%,0,0,0,0%,1.00,,US$0.00,US$0.00,US$0.00,0,US$0.00,901647771,task,,,
#BLOCKED,Pass light curtain values and other data to GUI,,0%,MCB,SW,SW DEV,,,Charu Pande,15d,01/13/25,01/31/25,73,2,2,16,16,0%,0,0,0,0%,1.00,,US$0.00,US$0.00,US$0.00,0,US$0.00
#BLOCKED,"Provides status of inter-locks ( safety), log error to GUI",,0%,MCB,SW,SW DEV,,,Charu Pande,15d,01/13/25,01/31/25,73,2,2,16,16,0%,0,0,0,0%,1.00,,US$0.00,US$0.00,US$0.00,0,US$0.00
#BLOCKED,Sprint 30 -   Safety Check 3,,0%,,,,,,,15d,02/03/25,02/24/25,97,55,45,440,440,0%,,0,0,0%,1.00,,,US$0.00,US$0.00
#BLOCKED,FPGA FW Iteration 13 - Safety Checks 3,,0%,,,,,,,15d,02/03/25,02/24/25,97,22,17,176,176,0%,,0,0,0%,1.00,,,US$0.00,US$0.00
#BLOCKED,Safety checks 3 ( Galvo monitor ( sensor checks)) + Check fails,,0%,FPGA,SW,SW DEV,,,Bill Pringlemeir,15d,02/03/25,02/24/25,97,10,10,80,80,0%,,0,0,0%,1.00,,,US$0.00,US$0.00
#BLOCKED,"Beam Metrology 3 ( Account  for drifts, dark/ light readings, calibrations)",,0%,FPGA,SW,SW DEV,,,Bill Pringlemeir,15d,02/03/25,02/24/25,97,10,5,80,80,0%,,0,0,0%,1.00,,,US$0.00,US$0.00,0,US$0.00
#BLOCKED,FPGA Safety Integration 2,,0%,FPGA,SW,SW DEV,,,Bill Pringlemeir,15d,02/03/25,02/24/25,97,2,2,16,16,0%,0,0,0,0%,1.00,,,US$0.00,US$0.00
#BLOCKED,TCB FW - Iteration 8 - Safety Checks,,0%,,,,,,,3d,02/03/25,02/05/25,78,3,3,24,24,0%,,0,0,0%,1.00,,,US$0.00,US$0.00
#BLOCKED,"TCB get Chronos data, debug data, curtain crash handling and pass to MCB",,0%,TCB,SW,SW DEV,,,Sal Sanci,3d,02/03/25,02/05/25,78,2,2,16,16,0%,0,0,0,0%,1.00,,,US$0.00,US$0.00
#BLOCKED,Thermistor Inputs,,0%,TCB,SW,SW DEV,,,Sal Sanci,3d,02/03/25,02/05/25,78,1,1,8,8,0%,,0,0,0%,1.00,,,US$0.00,US$0.00
#BLOCKED,CCA  (Chronos Control Application) / CC - Iteration 5,,0%,,,,,,,15d,02/03/25,02/24/25,97,15,10,120,120,0%,,0,0,0%,1.00,,,US$0.00,US$0.00
#BLOCKED,Rework for accuracy and speed,,0%,CCA/CC,SW,SW DEV,,,Jose Guerrero,15d,02/03/25,02/24/25,97,15,10,120,120,0%,,0,0,0%,1.00,,,US$0.00,US$0.00
#BLOCKED,MCB FW Iteration 5 - Hardware control,,0%,,,,,,,15d,02/03/25,02/24/25,97,15,15,120,120,0%,0,0,0,0%,1.00,,US$0.00,US$0.00,US$0.00,0,US$0.00
#BLOCKED,Drivers for all hardware ( needs MCB Board),,0%,MCB,SW,SW DEV,,,Sal Sanci,15d,02/03/25,02/24/25,97,15,15,120,120,0%,0,0,0,0%,1.00,,US$0.00,US$0.00,US$0.00,0,US$0.00
#BLOCKED,Sprint 31 - Safety Checks 4,,0%,,,,,,,15d,02/25/25,03/17/25,118,39,25,312,312,0%,,0,0,0%,1.00,,,US$0.00,US$0.00
#BLOCKED,FPGA FW Iteration 14 - Safety Checks 4,,0%,,,,,,,15d,02/25/25,03/17/25,118,12,8,96,96,0%,,0,0,0%,1.00,,,US$0.00,US$0.00
#BLOCKED,Beam Metrology 4 ( Convert electrical to light measures),,,FPGA,SW,SW DEV,,,Bill Pringlemeir,15d,02/25/25,03/17/25,118,5,5,40,40,0%,,0,0,0%,1.00,,,US$0.00,US$0.00,0,US$0.00
#BLOCKED,Calibration Implementation ( unknown),,0%,FPGA,SW,SW DEV,,,Bill Pringlemeir,15d,02/25/25,03/17/25,118,5,3,40,40,0%,0,0,0,0%,1.00,,US$0.00,US$0.00,US$0.00,0,US$0.00
#UNPARSEABLE,Safety Integration 3,,0%,FPGA,SW,SW DEV,,,Bill Pringlemeir,15d,02/25/25,03/17/25,118,2,0,16,16,0%,,0,0,0%,1.00,,,US$0.00,US$0.00
#BLOCKED,TCB FW - Iteration 9 - Automate Fine Alignment,,0%,,,,,,,15d,02/25/25,03/17/25,118,10,5,80,80,0%,,0,0,0%,1.00,,,US$0.00,US$0.00
#BLOCKED,TCB Automation  ( automate fine movement of xy),,0%,TCB,SW,SW DEV,,,Sal Sanci,15d,02/25/25,03/17/25,118,10,5,80,80,0%,0,0,0,0%,1.00,,US$0.00,US$0.00,US$0.00,0,US$0.00
#BLOCKED,MCB FW Iteration 6 - Control/ Monitor Laser & chiller,,0%,,,,,,,15d,02/25/25,03/17/25,118,7,7,56,56,0%,,0,0,0%,1.00,,,US$0.00,US$0.00
#BLOCKED,Power up,,0%,MCB,SW,SW DEV,,,Charu Pande,15d,02/25/25,03/17/25,118,3,3,24,24,0%,0,0,0,0%,1.00,,US$0.00,US$0.00,US$0.00,0,US$0.00
#BLOCKED,Control/monitor power to laser,,0%,MCB,SW,SW DEV,,,Charu Pande,15d,02/25/25,03/17/25,118,2,2,16,16,0%,0,0,0,0%,1.00,,,US$0.00,US$0.00
#BLOCKED,Monitor the Chiller and other peripherals.,,0%,MCB,SW,SW DEV,,,Charu Pande,15d,02/25/25,03/17/25,118,2,2,16,16,0%,0,0,0,0%,1.00,,US$0.00,US$0.00,US$0.00,0,US$0.00
#BLOCKED,CCA  (Chronos Control Application) / CC - Iteration 6,,,,,,,,,15d,02/25/25,03/17/25,118,10,5,80,80,0%,,0,0,0%,1.00,,,US$0.00,US$0.00
#BLOCKED,"Setup QNX Environment, Configuration then build",,,CCA/CC,SW,SW DEV,,,Jose Guerrero,15d,02/25/25,03/17/25,118,10,5,80,80,0%,,0,0,0%,1.00,,,US$0.00,US$0.00
#BLOCKED,Sprint 32 - CPLD +  MCB Automation,,0%,,,,,,,15d,03/18/25,04/07/25,139,41,22,328,328,0%,,0,0,0%,1.00,,,US$0.00,US$0.00
#BLOCKED,CPLD / FPGA,,0%,,,,,,,15d,03/18/25,04/07/25,139,15,6,120,120,0%,,0,0,0%,1.00,,,US$0.00,US$0.00
#BLOCKED,Setup  Infrastructure for CPLD,,0%,FPGA,SW,SW DEV,,,Bill Pringlemeir,15d,03/18/25,04/07/25,139,5,0,40,40,0%,,0,0,0%,1.00,,,US$0.00,US$0.00
#BLOCKED,Interface between FPGA to CPLD and CPLD to FPGA,,0%,FPGA,SW,SW DEV,,,Bill Pringlemeir,15d,03/18/25,04/07/25,139,5,3,40,40,0%,,0,0,0%,1.00,,,US$0.00,US$0.00
#BLOCKED,Port existing Beam metrology code to CPLD,,0%,FPGA,SW,SW DEV,,,Bill Pringlemeir,15d,03/18/25,04/07/25,139,5,3,40,40,0%,,0,0,0%,1.00,,,US$0.00,US$0.00
#BLOCKED,TCB FW - Iteration 9  - Illumination PWM,,0%,,,,,,,10d,03/18/25,03/31/25,132,7,7,56,56,0%,,0,0,0%,1.00,,,US$0.00,US$0.00
#BLOCKED,Interface to set the 'drive' (PWM) which will set current/voltage to the LED that illuminates the eye.,,0%,TCB,SW,SW DEV,,,Sal Sanci,5d,03/18/25,03/24/25,125,2,2,16,16,0%,,0,0,0%,1.00,,,US$0.00,US$0.00
#BLOCKED,Flatten & Center Iris ( Fixation) - real eye,,0%,TCB,SW,SW DEV,,,Sal Sanci,5d,03/25/25,03/31/25,132,5,5,40,40,0%,,0,0,0%,1.00,,,US$0.00,US$0.00
#BLOCKED,CCA ( Chronos Control Application ) / CC  - Iteration 7,,,,,,,,,15d,03/18/25,04/07/25,139,15,5,120,120,0%,,0,0,0%,1.00,,,US$0.00,US$0.00
,Porting CCA/CC to QNX,,,CCA/CC,SW,SW DEV,,,Jose Guerrero,10d,03/18/25,03/31/25,132,10,5,80,80,0%,,0,0,0%,1.00,,,US$0.00,US$0.00
,Ethernet Driver for QNX,,,CCA/CC,SW,SW DEV,,,Jose Guerrero,5d,04/01/25,04/07/25,139,5,0,40,40,0%,,0,0,0%,1.00,,,US$0.00,US$0.00
1,MCB FW Iteration 7,,0%,,,,,,,10d,03/18/25,03/31/25,132,4,4,32,32,0%,,0,0,0%,1.00,,,US$0.00,US$0.00
2,Automation z ( Alignment 2),,0%,MCB,SW,SW DEV,,,Charu Pande,5d,03/18/25,03/24/25,125,2,2,16,16,0%,0,0,0,0%,1.00,,,US$0.00,US$0.00
3,MCB Calibration,,,MCB,SW,SW DEV,,,Charu Pande,5d,03/25/25,03/31/25,132,2,2,16,16,0%,,0,0,0%,1.00,,,US$0.00,US$0.00
4,Sprint Z  ( After TCB v2),,0%,,,,,,,45d,11/29/24,02/03/25,76,41,33,328,328,0%,,0,0,0%,1.00,,,US$0.00,US$0.00
5,FPGA,,0%,,,,,,,45d,11/29/24,02/03/25,76,23,18,184,184,0%,,0,0,0%,1.00,,,US$0.00,US$0.00
6,Move FPGA to new FPGA SOM on  Gantry TCB,,0%,FPGA,SW,SW DEV,,,Bill Pringlemeir,15d,11/29/24,12/19/24,30,7,5,56,56,0%,,0,0,0%,1.00,,,US$0.00,US$0.00
7,Change Engineering data pipeline ( data logging to HPS),,0%,FPGA,SW,SW DEV,,,Bill Pringlemeir,15d,12/20/24,01/13/25,55,5,5,40,40,0%,,0,0,0%,1.00,,,US$0.00,US$0.00
8,GSRD - Arm CPU software,,0%,FPGA,SW,SW DEV,,,Bill Pringlemeir,15d,01/14/25,02/03/25,76,11,8,88,88,0%,,0,0,0%,1.00,,,US$0.00,US$0.00
9,TCB,,0%,,,,,,,15d,11/29/24,12/19/24,30,18,15,144,144,0%,,0,0,0%,1.00,,,US$0.00,US$0.00
10,Split  TCB FW into 2  FWs with communication,,0%,TCB,SW,SW DEV,,,Sal Sanci,15d,11/29/24,12/19/24,30,5,3,40,40,0%,,0,0,0%,1.00,,,US$0.00,US$0.00
11,Gantry TCB Framework,,0%,TCB,SW,SW DEV,,,Sal Sanci,15d,11/29/24,12/19/24,30,5,5,40,40,0%,,0,0,0%,1.00,,,US$0.00,US$0.00
12,OSA TCB Framework,,0%,TCB,SW,SW DEV,,,Sal Sanci,15d,11/29/24,12/19/24,30,5,5,40,40,0%,,0,0,0%,1.00,,,US$0.00,US$0.00
13,TCB V2 Integration with SOM FPGA,,0%,TCB,SW,SW DEV,,,Sal Sanci,15d,11/29/24,12/19/24,30,3,2,24,24,0%,,0,0,0%,1.00,,,US$0.00,US$0.00,0,US$0.00
14,Sprint  U1: Unit Testing Iteration 1,,0%,,,,,,,95d,10/14/24,02/27/25,100,195,147,1560,1560,0%,,0,0,0%,1.00,,,US$0.00,US$0.00
15,Unit Testing of Different Subsytems,,0%,,,,,,,95d,10/14/24,02/27/25,100,195,147,1560,1560,0%,,0,0,0%,1.00,,,US$0.00,US$0.00
16,Design Unit Test  framework for  FPGA,,0%,FPGA,SW,SW Unit Testing,,,Bill Pringlemeir,10d,11/04/24,11/18/24,-1,10,10,80,80,0%,,0,0,0%,1.00,,,US$0.00,US$0.00
17,"FPGA Unit Testing - Iteration 1 ( Data Logging, Beam Metrology, Path Tracker, Checker Dispatch and Command Dispatch)",,0%,FPGA,SW,SW Unit Testing,,,Bill Pringlemeir,10d,11/19/24,12/02/24,13,10,5,80,80,0%,0,0,0,0%,1.00,,,US$0.00,US$0.00
18,"FPGA Unit Testing - Iteration 1 ( Data Logging, Beam Metrology, Path Tracker, Checker Dispatch and Command Dispatch)",,,FPGA,SW,SW Unit Testing,,,Outsource,60d,12/03/24,02/27/25,100,60,50,480,480,0%,,0,0,0%,1.00,,,US$0.00,US$0.00
19,Design framework for  TCB & MCB,,0%,TCB,SW,SW Unit Testing,,,Charu Pande,30d,10/14/24,11/25/24,6,5,5,40,40,0%,,0,0,0%,1.00,,,US$0.00,US$0.00
20,TCB Unit Testing - Iteration 1,,0%,TCB,SW,SW Unit Testing,,,Levi Puckett,40d,11/26/24,01/22/25,64,40,30,320,320,0%,0,0,0,0%,1.00,,,US$0.00,US$0.00
21,MCB Unit Testing - Iteration 1,,0%,MCB,SW,SW Unit Testing,,,Charu Pande,30d,11/26/24,01/08/25,50,30,20,240,240,0%,0,0,0,0%,1.00,,,US$0.00,US$0.00
22,Design framework for  Phytec,,0%,CCA/CC,SW,SW Unit Testing,,,Jose Guerrero,15d,11/11/24,11/29/24,10,5,5,40,40,0%,,0,0,0%,1.00,,,US$0.00,US$0.00
23,CC/CCA Unit Testing - Iteration 1,,0%,CCA/CC,SW,SW Unit Testing,,,Jose Guerrero,20d,12/02/24,12/30/24,41,20,15,160,160,0%,0,0,0,0%,1.00,,,US$0.00,US$0.00
24,Design Unit Test Framework for GUI,,,GUI,SW,SW Unit Testing,,,Ali,15d,11/04/24,11/25/24,6,5,2,40,40,0%,,0,0,0%,1.00,,,US$0.00,US$0.00
25,GUI Unit Test Interation 1,,,GUI,SW,SW Unit Testing,,,Ali,15d,11/26/24,12/16/24,27,10,5,80,80,0%,,0,0,0%,1.00,,,US$0.00,US$0.00
26,Sprint U2: Unit Testing Iteration 2,,0%,,,,,,,65d,12/03/24,03/06/25,107,156,115,1248,1168,0%,,0,80,0%,1.00,,,US$0.00,US$0.00
27,Create Unit tests & Execute,,0%,,,,,,,65d,12/03/24,03/06/25,107,156,115,1248,1168,0%,,0,80,0%,1.00,,,US$0.00,US$0.00
28,FPGA  Unit Testing - Iteration 2 ( Level 2),,0%,FPGA,SW,SW Unit Testing,Can we make the screen auto center so that it cannot be moved (i.e. cannot accidently drag down or have to drag it up each time)  - Partially done,,Outsource,60d,12/03/24,02/27/25,100,70,50,560,480,0%,0,0,80,0%,1.00,,,US$0.00,US$0.00
29,TCB MCU -- Iteration 2,,0%,TCB,SW,SW Unit Testing,,,Levi Puckett,30d,01/23/25,03/06/25,107,30,25,240,240,0%,0,0,0,0%,1.00,,,US$0.00,US$0.00
30,MCB MCU -- Iteration 2,,0%,MCB,SW,SW Unit Testing,,,Charu Pande,25d,01/09/25,02/12/25,85,25,20,200,200,0%,0,0,0,0%,1.00,,,US$0.00,US$0.00
31,Chronos Control Application / CC- - Iteration 2,,0%,CCA/CC,SW,SW Unit Testing,,,Jose Guerrero,20d,12/31/24,01/28/25,70,20,15,160,160,0%,0,0,0,0%,1.00,,,US$0.00,US$0.00
32,Front End GUI - Unit Test  Iteration 2,,0%,GUI,SW,SW Unit Testing,,,Ali,10d,12/17/24,12/31/24,42,10,5,80,80,0%,0,0,0,0%,1.00,,,US$0.00,US$0.00
33,"Review Unit Tests Against Requirements and Ensure Traceability (SW lead, SE Support)",,0%,Other,SW,SW Unit Testing,,,Hema Dawonauth,2d,02/28/25,03/03/25,104,1,0,8,8,0%,,0,0,0%,1.00,,,US$0.00,US$0.00
34,Sprint U3 -  Unit Testing  Iteration 3,,0%,,,,,,,110d,01/02/25,06/09/25,202,0,110,0,1200,0%,,0,-1200,0%,1.00,,,US$0.00,US$0.00
35,Unit Testing Iteration 3,,0%,,,,,,,110d,01/02/25,06/09/25,202,0,110,0,1200,0%,,0,-1200,0%,1.00,,,US$0.00,US$0.00
36,FPGA  Unit Testing - Iteration 3 ( Level 3),,,FPGA,SW,SW Unit Testing,,,Outsource,70d,02/28/25,06/09/25,202,0,50,0,560,0%,,0,-560,0%,1.00,,,US$0.00,US$0.00
37,TCB Unit Testing - Iteration 3 ( Level 3),,,TCB,SW,SW Unit Testing,,,Levi Puckett,30d,03/07/25,04/17/25,149,0,25,0,240,0%,,0,-240,0%,1.00,,,US$0.00,US$0.00
38,MCB  Unit Testing - Iteration 3 ( Level 3),,,MCB,SW,SW Unit Testing,,,Charu Pande,15d,02/13/25,03/06/25,107,0,20,0,200,0%,,0,-200,0%,1.00,,,US$0.00,US$0.00
39,Chronos Control App/ CC Unit Testing - Iteration 3,,0%,CCA/CC,SW,SW Unit Testing,,,Russel,15d,01/29/25,02/19/25,92,0,10,0,120,0%,0,0,-120,0%,1.00,,,US$0.00,US$0.00
40,Front End GUI - Iteration 3,,,GUI,SW,SW Unit Testing,,,Ali,15d,01/02/25,01/22/25,64,0,5,0,80,0%,,0,-80,0%,1.00,,,US$0.00,US$0.00
41,Sprint X1 - Front End SW Development ( GUI) & Architecture - Iteration 1,,0%,,,,,,,31d,10/17/24,11/29/24,10,30,20,240,240,0%,0,0,0,0%,1.00,,US$0.00,US$0.00,US$0.00,0,US$0.00
42,Implementation,,0%,,,,,,,31d,10/17/24,11/29/24,10,30,20,240,240,0%,,0,0,0%,1.00,,,US$0.00,US$0.00
43,GUI Subsystems,,0%,,,,,,,31d,10/17/24,11/29/24,10,30,20,240,240,0%,,0,0,0%,1.00,,,US$0.00,US$0.00
44,Implement Procedure App - Iteration1,,0%,GUI,SW,SW DEV,,,Ali,15d,10/17/24,11/06/24,-13,10,10,80,80,0%,,0,0,0%,1.00,,,US$0.00,US$0.00
45,Data Handler - Iteration 1,,0%,,,,,,,19d,11/04/24,11/29/24,10,20,10,160,160,0%,,0,0,0%,1.00,,,US$0.00,US$0.00
46,Design & Framework,,0%,GUI,SW,SW DEV,,,Russel,15d,11/04/24,11/25/24,6,10,5,80,80,0%,,0,0,0%,1.00,,,US$0.00,US$0.00
47,Data Handler - Iteration 1 ( Save to file system),,0%,GUI,SW,SW DEV,,,Russel,15d,11/11/24,11/29/24,10,10,5,80,80,0%,0,0,0,0%,1.00,,US$0.00,US$0.00,US$0.00,0,US$0.00
48,Sprint X2 - Front End SW Development ( GUI) - Iteration 2,,0%,,,,,,,20d,12/02/24,12/30/24,41,25,20,200,200,0%,0,0,0,0%,1.00,,,US$0.00,US$0.00
49,Integration Testing & Rework ( GUI and Data Handling),,0%,GUI,SW,SW DEV,,,Ali,10d,12/02/24,12/13/24,24,5,5,40,40,0%,0,0,0,0%,1.00,,,US$0.00,US$0.00
50,Implementation Procedure App - Iteration 2,,0%,GUI,SW,SW DEV,,,Ali,10d,12/16/24,12/30/24,41,10,10,80,80,0%,0,0,0,0%,1.00,,,US$0.00,US$0.00
51,Data Handler - Iteration 2,,0%,GUI,SW,SW DEV,,,Russel,10d,12/02/24,12/13/24,24,10,5,80,80,0%,0,0,0,0%,1.00,,,US$0.00,US$0.00
52,Sprint X3 - Front End SW Development ( GUI) - Iteration 3,,0%,,,,,,,15d,12/31/24,01/21/25,63,13,13,104,104,0%,0,0,0,0%,1.00,,,US$0.00,US$0.00
53,Implement the Procedure App prototype (GUI) - Iteration 3,,0%,GUI,SW,SW DEV,,,Ali,15d,12/31/24,01/21/25,63,10,10,80,80,0%,0,0,0,0%,1.00,,,US$0.00,US$0.00
54,Integration Testing & rework,,0%,GUI,SW,SW DEV,,,Russel,3d,12/31/24,01/03/25,45,3,3,24,24,0%,0,0,0,0%,1.00,,,US$0.00,US$0.00
55,Sprint X4 - Calibration/ Engineering and Training Apps,,0%,,,,,,,13d,01/22/25,02/07/25,80,18,17,144,144,0%,0,0,0,0%,1.00,,,US$0.00,US$0.00
56,Training App ( based on Procedure App),,0%,GUI,SW,SW DEV,,,Ali,10d,01/22/25,02/04/25,77,5,5,40,40,0%,0,0,0,0%,1.00,,,US$0.00,US$0.00
57,Calibration App,,0%,,,,,,,13d,01/22/25,02/07/25,80,13,12,104,104,0%,0,0,0,0%,1.00,,,US$0.00,US$0.00
58,Calibration / Engineering App Release 1.0,,0%,,,,,,,13d,01/22/25,02/07/25,80,13,12,104,104,0%,0,0,0,0%,1.00,,,US$0.00,US$0.00
59,Implement the Calibration/ Engineering App prototype (GUI),,0%,GUI,SW,SW DEV,,,Ali,10d,01/22/25,02/04/25,77,10,10,80,80,0%,0,0,0,0%,1.00,,,US$0.00,US$0.00
60,Integration Testing & rework,,0%,GUI,SW,SW DEV,,,Russel,3d,02/05/25,02/07/25,80,3,2,24,24,0%,0,0,0,0%,1.00,,,US$0.00,US$0.00
61,Sprint Y1 - Integration Testing  (CAP),,0%,,,,,,,30d,02/03/25,03/17/25,118,11,5,88,88,0%,0,0,0,0%,1.00,,US$0.00,US$0.00,US$0.00,0,US$0.00
62,Integration Testing Plan,,0%,Other,SW,SW Integration Testing,,,Garrick Gunn,10d,02/03/25,02/14/25,87,1,0,8,8,0%,0,0,0,0%,1.00,,US$0.00,US$0.00,US$0.00,0,US$0.00
63,Integration Testing,,0%,Other,SW,SW Integration Testing,,,Garrick Gunn,10d,02/18/25,03/03/25,104,5,0,40,40,0%,0,0,0,0%,1.00,,US$0.00,US$0.00,US$0.00,0,US$0.00
64,Integration Testing Report,,0%,Other,SW,SW Integration Testing,,,Garrick Gunn,5d,03/04/25,03/10/25,111,1,0,8,8,0%,0,0,0,0%,1.00,,US$0.00,US$0.00,US$0.00,0,US$0.00
65,FPGA Rework,,0%,FPGA,SW,SW Integration Testing,,,Bill Pringlemeir,5d,03/11/25,03/17/25,118,2,3,16,16,0%,0,0,0,0%,1.00,,US$0.00,US$0.00,US$0.00,0,US$0.00
66,TCB/MCB Rework,,,TCB,SW,SW Integration Testing,,,Sal Sanci,5d,03/11/25,03/17/25,118,2,2,16,16,0%,,0,0,0%,1.00,,,US$0.00,US$0.00
67,Sprint Y2 - SW Verification,,0%,,,,,,,32d,04/08/25,05/23/25,185,28,28,224,224,0%,0,0,0,0%,1.00,,,US$0.00,US$0.00
68,SW Verification ( Dry run),,0%,SW Verification,SW,SW VE,,,Garrick Gunn,15d,04/08/25,04/29/25,161,15,15,120,120,0%,0,0,0,0%,1.00,,,US$0.00,US$0.00
69,FPGA Bug fixes and Rework,,0%,FPGA,SW,SW VE,,,Bill Pringlemeir,7d,04/30/25,05/08/25,170,2,2,16,16,0%,0,0,0,0%,1.00,,,US$0.00,US$0.00
70,TCB/MCB Bug fixes and Rework,,0%,TCB,SW,SW VE,,,Sal Sanci,7d,04/30/25,05/08/25,170,2,2,16,16,0%,,0,0,0%,1.00,,,US$0.00,US$0.00
71,GUI Bug fixes and Rework,,0%,GUI,SW,SW VE,,,Ali,7d,04/30/25,05/08/25,170,2,2,16,16,0%,,0,0,0%,1.00,,,US$0.00,US$0.00
72,Execute SW Verification - Final,,0%,SW Verification,SW,SW VE,,,Garrick Gunn,5d,05/09/25,05/15/25,177,5,5,40,40,0%,0,0,0,0%,1.00,,,US$0.00,US$0.00
73,SW Verification Report - Final,,0%,SW Verification,SW,SW VE,,,Garrick Gunn,5d,05/16/25,05/23/25,185,2,2,16,16,0%,0,0,0,0%,1.00,,,US$0.00,US$0.00
74,Task: DHF & Documentation,,3%,,,,,,,151d,10/07/24,05/13/25,175,234,180,1872,1876,0%,0,0,-4,0%,1.00,,,US$0.00,US$0.00
75,"Draft 1 - Initial Draft, Gather SW Requirements, Enter data in Polarian, first draft of TRD",,15%,,,,,,,44d,10/07/24,12/09/24,20,89,55,712,716,0%,0,0,-4,0%,1.00,,,US$0.00,US$0.00
76,Draft 1 - FPGA TRD ( 10 days),,60%,FPGA,SW,SW DHF,,,yahoshuaa,25d,10/07/24,11/12/24,-7,0,0,0,0,0%,0,0,0,0%,1.00,,,US$0.00,US$0.00
77,Draft 1 - TCB TRD,,0%,TCB,SW,SW DHF,,,yahoshuaa,25d,11/04/24,12/09/24,20,15,10,120,120,0%,0,0,0,0%,1.00,,,US$0.00,US$0.00
78,Draft 1 - CCA / Chronos Checker TRD,,0%,CCA/CC,SW,SW DHF,,,John Turner,25d,11/04/24,12/09/24,20,10,5,80,80,0%,0,0,0,0%,1.00,,,US$0.00,US$0.00
79,Draft 1 - MCB TRD,,0%,MCB,SW,SW DHF,,,yahoshuaa,10d,11/04/24,11/18/24,-1,10,5,80,80,0%,0,0,0,0%,1.00,,,US$0.00,US$0.00
80,Draft 1 - GUI TRD,,0%,GUI,SW,SW DHF,,,Russel,25d,11/04/24,12/09/24,20,5,5,40,40,0%,0,0,0,0%,1.00,,,US$0.00,US$0.00
81,Draft 1 - SW Risk Analysis,,0%,SW Risk Analysis,SW,SW DHF,,,John Turner,20d,11/04/24,12/02/24,13,0,0,0,0,0%,0,0,0,0%,1.00,,,US$0.00,US$0.00
82,Draft 1 - Software Development Plan,,100%,SDP,SW,SW DHF,,,John Turner,25d,11/04/24,12/09/24,0,0,0,0,0,0%,0,0,0,0%,1.00,,,US$0.00,US$0.00
83,Draft 1 - Software Architecture Document ( Back End & Front End),,100%,SW Architecture,SW,SW DHF,,,John Turner,15d,11/04/24,11/25/24,0,0,0,0,0,0%,0,0,0,0%,1.00,,,US$0.00,US$0.00
84,Draft 1 - Cyber Security,,0%,Cyber Security,SW,SW DHF,,,Russel,10d,11/04/24,11/18/24,-1,5,3,40,40,0%,0,0,0,0%,1.00,,,US$0.00,US$0.00
85,Draft 1 - Software Detailed Design Specification ( done in SW architecture),,0%,SDD,SW,SW DHF,,,John Turner,15d,11/04/24,11/25/24,6,10,5,80,80,0%,0,0,0,0%,1.00,,,US$0.00,US$0.00
86,Draft 1 - SW Verification Plan & Protocol for Chronos System,,0%,SW Verification Plan,SW,SW VE,,,Sneha,15d,11/04/24,11/25/24,6,0,0,0,4,0%,0,0,-4,0%,1.00,,,US$0.00,US$0.00
87,Draft 1 - SW Verification Plan for SLS,,0%,SW Verification Plan,SW,SW VE,,,Sneha,15d,11/04/24,11/25/24,6,0,0,0,0,0%,0,0,0,0%,1.00,,,US$0.00,US$0.00
88,Draft 1 - SW Protocol for SLS,,0%,SW Verification,SW,SW VE,,,Garrick Gunn,15d,11/04/24,11/25/24,6,15,10,120,120,0%,0,0,0,0%,1.00,,,US$0.00,US$0.00
89,"Draft 1 - SLS, Software Build Procedure",,0%,SW Build,SW,SW DHF,,,Bill Pringlemeir,25d,11/04/24,12/09/24,20,5,3,40,40,0%,0,0,0,0%,1.00,,,US$0.00,US$0.00
90,"Draft 1 - SLS, Software Production Environment Setup Procedure",,0%,SW Build,SW,SW DHF,,,Bill Pringlemeir,25d,11/04/24,12/09/24,20,3,3,24,24,0%,0,0,0,0%,1.00,,,US$0.00,US$0.00
91,"Draft 1 - SLS, Software Release Statements",,0%,SW Release,SW,SW DHF,,,Bill Pringlemeir,25d,11/04/24,12/09/24,20,3,3,24,24,0%,0,0,0,0%,1.00,,,US$0.00,US$0.00
92,"Draft 1 - SLS, Software Review Minutes / Technical Reviews",,0%,SW Release,SW,SW DHF,,,Bill Pringlemeir,25d,11/04/24,12/09/24,20,5,2,40,40,0%,0,0,0,0%,1.00,,,US$0.00,US$0.00
93,Draft 1 - Requirements Traceability Matrix,,0%,Other,SW,SW DHF,,,Dhruvitha,25d,11/04/24,12/09/24,20,3,1,24,24,0%,0,0,0,0%,1.00,,,US$0.00,US$0.00
94,"Draft 2 - More details, Allows for development of Protocols.  Allowing the drafting of Verification protocols at 75% and verification protocols complete at 100% of Draft 2",,0%,,,,,,,106d,11/13/24,04/14/25,146,79,71,632,632,0%,0,0,0,0%,1.00,,,US$0.00,US$0.00
95,Draft 2 - FPGA TRD,,0%,FPGA,SW,SW DHF,,,yahoshuaa,45d,11/13/24,01/16/25,58,10,10,80,80,0%,0,0,0,0%,1.00,,,US$0.00,US$0.00
96,Draft 2 - TCB TRD,,0%,TCB,SW,SW DHF,,,yahoshuaa,45d,12/10/24,02/12/25,85,5,5,40,40,0%,0,0,0,0%,1.00,,,US$0.00,US$0.00
97,Draft 2 - CCA / Chronos Checker TRD,,0%,CCA/CC,SW,SW DHF,,,yahoshuaa,45d,12/10/24,02/12/25,85,5,5,40,40,0%,0,0,0,0%,1.00,,,US$0.00,US$0.00
98,Draft 2 - MCB TRD,,0%,MCB,SW,SW DHF,,,yahoshuaa,45d,11/19/24,01/22/25,64,3,3,24,24,0%,0,0,0,0%,1.00,,,US$0.00,US$0.00
99,Draft 2 - GUI TRD,,0%,GUI,SW,SW DHF,,,Russel,45d,12/10/24,02/12/25,85,2,2,16,16,0%,0,0,0,0%,1.00,,,US$0.00,US$0.00
100,Draft 2 - SW Risk Analysis,,0%,SW Risk Analysis,SW,SW DHF,,,John Turner,15d,12/03/24,12/23/24,34,5,2,40,40,0%,0,0,0,0%,1.00,,,US$0.00,US$0.00
101,Draft 2 - Software Development Plan,,0%,SDP,SW,SW DHF,,,Hema Dawonauth,50d,12/10/24,02/20/25,93,2,2,16,16,0%,0,0,0,0%,1.00,,,US$0.00,US$0.00
102,Draft 2 - Cyber Security,,0%,Cyber Security,SW,SW DHF,,,Russel,15d,11/19/24,12/09/24,20,1,1,8,8,0%,0,0,0,0%,1.00,,,US$0.00,US$0.00
103,Draft 2 - Software Detailed Design Specification ( part of SW architecture),,0%,SDD,SW,SW DHF,,,John Turner,15d,11/26/24,12/16/24,27,5,5,40,40,0%,0,0,0,0%,1.00,,,US$0.00,US$0.00
104,Draft 2 - SW Verification Plan & Protocol for Chronos System,,0%,SW Verification Plan,SW,SW VE,,,Sneha,45d,11/26/24,01/29/25,71,1,1,8,8,0%,0,0,0,0%,1.00,,,US$0.00,US$0.00
105,Draft 2 - SW Verification Plan,,0%,SW Verification Plan,SW,SW VE,,,Garrick Gunn,15d,11/26/24,12/16/24,27,5,5,40,40,0%,0,0,0,0%,1.00,,,US$0.00,US$0.00
106,Draft 2 - Protocol for SLS,,0%,SW Verification,SW,SW VE,,,Garrick Gunn,15d,11/26/24,12/16/24,27,15,10,120,120,0%,0,0,0,0%,1.00,,,US$0.00,US$0.00
107,"Draft 2 - SLS, Software Build Procedure",,0%,SW Build,SW,SW DHF,,,Bill Pringlemeir,25d,12/10/24,01/15/25,57,1,1,8,8,0%,0,0,0,0%,1.00,,,US$0.00,US$0.00
108,"Draft 2 - SLS, Software Production Environment Setup Procedure",,0%,SW Build,SW,SW DHF,,,Bill Pringlemeir,25d,12/10/24,01/15/25,57,1,1,8,8,0%,0,0,0,0%,1.00,,,US$0.00,US$0.00
109,"Draft 2 - SLS, Software Release Statements",,0%,SW Release,SW,SW DHF,,,Bill Pringlemeir,25d,12/10/24,01/15/25,57,1,1,8,8,0%,0,0,0,0%,1.00,,,US$0.00,US$0.00
110,"Draft 2 - SLS, Software Review Minutes",,0%,SW Release,SW,SW DHF,,,Hema Dawonauth,25d,12/10/24,01/15/25,57,1,1,8,8,0%,0,0,0,0%,1.00,,,US$0.00,US$0.00
111,Draft 2 - Requirements Traceability Matrix,,0%,Other,SW,SW DHF,,,Dhruvitha,25d,12/10/24,01/15/25,57,1,1,8,8,0%,0,0,0,0%,1.00,,,US$0.00,US$0.00
112,Draft 2 - Top level SA,,0%,SW Architecture,SW,SW DHF,,,John Turner,20d,03/18/25,04/14/25,146,5,5,40,40,0%,,0,0,0%,1.00,,,US$0.00,US$0.00
113,Draft 2 - Front End SA,,0%,SW Architecture,SW,SW DHF,,,John Turner,20d,03/18/25,04/14/25,146,5,5,40,40,0%,,0,0,0%,1.00,,,US$0.00,US$0.00
114,Draft 2 - Back End SA,,0%,SW Architecture,SW,SW DHF,,,John Turner,20d,03/18/25,04/14/25,146,5,5,40,40,0%,,0,0,0%,1.00,,,US$0.00,US$0.00
115,Draft 3 - Final for Signatures,,0%,,,,,,,107d,12/10/24,05/13/25,175,66,54,528,528,0%,0,0,0,0%,1.00,,,US$0.00,US$0.00
116,Draft 3 - FPGA TRD,,0%,FPGA,SW,SW DHF,,,Bill Pringlemeir,10d,04/30/25,05/13/25,175,5,5,40,40,0%,0,0,0,0%,1.00,,,US$0.00,US$0.00
117,Draft 3 - TCB TRD,,0%,TCB,SW,SW DHF,,,Sal Sanci,10d,04/30/25,05/13/25,175,5,5,40,40,0%,0,0,0,0%,1.00,,,US$0.00,US$0.00
118,Draft 3 - MCB TRD,,0%,MCB,SW,SW DHF,,,Charu Pande,10d,04/30/25,05/13/25,175,3,3,24,24,0%,0,0,0,0%,1.00,,,US$0.00,US$0.00
119,Draft 3 - CCA / Chronos Checker TRD,,0%,CCA/CC,SW,SW DHF,,,Jose Guerrero,10d,04/30/25,05/13/25,175,5,3,40,40,0%,0,0,0,0%,1.00,,,US$0.00,US$0.00
120,Draft 3 - GUI TRD,,0%,GUI,SW,SW DHF,,,Ali,10d,04/30/25,05/13/25,175,3,2,24,24,0%,0,0,0,0%,1.00,,,US$0.00,US$0.00
121,Draft 3 - SW Risk Analysis,,0%,SW Risk Analysis,SW,SW DHF,,,John Turner,15d,12/24/24,01/15/25,57,5,2,40,40,0%,0,0,0,0%,1.00,,,US$0.00,US$0.00
122,Draft 3 - Software Development Plan,,0%,SDP,SW,SW DHF,,,Hema Dawonauth,15d,02/21/25,03/13/25,114,2,1,16,16,0%,0,0,0,0%,1.00,,,US$0.00,US$0.00
123,Draft 3 - Top level SA,,0%,SW Architecture,SW,SW DHF,,,John Turner,15d,03/18/25,04/07/25,139,2,2,16,16,0%,0,0,0,0%,1.00,,,US$0.00,US$0.00
124,Draft 3 - Front End SA,,0%,SW Architecture,SW,SW DHF,,,John Turner,15d,03/18/25,04/07/25,139,2,2,16,16,0%,0,0,0,0%,1.00,,,US$0.00,US$0.00
125,Draft 3 - Back End SA,,0%,SW Architecture,SW,SW DHF,,,John Turner,15d,03/18/25,04/07/25,139,5,3,40,40,0%,0,0,0,0%,1.00,,,US$0.00,US$0.00
126,Draft 3 - Cyber Security,,0%,Cyber Security,SW,SW DHF,,,Russel,15d,12/10/24,12/31/24,42,1,1,8,8,0%,0,0,0,0%,1.00,,,US$0.00,US$0.00
127,Draft 3 - Software Detailed Design Specification,,0%,SDD,SW,SW DHF,,,John Turner,15d,12/17/24,01/08/25,50,3,3,24,24,0%,0,0,0,0%,1.00,,,US$0.00,US$0.00
128,Draft 3 - SW Verification Plan & Protocol for Chronos System,,0%,SW Verification Plan,SW,SW VE,,,Sneha,15d,01/30/25,02/20/25,93,1,1,8,8,0%,0,0,0,0%,1.00,,,US$0.00,US$0.00
129,Draft 3 - SW Verification Plan for SLS,,0%,SW Verification Plan,SW,SW VE,,,Garrick Gunn,15d,12/17/24,01/08/25,50,10,8,80,80,0%,0,0,0,0%,1.00,,,US$0.00,US$0.00
130,Draft 3 - Protocol for SLS,,0%,SW Verification,SW,SW VE,,,Garrick Gunn,15d,12/17/24,01/08/25,50,9,8,72,72,0%,0,0,0,0%,1.00,,,US$0.00,US$0.00
131,"Draft 3 - SLS, Software Build Procedure",,0%,SW Build,SW,SW DHF,,,yahoshuaa,25d,01/16/25,02/20/25,93,1,1,8,8,0%,0,0,0,0%,1.00,,,US$0.00,US$0.00
132,"Draft 3 - SLS, Software Production Environment Setup Procedure",,0%,SW Build,SW,SW DHF,,,Bill Pringlemeir,25d,01/16/25,02/20/25,93,1,1,8,8,0%,0,0,0,0%,1.00,,,US$0.00,US$0.00
133,"Draft 3 - SLS, Software Release Statements w/ Final Release",,0%,SW Release,SW,SW DHF,,,Bill Pringlemeir,25d,01/16/25,02/20/25,93,1,1,8,8,0%,0,0,0,0%,1.00,,,US$0.00,US$0.00
134,"Draft 3 - SLS, Software Review Minutes",,0%,SW Release,SW,SW DHF,,,Hema Dawonauth,25d,01/16/25,02/20/25,93,1,1,8,8,0%,0,0,0,0%,1.00,,,US$0.00,US$0.00
135,Draft 3 - Requirements Traceability Matrix,,0%,Other,SW,SW DHF,,,Dhruvitha,25d,01/16/25,02/20/25,93,1,1,8,8,0%,0,0,0,0%,1.00,,,US$0.00,US$0.00
136,SOW 7 - Clinical Design,,8%,,,,,,,64d,08/27/24,11/27/24,8,344.3,,2754.4,3020.8,0%,0,0,-266.4,0%,1.00,,US$0.00,US$0.00,US$0.00,0,US$0.00
137,Task 1: Evaluation,,15%,,,,,,,64d,08/27/24,11/27/24,8,93.5,,748,288,0%,0,0,460,0%,1.00,,,US$0.00,US$0.00
138,Evaluate design against clinical content,,100%,,SE,HW DEV,,,Matt Lemay,5d,09/03/24,09/09/24,0,4,,32,32,0%,0,0,0,0%,1.00,,,US$0.00,US$0.00
139,"DHF HW Draft 1 (Initial draft, basic layout, Rqts)",,6%,,,,,,,30d,08/27/24,10/08/24,-42,15,,120,120,0%,0,0,0,0%,1.00,,,US$0.00,US$0.00
140,PRD,Blue,100%,,SE,HW DHF,,,Matt Lemay,5d,10/02/24,10/08/24,0,0,,0,0,0%,0,0,0,0%,1.00,,,US$0.00,US$0.00
141,SA,,0%,,SE,HW DHF,,,Matt Lemay,20d,09/10/24,10/08/24,-42,5,,40,40,0%,0,0,0,0%,1.00,,,US$0.00,US$0.00
142,RA,,0%,,SE,HW DHF,,,Laura Stelting,30d,08/27/24,10/08/24,-42,5,,40,40,0%,0,0,0,0%,1.00,,,US$0.00,US$0.00
143,TRD,,0%,,SE,HW DHF,,,Charm Lynn,30d,08/27/24,10/08/24,-42,5,,40,40,0%,0,0,0,0%,1.00,,,US$0.00,US$0.00
144,De-Risking,,12%,,,,,,,45d,09/23/24,11/27/24,8,74.5,,596,136,0%,,0,460,0%,1.00,,,US$0.00,US$0.00
145,Laser engine evaluation,,0%,,OPT,HW DEV,,,Brian King,15d,09/23/24,10/15/24,-35,6,,48,48,0%,,0,0,0%,1.00,,,US$0.00,US$0.00
146,Fixation target de-risk,,10%,,OPT,HW DEV,,,Brian King,23d,10/14/24,11/14/24,-5,7,,56,56,0%,,0,0,0%,1.00,,,US$0.00,US$0.00
147,CAP (Clinical Alignment Prototype) lead time,,30%,,ME,HW DEV,,,Ammar Al-Dojaily,26d,09/25/24,11/01/24,-18,1,,8,8,0%,,0,0,0%,1.00,,,US$0.00,US$0.00
148,CAP build Test fit (TO),,0%,,ME,HW DEV,,,Ammar Al-Dojaily,4d,11/04/24,11/07/24,-12,3,,24,24,0%,,0,0,0%,1.00,,,US$0.00,US$0.00
149,CAP shipping to VIC,,0%,,ME,HW DEV,,,Ammar Al-Dojaily,5d,11/08/24,11/15/24,-4,1,,8,,0%,,0,8,0%,1.00,,,US$0.00,US$0.00
150,OSA V2 base plate,,50%,,ME,HW DEV,,,Gene Wey,20d,10/16/24,11/13/24,-6,4,,32,,0%,,0,32,0%,1.00,,,US$0.00,US$0.00
151,Cable routing,,0%,,EE,HW DEV,,,Michael Ganzert,15d,10/23/24,11/13/24,-6,14,,112,,0%,,0,112,0%,1.00,,,US$0.00,US$0.00
152,CAP complete assembly,,0%,,ME,HW DEV,,,Gene Wey,3d,11/18/24,11/20/24,1,5,,40,,0%,,0,40,0%,1.00,,,US$0.00,US$0.00
153,Test planning,,6%,,SE,HW DEV,,,Matt Lemay,10d,11/06/24,11/20/24,1,9,,72,,0%,,0,72,0%,1.00,,,US$0.00,US$0.00
154,Alignment de-risking (mechanical and behavioral),,0%,,SE,HW DEV,,,Laura Stelting,5d,11/21/24,11/27/24,8,7,,56,,0%,,0,56,0%,1.00,,,US$0.00,US$0.00
155,Formative evaluation TO,,0%,,HF,HW DEV,,,Mike Loveless,40d,09/24/24,11/21/24,2,17.5,,140,,0%,,0,140,0%,1.00,,,US$0.00,US$0.00
156,Task 2: Design Work,,0%,,,,,,,53d,09/10/24,11/26/24,7,250.8,,2006.4,2732.8,0%,0,0,-726.4,0%,1.00,,,US$0.00,US$0.00
157,Clinical System Design Work,,0%,,,,,,,53d,09/10/24,11/26/24,7,250.8,,2006.4,2732.8,0%,0,0,-726.4,0%,1.00,,,US$0.00,US$0.00
158,(HW) Gantry,,1%,,,,,,,45d,09/10/24,11/14/24,-5,128.8,,1030.4,1452.8,0%,0,0,-422.4,0%,1.00,,,US$0.00,US$0.00
159,(HW) OSA,,0%,,ME,HW DEV,,,Gene Wey,35d,09/10/24,10/30/24,-20,12,,96,160,0%,0,0,-64,0%,1.00,,,US$0.00,US$0.00
160,(HW) OSA,,0%,,EE,HW DEV,,,Gene Wey,35d,09/10/24,10/30/24,-20,3,,24,160,0%,0,0,-136,0%,1.00,,,US$0.00,US$0.00
161,(HW) OSA,,0%,,OPT,HW DEV,,,Gene Wey,35d,09/10/24,10/30/24,-20,5,,40,160,0%,0,0,-120,0%,1.00,,,US$0.00,US$0.00
162,(HW) TCBs (Incorp new FPGA platform) - Gantry,,0%,,EE,HW DEV,,,Michael Ganzert,45d,09/10/24,11/14/24,-5,10.4,,83.2,166.4,0%,0,0,-83.2,0%,1.00,,,US$0.00,US$0.00
162,(HW) TCBs (Incorp new FPGA platform) - OSA,,0%,,EE,HW DEV,,,Willem Schokking,45d,09/10/24,11/14/24,-5,10.4,,83.2,166.4,0%,0,0,-83.2,0%,1.00,,,US$0.00,US$0.00
163,(HW) Beam metrology respin V3,,10%,,EE,HW DEV,,,Michael Ganzert,40d,09/10/24,11/06/24,-13,18,,144,,0%,,0,144,0%,1.00,,,US$0.00,US$0.00
164,(HW) Light curtain,,0%,,EE,HW DEV,,,Willem Schokking,38d,09/10/24,11/04/24,-15,36,,288,160,0%,0,0,128,0%,1.00,,,US$0.00,US$0.00
165,(HW) Frame,,0%,,ME,HW DEV,,,Ammar Al-Dojaily,20d,09/24/24,10/23/24,-27,8,,64,200,0%,0,0,-136,0%,1.00,,,US$0.00,US$0.00
166,(HW) Air conditioning/handling,,0%,,ME,HW DEV,,,Ammar Al-Dojaily,15d,09/10/24,10/01/24,-49,10,,80,120,0%,0,0,-40,0%,1.00,,,US$0.00,US$0.00
167,(HW) Enclosures/IP/interlocks,,0%,,ME,HW DEV,,,Ammar Al-Dojaily,25d,10/09/24,11/14/24,-5,16,,128,160,0%,0,0,-32,0%,1.00,,,US$0.00,US$0.00
168,(HW) Base/Console,,0%,,,,,,,53d,09/10/24,11/26/24,7,122,,976,1280,0%,0,0,-304,0%,1.00,,,US$0.00,US$0.00
169,(HW) Bed Surface and Headrest Mounting,,0%,,ME,HW DEV,,,Gene Wey,15d,09/10/24,10/01/24,-49,10,,80,160,0%,0,0,-80,0%,1.00,,,US$0.00,US$0.00
170,(HW) Air and Liquid Conditioning / Handling,,0%,,ME,HW DEV,,,Gene Wey,15d,09/10/24,10/01/24,-49,10,,80,80,0%,0,0,0,0%,1.00,,,US$0.00,US$0.00
171,(HW) MCB,,0%,,EE,HW DEV,,,Michael Ganzert,45d,09/10/24,11/14/24,-5,20,,160,160,0%,0,0,0,0%,1.00,,,US$0.00,US$0.00
172,(HW) UIs Part Selection,,0%,,HF,HW DEV,,,Mike Loveless,25d,09/10/24,10/16/24,-34,10,,80,160,0%,0,0,-80,0%,1.00,,,US$0.00,US$0.00
173,(HW) UI board,,0%,,EE,HW DEV,,,Willem Schokking,34d,09/24/24,11/13/24,-6,20,,160,160,0%,0,0,0,0%,1.00,,,US$0.00,US$0.00
174,(HW) Power distribution/UPS,,0%,,EE,HW DEV,,,Michael Ganzert,40d,09/10/24,11/06/24,-13,6,,48,160,0%,0,0,-112,0%,1.00,,,US$0.00,US$0.00
175,(HW) Speakers,,0%,,EE,HW DEV,,,Diego Sorrentino,13d,09/10/24,09/26/24,-54,6,,48,80,0%,0,0,-32,0%,1.00,,,US$0.00,US$0.00
176,(HW) Frame,,0%,,ME,HW DEV,,,Gene Wey,20d,09/27/24,10/28/24,-22,20,,160,160,0%,0,0,0,0%,1.00,,,US$0.00,US$0.00
177,(HW) Enclosures/IP/interlocks,,0%,,ME,HW DEV,,,Gene Wey,25d,10/22/24,11/26/24,7,20,,160,160,0%,0,0,0,0%,1.00,,,US$0.00,US$0.00
178,"SOW 8 - Verification, Build, Documentation",,0%,,,,,,,151d,10/30/24,06/05/25,198,513,,4104,6272,0%,0,0,-2168,0%,1.00,,US$0.00,US$0.00,US$0.00,0,US$0.00
179,"Task 1: Verification, Testing & Builds",,0%,,,,,,,151d,10/30/24,06/05/25,198,345,,2760,4488,0%,0,0,-1728,0%,1.00,,,US$0.00,US$0.00
180,Order Clinical Parts TARGET,,0%,,,,,,,0,11/29/24,11/29/24,10,0,,0,0,0%,,0,0,0%,1.00,,,US$0.00,US$0.00
181,Order Clinical Parts,,0%,,,,,,,0,11/27/24,11/27/24,8,0,,0,0,0%,,0,0,0%,1.00,,,US$0.00,US$0.00
182,DHF HW Draft 2 (support dev of protocols),,0%,,,,,,,55d,10/30/24,01/17/25,59,96,,768,1072,0%,0,0,-304,0%,1.00,,,US$0.00,US$0.00
183,PRD,,0%,,SE,HW DHF,,,Matt Lemay,5d,01/06/25,01/10/25,52,2,,16,16,0%,0,0,0,0%,1.00,,,US$0.00,US$0.00
184,SA,,0%,,SE,HW DHF,,,Matt Lemay,25d,12/05/24,01/10/25,52,8,,64,80,0%,0,0,-16,0%,1.00,,,US$0.00,US$0.00
185,RA,,0%,,SE,HW DHF,,,Laura Stelting,45d,11/06/24,01/10/25,52,15,,120,200,0%,0,0,-80,0%,1.00,,,US$0.00,US$0.00
186,TRD,,0%,,SE,HW DHF,,,Charm Lynn,50d,10/30/24,01/10/25,52,20,,160,320,0%,0,0,-160,0%,1.00,,,US$0.00,US$0.00
187,Use case,,0%,,HF,HW DHF,,,Mark Ware,15d,11/21/24,12/11/24,22,5,,40,40,0%,0,0,0,0%,1.00,,,US$0.00,US$0.00
188,URRA,,0%,,HF,HW DHF,,,Mark Ware,20d,11/28/24,12/26/24,37,10,,80,80,0%,0,0,0,0%,1.00,,,US$0.00,US$0.00
189,Verification plan (dry run),,0%,,SE,HW VE,,,Garrick Gunn,20d,12/19/24,01/17/25,59,8,,64,128,0%,0,0,-64,0%,1.00,,,US$0.00,US$0.00
190,Verification protocol (dry run),,0%,,SE,HW VE,,,Garrick Gunn,20d,12/19/24,01/17/25,59,18,,144,128,0%,0,0,16,0%,1.00,,,US$0.00,US$0.00
191,Quality plan,,0%,,QA,HW DHF,,,Dhruvitha,30d,11/21/24,01/03/25,45,10,,80,80,0%,0,0,0,0%,1.00,,,US$0.00,US$0.00
192,Clinical device Assembly and testing,,0%,,,,,,,70d,11/28/24,03/10/25,111,93,,744,1200,0%,0,0,-456,0%,1.00,,,US$0.00,US$0.00
193,Procurement of Clinical parts,,0%,,ME,HW DEV,,,Gene Wey,20d,11/28/24,12/26/24,37,5,,40,40,0%,0,0,0,0%,1.00,,,US$0.00,US$0.00
194,Draft initial work instructions,,0%,,ME,HW DEV,,,Ammar Al-Dojaily,20d,11/28/24,12/26/24,37,10,,80,120,0%,0,0,-40,0%,1.00,,,US$0.00,US$0.00
195,Draft initial work instructions,,0%,,EE,HW DEV,,,Michael Ganzert,20d,11/28/24,12/26/24,37,8,,64,120,0%,0,0,-56,0%,1.00,,,US$0.00,US$0.00
196,Assembly of clinical unit 1,,0%,,ME,HW DEV,,,Gene Wey,25d,12/12/24,01/17/25,59,20,,160,160,0%,0,0,0,0%,1.00,,,US$0.00,US$0.00
197,Debug / smoke testing,,0%,,EE,HW DEV,,,Michael Ganzert,10d,01/20/25,01/31/25,73,15,,120,120,0%,0,0,0,0%,1.00,,,US$0.00,US$0.00
198,Dry Run Verification,,0%,,SE,HW VE,,,Laura Stelting,30d,01/20/25,03/03/25,104,5,,40,160,0%,0,0,-120,0%,1.00,,,US$0.00,US$0.00
199,Dry Run Verification,,0%,,ME,HW VE,,,Gene Wey,30d,01/20/25,03/03/25,104,5,,40,160,0%,0,0,-120,0%,1.00,,,US$0.00,US$0.00
200,Dry Run Verification,,0%,,EE,HW VE,,,Michael Ganzert,30d,01/20/25,03/03/25,104,5,,40,160,0%,0,0,-120,0%,1.00,,,US$0.00,US$0.00
201,Dry Run Verification reporting,,0%,,SE,HW VE,,,Laura Stelting,10d,02/25/25,03/10/25,111,5,,40,80,0%,0,0,-40,0%,1.00,,,US$0.00,US$0.00
202,Additional optics support,,0%,,OPT,HW VE,,,Brian King,10d,02/25/25,03/10/25,111,15,,120,80,0%,0,0,40,0%,1.00,,,US$0.00,US$0.00
203,DR Verification results,,0%,,,,,,,0,03/03/25,03/03/25,104,0,,0,0,0%,0,0,0,0%,1.00,,,US$0.00,US$0.00
204,Clinical device Design updates (V1 to V2),,0%,,,,,,,72d,02/18/25,05/30/25,192,142,,1136,2080,0%,0,0,-944,0%,1.00,,,US$0.00,US$0.00
205,Design spin clinical V2 ME,,0%,,M,HW DEV,,,Gene Wey,30d,02/18/25,03/31/25,132,20,,160,320,0%,0,0,-160,0%,1.00,,,US$0.00,US$0.00
206,Design spin clinical V2 EE,,0%,,EE,HW DEV,,,Michael Ganzert,30d,02/18/25,03/31/25,132,20,,160,,0%,,0,160,0%,1.00,,,US$0.00,US$0.00
207,Procurement of parts,,0%,,ME,HW DEV,,,Gene Wey,10d,03/18/25,03/31/25,132,5,,40,40,0%,0,0,0,0%,1.00,,,US$0.00,US$0.00
208,Update to Clinical V1 to V2,,0%,,ME,HW DEV,,,Gene Wey,20d,04/01/25,04/29/25,161,15,,120,160,0%,0,0,-40,0%,1.00,,,US$0.00,US$0.00
209,Update to Clinical V1 to V2,,0%,,EE,HW DEV,,,Michael Ganzert,20d,04/01/25,04/29/25,161,5,,40,160,0%,0,0,-120,0%,1.00,,,US$0.00,US$0.00
210,Update verification plan,,0%,,SE,HW VE,,,Garrick Gunn,25d,03/25/25,04/29/25,161,3,,24,160,0%,0,0,-136,0%,1.00,,,US$0.00,US$0.00
211,Update verification protocol,,0%,,SE,HW VE,,,Garrick Gunn,25d,03/25/25,04/29/25,161,10,,80,160,0%,0,0,-80,0%,1.00,,,US$0.00,US$0.00
212,Verification and testing (V1 to V2 convert),,0%,,SE,HW VE,,,Laura Stelting,20d,04/30/25,05/28/25,190,8,,64,200,0%,0,0,-136,0%,1.00,,,US$0.00,US$0.00
213,Verification and testing (V1 to V2 convert),,0%,,ME,HW VE,,,Gene Wey,20d,04/30/25,05/28/25,190,8,,64,200,0%,0,0,-136,0%,1.00,,,US$0.00,US$0.00
214,Verification and testing (V1 to V2 convert),,0%,,EE,HW VE,,,Michael Ganzert,20d,04/30/25,05/28/25,190,8,,64,200,0%,0,0,-136,0%,1.00,,,US$0.00,US$0.00
215,Assembly Clinical V2,,0%,,ME,HW DEV,,,Gene Wey,22d,04/01/25,05/01/25,163,20,,160,160,0%,0,0,0,0%,1.00,,,US$0.00,US$0.00
216,Additional optics support,,0%,,OPT,HW DEV,,,Brian King,22d,04/01/25,05/01/25,163,10,,80,160,0%,0,0,-80,0%,1.00,,,US$0.00,US$0.00
217,EMC / 60601 / laser testing,,0%,,EE,HW DEV,,,Willem Schokking,20d,05/02/25,05/30/25,192,10,,80,160,0%,0,0,-80,0%,1.00,,,US$0.00,US$0.00
218,DHF HW Final (finalized and signed),,0%,,,,,,,15d,05/15/25,06/05/25,198,14,,112,136,0%,0,0,-24,0%,1.00,,,US$0.00,US$0.00
219,PRD,,0%,,SE,HW DHF,,,Matt Lemay,10d,05/23/25,06/05/25,198,3,,24,24,0%,0,0,0,0%,1.00,,,US$0.00,US$0.00
220,SA,,0%,,SE,HW DHF,,,Matt Lemay,15d,05/15/25,06/05/25,198,3,,24,24,0%,0,0,0,0%,1.00,,,US$0.00,US$0.00
221,RA,,0%,,SE,HW DHF,,,Laura Stelting,15d,05/15/25,06/05/25,198,3,,24,24,0%,0,0,0,0%,1.00,,,US$0.00,US$0.00
222,TRD,,0%,,SE,HW DHF,,,Charm Lynn,15d,05/15/25,06/05/25,198,3,,24,24,0%,0,0,0,0%,1.00,,,US$0.00,US$0.00
223,Design Plan,,0%,,SE,HW DHF,,,Matt Lemay,15d,05/15/25,06/05/25,198,2,,16,40,0%,0,0,-24,0%,1.00,,,US$0.00,US$0.00
224,Task 2: Assemble clinical units (MFG),,0%,,,,,,,116d,12/19/24,06/05/25,198,113,,904,1344,0%,0,0,-440,0%,1.00,,,US$0.00,US$0.00
225,Work Instructions,,0%,,ME,HW DEV,,,Ammar Al-Dojaily,30d,02/27/25,04/09/25,141,10,,80,112,0%,0,0,-32,0%,1.00,,,US$0.00,US$0.00
226,Work Instructions,,0%,,EE,HW DEV,,,Michael Ganzert,30d,02/27/25,04/09/25,141,5,,40,112,0%,0,0,-72,0%,1.00,,,US$0.00,US$0.00
227,IFU / QRG,,0%,,HF,HW DEV,,,Mark Ware,45d,02/12/25,04/16/25,148,15,,120,160,0%,0,0,-40,0%,1.00,,,US$0.00,US$0.00
228,Inspection Criteria / Item master,,0%,,ME,HW DEV,,,Ammar Al-Dojaily,15d,12/19/24,01/10/25,52,10,,80,80,0%,0,0,0,0%,1.00,,,US$0.00,US$0.00
229,Manufacturing Support / Training,,0%,,ME,HW DEV,,,Gene Wey,12d,12/24/24,01/10/25,52,5,,40,40,0%,0,0,0,0%,1.00,,,US$0.00,US$0.00
230,Inspection check lists,,0%,,ME,HW DEV,,,Ammar Al-Dojaily,15d,03/20/25,04/09/25,141,8,,64,120,0%,0,0,-56,0%,1.00,,,US$0.00,US$0.00
231,Inspection check lists,,0%,,EE,HW DEV,,,Michael Ganzert,15d,03/20/25,04/09/25,141,8,,64,120,0%,0,0,-56,0%,1.00,,,US$0.00,US$0.00
232,Part inspection + Item master,,0%,,ME,HW DEV,,,Gene Wey,15d,04/30/25,05/21/25,183,15,,120,160,0%,0,0,-40,0%,1.00,,,US$0.00,US$0.00
233,Assemble clinical systems n=2,,0%,,ME,HW DEV,,,Gene Wey,15d,04/30/25,05/21/25,183,12,,96,160,0%,0,0,-64,0%,1.00,,,US$0.00,US$0.00
234,Assemble clinical systems n=2,,0%,,EE,HW DEV,,,Gene Wey,15d,04/30/25,05/21/25,183,10,,80,160,0%,0,0,-80,0%,1.00,,,US$0.00,US$0.00
235,DHR creation / review,,0%,,QA,HW DEV,,,Dhruvitha,3d,05/22/25,05/26/25,188,5,,40,40,0%,0,0,0,0%,1.00,,,US$0.00,US$0.00
236,QA release,,0%,,QA,HW DEV,,,Dhruvitha,3d,05/27/25,05/29/25,191,5,,40,40,0%,0,0,0,0%,1.00,,,US$0.00,US$0.00
237,Package and ship clinical units,,0%,,ME,HW DEV,,,Gene Wey,5d,05/30/25,06/05/25,198,5,,40,40,0%,0,0,0,0%,1.00,,,US$0.00,US$0.00
238,Task 3: (HW) Calibration and Testing Equipment,,0%,,,,,,,59d,10/31/24,01/24/25,66,55,,440,440,0%,,0,0,0%,1.00,,,US$0.00,US$0.00
239,(HW) Label design,,0%,,HF,HW DEV,,,Mark Ware,20d,11/15/24,12/12/24,23,20,,160,160,0%,0,0,0,0%,1.00,,,US$0.00,US$0.00
240,(HW) ANSI Z80.36 optical metrology,,0%,,OPT,HW DEV,,,Brian King,25d,10/31/24,12/05/24,16,15,,120,120,0%,0,0,0,0%,1.00,,,US$0.00,US$0.00
241,(HW) Calibration tools,,0%,,OPT,HW DEV,,,Brian King,34d,12/06/24,01/24/25,66,20,,160,160,0%,0,0,0,0%,1.00,,,US$0.00,US$0.00
242,Mile Stones,,0%,,,,,,,160d,10/16/24,06/05/25,198,,,0,,0%,,0,0,0%,1.00,,US$0.00,US$0.00,US$0.00,0,US$0.00
243,Deliver Clinical Unit,,,,,,,,,0,06/05/25,06/05/25,198,,,0,,0%,,0,0,0%,1.00,,,US$0.00,US$0.00
244,Deliver Clinical Unit Target,,,,,,,,,0,05/30/25,05/30/25,192,,,0,,0%,,0,0,0%,1.00,,,US$0.00,US$0.00
245,Mech design clinical V1 Milestones,,0%,,,,,,,24d,10/25/24,11/29/24,10,,,0,,0%,,0,0,0%,1.00,,,US$0.00,US$0.00
,Lock down component position,,0%,,,,,,,0,10/25/24,10/25/24,-25,,,0,,0%,,0,0,0%,1.00,,,US$0.00,US$0.00
,Rough Mech architecture and design direction,,0%,,,,,,,0,11/01/24,11/01/24,-18,,,0,,0%,,0,0,0%,1.00,,,US$0.00,US$0.00
,"Paneling strategy (where splits, mounting, interlock)",,0%,,,,,,,0,11/08/24,11/08/24,-11,,,0,,0%,,0,0,0%,1.00,,,US$0.00,US$0.00
,Preliminary details of frame 90% complete,,0%,,,,,,,0,11/15/24,11/15/24,-4,,,0,,0%,,0,0,0%,1.00,,,US$0.00,US$0.00
,Detailed drawings complete (structure),,0%,,,,,,,0,11/22/24,11/22/24,3,,,0,,0%,,0,0,0%,1.00,,,US$0.00,US$0.00
,Design reviews complete / PR's ready,,0%,,,,,,,0,11/29/24,11/29/24,10,,,0,,0%,,0,0,0%,1.00,,,US$0.00,US$0.00
1,Electrical Requirment Milestones,,0%,,,,,,,104d,10/16/24,03/17/25,118,,,0,,0%,,0,0,0%,1.00,,,US$0.00,US$0.00
2,Galvos on tcb for fpga,Blue,100%,,,,,,,0,,,0,,,0,,0%,,0,0,0%,1.00,,,US$0.00,US$0.00
3,ADCs on TCB for FPGA,Blue,100%,,,,,,,0,,,0,,,0,,0%,,0,0,0%,1.00,,,US$0.00,US$0.00
4,Chronos data feed ( Chronos System),Blue,100%,,,,,,,0,,,0,,,0,,0%,,0,0,0%,1.00,,,US$0.00,US$0.00
5,"HW F - x,y Steppers ( TCB v2)",Blue,100%,,,,,,,0,,,0,,,0,,0%,,0,0,0%,1.00,,,US$0.00,US$0.00
6,"SW R - x,y Steppers ( TCB v2) - TCB MCU Iteration 7 - Fine Alignment 1",Blue,100%,,,,,,,0,,,0,,,0,,0%,,0,0,0%,1.00,,,US$0.00,US$0.00
7,SW R - z Stepper ( MCB FW Iteration 5 - Alignment 1),,0%,,,,,,,0,03/10/25,03/10/25,111,,,0,,0%,,0,0,0%,1.00,,,US$0.00,US$0.00
8,HW F - z Stepper,,0%,,,,,,,0,10/23/24,10/23/24,-27,,,0,,0%,,0,0,0%,1.00,,,US$0.00,US$0.00
9,fixation target,Blue,100%,,,,,,,0,,,0,,,0,,0%,,0,0,0%,1.00,,,US$0.00,US$0.00
10,SW R - Joystick ( MCB FW Iteration 5 - Alignment 1),,0%,,,,,,,0,01/31/25,01/31/25,73,,,0,,0%,,0,0,0%,1.00,,,US$0.00,US$0.00
11,HW F - Joystick,,0%,,,,,,,0,10/16/24,10/16/24,-34,,,0,,0%,,0,0,0%,1.00,,,US$0.00,US$0.00
12,SW R - Foot Pedal ( MCB  FW Iteration 6 - Communication with TCB),,0%,,,,,,,0,11/20/24,11/20/24,1,,,0,,0%,,0,0,0%,1.00,,,US$0.00,US$0.00
13,HW F - Foot Pedal,,0%,,,,,,,0,10/16/24,10/16/24,-34,,,0,,0%,,0,0,0%,1.00,,,US$0.00,US$0.00
14,xerion ( TCB ),Blue,100%,,,,,,,0,,,0,,,0,,0%,,0,0,0%,1.00,,,US$0.00,US$0.00
15,SW R - Light Curtain (TCB FW - Iteration 8 - Safety Checks),,0%,,,,,,,0,02/05/25,02/05/25,78,,,0,,0%,,0,0,0%,1.00,,,US$0.00,US$0.00
16,HW F - Light Curtain,,0%,,,,,,,0,11/04/24,11/04/24,-15,,,0,,0%,,0,0,0%,1.00,,,US$0.00,US$0.00
17,SW R - eStop ( MCB FW Iteration 7 - Control/ Monitor Laser & chiller),,0%,,,,,,,0,03/17/25,03/17/25,118,,,0,,0%,,0,0,0%,1.00,,,US$0.00,US$0.00
18,HW F - eStop,,0%,,,,,,,0,10/16/24,10/16/24,-34,,,0,,0%,,0,0,0%,1.00,,,US$0.00,US$0.00
19,SW R - Power Button ( MCB FW Iteration 7 - Control/ Monitor Laser & chiller),,0%,,,,,,,0,03/17/25,03/17/25,118,,,0,,0%,,0,0,0%,1.00,,,US$0.00,US$0.00
20,HW F - Power Button,,0%,,,,,,,0,10/16/24,10/16/24,-34,,,0,,0%,,0,0,0%,1.00,,,US$0.00,US$0.00
21,"laser control, power ( Laser Engine) -( FPGA Iteration 9 - Beam metrology Iteration 2)",Blue,100%,,,,,,,0,,,0,,,0,,0%,,0,0,0%,1.00,,,US$0.00,US$0.00
22,beam metrology hw,Blue,100%,,,,,,,0,,,0,,,0,,0%,,0,0,0%,1.00,,,US$0.00,US$0.00
23,"SW R - x,y Limit Switches ( TCB MCU Iteration 7 - Fine Alignment 1)",,0%,,,,,,,0,01/14/25,01/14/25,56,,,0,,0%,,0,0,0%,1.00,,,US$0.00,US$0.00
24,"HW F -  x,y Limit Switches ( TCB MCU Iteration 7 - Fine Alignment 1)",,0%,,,,,,,0,,,,,,0,,0%,,0,0,0%,1.00,,,US$0.00,US$0.00
25,SW R - z Limit Switches ( MCB FW Iteration 5 - Alignment 1),,0%,,,,,,,0,03/10/25,03/10/25,111,,,0,,0%,,0,0,0%,1.00,,,US$0.00,US$0.00
26,HW F - z Limit Switches ( MCB FW Iteration 5 - Alignment 1),,0%,,,,,,,0,,,,,,0,,0%,,0,0,0%,1.00,,,US$0.00,US$0.00
27,SW R - TCB 2,,0%,,,,,,,0,12/19/24,12/19/24,30,,,0,,0%,,0,0,0%,1.00,,,US$0.00,US$0.00
28,HW F - TCB 2,,0%,,,,,,,0,11/14/24,11/14/24,-5,,,0,,0%,,0,0,0%,1.00,,,US$0.00,US$0.00
29,SW R - MCB,,0%,,,,,,,0,01/08/25,01/08/25,50,,,0,,0%,,0,0,0%,1.00,,,US$0.00,US$0.00
30,HW F - MCB,,0%,,,,,,,0,11/14/24,11/14/24,-5,,,0,,0%,,0,0,0%,1.00,,,US$0.00,US$0.00
31,SW R - UI computer system  ( Procedure App prototype (GUI) - Iteration 1),,0%,,,,,,,0,11/25/24,11/25/24,6,,,0,,0%,,0,0,0%,1.00,,,US$0.00,US$0.00
32,HW F - UI computer system,,0%,,,,,,,0,10/16/24,10/16/24,-34,,,0,,0%,,0,0,0%,1.00,,,US$0.00,US$0.00
33,SW R - UI pcba controls the LED and is attached to MCB,,0%,,,,,,,0,,,,,,0,,0%,,0,0,0%,1.00,,,US$0.00,US$0.00
34,HW F - UI pcba controls the LED and is attached to MCB,,0%,,,,,,,0,,,,,,0,,0%,,0,0,0%,1.00,,,US$0.00,US$0.00
35,"SW R - GUI Wireframes - Figma File ( Procedure App prototype (GUI) - Iteration 1,  Calibration App prototype (GUI))",,0%,,,,,,,0,11/06/24,11/06/24,-13,,,0,,0%,,0,0,0%,1.00,,,US$0.00,US$0.00
36,HW F - GUI Wireframes,,0%,,,,,,,0,10/16/24,10/16/24,-34,,,0,,0%,,0,0,0%,1.00,,,US$0.00,US$0.00
37,SW R - GUI Screen Details  - Figma File,,0%,,,,,,,0,,,,,,0,,0%,,0,0,0%,1.00,,,US$0.00,US$0.00
38,HW F - GUI Screen Details  - Figma File,,0%,,,,,,,0,,,,,,0,,0%,,0,0,0%,1.00,,,US$0.00,US$0.00
39,SW R - Enclosure Interlocks ( MCB FW Iteration 4 - Communication with GUI,,0%,,,,,,,0,01/31/25,01/31/25,73,,,0,,0%,,0,0,0%,1.00,,,US$0.00,US$0.00
40,HW F - Enclosure Interlocks ( MCB FW Iteration 4 - Communication with GUI,,0%,,,,,,,0,,,,,,0,,0%,,0,0,0%,1.00,,,US$0.00,US$0.00
41,SW R - Thermo Couples ( MCB - keep track of temp of various devices) - FPGA Beam/ Engineering Integration 1,,0%,,,,,,,0,10/25/24,10/25/24,-25,,,0,,0%,,0,0,0%,1.00,,,US$0.00,US$0.00
42,HW F - Thermo Couples ( MCB - keep track of temp of various devices) - FPGA Beam/ Engineering Integration 1,,0%,,,,,,,0,,,,,,0,,0%,,0,0,0%,1.00,,,US$0.00,US$0.00
43,"SW R - Chronos, Real Eye Fixation - Link to Model eye 5",,0%,,,,,,,0,,,,,,0,,0%,,0,0,0%,1.00,,,US$0.00,US$0.00
44,"HW F - Chronos, Real Eye Fixation",,0%,,,,,,,0,11/12/24,11/12/24,-7,,,0,,0%,,0,0,0%,1.00,,,US$0.00,US$0.00
45,"SW R - Chronos, Target, Moving x,y (TCB Alignment 2)",,0%,,,,,,,0,,,,,,0,,0%,,0,0,0%,1.00,,,US$0.00,US$0.00
46,"HW F - Chronos, Target, Moving x,y",,0%,,,,,,,0,,,,,,0,,0%,,0,0,0%,1.00,,,US$0.00,US$0.00
47,"SW R - Chronos, Target, Moving z (MCB FW Alignment 2)",,0%,,,,,,,0,,,,,,0,,0%,,0,0,0%,1.00,,,US$0.00,US$0.00
48,"HW F - Chronos, Target, Moving z",,0%,,,,,,,0,,,,,,0,,0%,,0,0,0%,1.00,,,US$0.00,US$0.00
